# Washnah_Arar_V.O_Forecast Recovery Schedule_REV.01-08-08-24_REV.01_Update-17-10-24

Schedule from Primavera P6, 2023-03-01 to 2025-10-22, data date 2024-10-17, costs in SAR, A marks actual dates.

## Calendars

- New Scope Arar Project: Mon-Thu 08:00-16:00; Fri off; Sat-Sun 08:00-16:00. Exceptions (off unless hours are given): 2023-03-23 09:00-15:00, 2023-03-25 to 2023-03-30 09:00-15:00, 2023-04-01 to 2023-04-06 09:00-15:00, 2023-04-08 to 2023-04-13 09:00-15:00, 2023-04-15 to 2023-04-20 09:00-15:00, 2023-04-22 to 2023-04-27, 2023-06-28 to 2023-06-29, 2023-07-01 to 2023-07-06, 2023-09-23, 2024-02-22, 2024-03-11 to 2024-03-14 09:00-15:00, 2024-03-16 to 2024-03-21 09:00-15:00, 2024-03-23 09:00-15:00, 2024-03-24 to 2024-03-28 10:00-14:00, 2024-03-30 to 2024-03-31 10:00-14:00, 2024-04-01 to 2024-04-04 09:00-15:00, 2024-04-06 to 2024-04-08 09:00-15:00, 2024-04-09 to 2024-04-11, 2024-04-13 to 2024-04-14, 2024-06-15 to 2024-06-20, 2024-09-23, 2025-02-22, 2025-03-02 to 2025-03-06 09:00-15:00, 2025-03-08 to 2025-03-13 09:00-15:00, 2025-03-15 to 2025-03-20 09:00-15:00, 2025-03-22 to 2025-03-27 09:00-15:00, 2025-03-29 to 2025-04-03, 2025-06-05, 2025-06-07 to 2025-06-10, 2025-08-01 08:00-16:00, 2025-09-23.
- TRAIL RUN NEW: Mon-Tue 08:00-12:00, 13:00-17:00; Wed-Thu 08:00-16:00; Fri-Sun 08:00-12:00, 13:00-17:00. Exceptions (off unless hours are given): 2025-02-28.

## Resources

| Resource | Group |
| --- | --- |
| Civil Crew | labor |
| Equipment | equipment |
| Mechanical Crew | labor |
| Architectural Crew | labor |
| Electrical Crew | labor |

## Schedule

| ID | WBS | Activity | Type | Duration | Start | Finish | Predecessors | Complete | Total float | Calendar | Cost | Actual cost | 05.EPS | 01.B.O.Q Items |
| --- | --- | --- | --- | --- | --- | --- | --- | --- | --- | --- | --- | --- | --- | --- |
|  | 6 | **Milestone** |  |  | 2023-03-01 | 2025-10-22 |  |  |  |  |  |  |  |  |
|  | 1 | **Contractual** |  |  | 2023-03-01 | 2025-10-22 |  |  |  |  |  |  |  |  |
| 001.PROJ.MIL.CONT. |  | Project Start | milestone | 0d | 2023-03-01 A | 2023-03-01 A |  | 100% |  |  |  |  | 01 |  |
| 002.PROJ.MIL.CONT. |  | Completion of Schematic Design | milestone | 0d | 2023-05-14 A | 2023-05-14 A | 002.PROJ.PRLM. FF, B1.SCH.D.WTP.001 FF, B1.SCH.D.STP.001 FF | 100% |  |  |  |  |  |  |
| 003.PROJ.MIL.CONT. |  | Completion of Detailed Design | milestone | 0d | 2024-02-19 A | 2024-02-19 A | B1.DET.D.WTP.CV.001 FF, B1.DET.D.WTP.ARC.001 FF, B1.DET.D.WTP.MEC.001 FF, B1.DET.D.WTP.ELE.001 FF, B1.DET.D.STP.CV.001 FF, B1.DET.D.STP.ARC.001 FF, B1.DET.D.STP.MEC.001 FF, B1.DET.D.STP.ELE.001 FF, B1.DET.D.IRR.MEC.001 FF, B1.DET.D.IRR.ELE.001 FF | 100% |  |  |  |  |  |  |
| 004.PROJ.MIL.CONT. |  | Complete The Testing & Commissioning | milestone | 0d | 2025-04-21 | 2025-04-21 | 001.PROJ.T&C.WTP. FF, 003.PROJ.T&C.IRR. FF, 002.PROJ.T&C.STP. FF, 001.PROJ.MIL.GEN. FF |  | 0d |  |  |  | 01 |  |
| 005.PROJ.MIL.CONT. |  | Project Finish | milestone | 0d | 2025-10-22 | 2025-10-22 | B48.T&R.006 FF |  | 0d | TRAIL RUN NEW |  |  | 01 |  |
|  | 2 | **General** |  |  | 2025-04-21 | 2025-04-21 |  |  |  |  |  |  |  |  |
| 001.PROJ.MIL.GEN. |  | Complete The Construction Works | milestone | 0d | 2025-04-21 | 2025-04-21 | B4.WTP.EQ.ARC.012 FF, B4.WTP.EQ.ARC.013 FF, B25.STP.EQ.ARC.011 FF, B25.STP.EQ.ARC.012 FF, B25.STP.EQ.ARC.010 FF, B4.WTP.EQ.ARC.011 FF, B5.WTP.PRO.MEC.003 FF, B53.WTP.NWP.ELE.002 FF, B54.WTP.ROW.ELE.001 FF, B9.WTP.EVP.MEC.007 FF, B25.STP.EQ.CV.010 FF, B12.WTP.RMU.CV.004 FF, B13.WTP.ATS.CV.004 FF, B19.REF.WTP.NET.32.CV.004 FF, B20.WTP.HC.CV.004 FF, B25.STP.CHL.CV.005 FF, B25.STP.CLA.MEC.003 FF, B25.STP.EQ.ELE.001 FF, B25.STP.EQ.ELE.003 FF, B25.STP.EQ.ELE.004 FF, B25.STP.EQ.ELE.005 FF, B25.STP.EQ.ELE.006 FF, B25.STP.EQ.ELE.007 FF, B25.STP.EQ.ELE.008 FF, B25.STP.EQ.ELE.010 FF, B25.STP.EQ.ELE.011 FF, B25.STP.EQ.ELE.012 FF, B25.STP.EQ.ELE.013 FF, B25.STP.EQ.MEC.010 FF, B25.STP.EQ.MEC.011 FF, B25.STP.EQ.MEC.012 FF, B25.STP.EQ.MEC.015 FF, B25.STP.IP.CV.006 FF, B28.STP.RMU.CV.004 FF, B29.STP.ATS.CV.004 FF, B30.STP.ROD.CV.005 FF, B31.REF.STP.NET.250.CV.004 FF, B32.REF.STP.NET.200.CV.004 FF, B33.REF.STP.NET.160.CV.004 FF, B35.REF.STP.NET.MNH.CV.006 FF, B39.IRR.160.CV.004 FF, B4.WTP.IP.CV.006 FF, B40.IRR.110.CV.004 FF, B41.IRR.90.CV.004 FF, B44.IRR.16.CV.004 FF, B49.WTP.WEL.CV.005 FF, B49.WTP.WEL.MEC.006 FF, B5.WTP.PRO.CV.005 FF, B51.REF.WTP.GVM.CV.002 FF, B53.WTP.NWP.MEC.003 FF, B8.WTP.CP.CV.003 FF, B9.WTP.EVP.CV.003 FF, B40.IRR.110.CV.004.1 FF, B39.IRR.160.CV.004.1 FF, B44.IRR.16.CV.004.1 FF |  | 0d |  |  |  | 01 |  |
|  | 7 | **Preliminaries** |  |  | 2023-03-01 | 2023-03-01 |  |  |  |  |  |  |  |  |
|  | 1 | **Key Staff** |  |  | 2023-03-01 | 2023-03-01 |  |  |  |  |  |  |  |  |
| 001.PROJ.PRLM. |  | Approval the Key Staff |  | 0d | 2023-03-01 A | 2023-03-01 A | 001.PROJ.MIL.CONT. SS | 100% |  |  | 305,488 | 305,488 | 06 | B48 |
|  | 2 | **Mobilization** |  |  | 2023-03-01 | 2023-03-01 |  |  |  |  |  |  |  |  |
| 002.PROJ.PRLM. |  | Approval the Site Mobilization |  | 0d | 2023-03-01 A | 2023-03-01 A | 001.PROJ.PRLM. | 100% |  |  | 305,488 | 305,488 | 06 | B48 |
|  | 5 | **Engineering** |  |  | 2023-09-10 | 2024-11-10 |  |  |  |  |  |  |  |  |
|  | 7 | **Design** |  |  | 2023-09-10 | 2023-12-24 |  |  |  |  |  |  |  |  |
|  | 1 | **Schematic Design** |  |  | 2023-09-10 | 2023-09-27 |  |  |  |  |  |  |  |  |
|  | 1 | **WTP** |  |  | 2023-09-10 | 2023-09-27 |  |  |  |  |  |  |  |  |
| B1.SCH.D.WTP.001 |  | Schematic Design For WTP |  | 14d | 2023-09-10 A | 2023-09-27 A | 001.PROJ.MIL.CONT. SS+145d | 100% |  |  | 589,133 | 589,133 | 02 |  |
|  | 2 | **STP** |  |  | 2023-09-10 | 2023-09-27 |  |  |  |  |  |  |  |  |
| B1.SCH.D.STP.001 |  | Schematic Design For STP |  | 14d | 2023-09-10 A | 2023-09-27 A | 001.PROJ.MIL.CONT. SS+145d | 100% |  |  | 426,614 | 426,614 | 02 |  |
|  | 2 | **Detailed Design** |  |  | 2023-09-27 | 2023-12-24 |  |  |  |  |  |  |  |  |
|  | 1 | **WTP** |  |  | 2023-09-27 | 2023-11-07 |  |  |  |  |  |  |  |  |
|  | 1 | **Civil** |  |  | 2023-09-27 | 2023-10-21 |  |  |  |  |  |  |  |  |
| B1.DET.D.WTP.CV.001 |  | Civil Detailed Design For WTP |  | 20d | 2023-09-27 A | 2023-10-21 A | 002.PROJ.MIL.CONT. | 100% |  |  | 192,185 | 192,185 | 02 |  |

Notes:
- 001.PROJ.PRLM.: Expenses: (New Expense Item) 305488
- 002.PROJ.PRLM.: Expenses: (New Expense Item) 305488
- B1.SCH.D.WTP.001: Expenses: (New Expense Item) 589133
- B1.SCH.D.STP.001: Expenses: (New Expense Item) 426614
- B1.DET.D.WTP.CV.001: Expenses: (New Expense Item) 192185

| ID | WBS | Activity | Duration | Start | Finish | Predecessors | Complete | Cost | Actual cost | 05.EPS |
| --- | --- | --- | --- | --- | --- | --- | --- | --- | --- | --- |
|  | 2 | **Architectural** |  | 2023-09-27 | 2023-10-21 |  |  |  |  |  |
| B1.DET.D.WTP.ARC.001 |  | Architectural Detailed Design For WTP | 20d | 2023-09-27 A | 2023-10-21 A | 002.PROJ.MIL.CONT. | 100% | 48,046 | 48,046 | 02 |
|  | 3 | **Mechanica** |  | 2023-09-27 | 2023-11-07 |  |  |  |  |  |
| B1.DET.D.WTP.MEC.001 |  | Mechanical Detailed Design For WTP | 35d | 2023-09-27 A | 2023-11-07 A | B1.SCH.D.WTP.001 SS, 002.PROJ.MIL.CONT. | 100% | 432,416 | 432,416 | 02 |
|  | 4 | **Electrical** |  | 2023-09-27 | 2023-11-01 |  |  |  |  |  |
| B1.DET.D.WTP.ELE.001 |  | Electrical Detailed Design For WTP | 30d | 2023-09-27 A | 2023-11-01 A | B1.SCH.D.WTP.001, 002.PROJ.MIL.CONT. | 100% | 288,278 | 288,278 | 02 |
|  | 2 | **STP** |  | 2023-09-27 | 2023-12-24 |  |  |  |  |  |
|  | 1 | **Civil** |  | 2023-11-30 | 2023-12-24 |  |  |  |  |  |
| B1.DET.D.STP.CV.001 |  | Civil Detailed Design For STP | 20d | 2023-11-30 A | 2023-12-24 A | B1.DET.D.STP.ARC.001, 002.PROJ.MIL.CONT. | 100% | 130,764 | 130,764 | 02 |
|  | 2 | **Architectural** |  | 2023-11-07 | 2023-11-30 |  |  |  |  |  |
| B1.DET.D.STP.ARC.001 |  | Architectural Detailed Design For STP | 20d | 2023-11-07 A | 2023-11-30 A | B1.DET.D.STP.MEC.001, 002.PROJ.MIL.CONT. | 100% | 32,691 | 32,691 | 02 |
|  | 3 | **Mechanica** |  | 2023-09-27 | 2023-11-07 |  |  |  |  |  |
| B1.DET.D.STP.MEC.001 |  | Mechanical Detailed Design For STP | 35d | 2023-09-27 A | 2023-11-07 A | B1.SCH.D.STP.001 SS, 002.PROJ.MIL.CONT. | 100% | 294,220 | 294,220 | 02 |
|  | 4 | **Electrical** |  | 2023-11-07 | 2023-12-12 |  |  |  |  |  |
| B1.DET.D.STP.ELE.001 |  | Electrical Detailed Design For STP | 30d | 2023-11-07 A | 2023-12-12 A | B1.DET.D.STP.MEC.001, 002.PROJ.MIL.CONT. | 100% | 196,146 | 196,146 | 02 |
|  | 3 | **Irrigation** |  | 2023-09-27 | 2023-12-06 |  |  |  |  |  |
|  | 3 | **Mechanica** |  | 2023-09-27 | 2023-11-01 |  |  |  |  |  |
| B1.DET.D.IRR.MEC.001 |  | Mechanical Detailed Design For Irrigation Networks | 30d | 2023-09-27 A | 2023-11-01 A | B1.SCH.D.STP.001, 002.PROJ.MIL.CONT. | 100% | 217,312 | 217,312 | 02 |
|  | 4 | **Electrical** |  | 2023-11-01 | 2023-12-06 |  |  |  |  |  |
| B1.DET.D.IRR.ELE.001 |  | Electrical Detailed Design For Irrigation Networks | 30d | 2023-11-01 A | 2023-12-06 A | B1.DET.D.IRR.MEC.001, 002.PROJ.MIL.CONT. | 100% | 54,328 | 54,328 | 02 |
|  | 4 | **Shop Drawing** |  | 2023-12-24 | 2024-11-10 |  |  |  |  |  |
|  | 1 | **WTP** |  | 2023-12-24 | 2024-10-29 |  |  |  |  |  |
|  | 1 | **Civil** |  | 2023-12-24 | 2024-08-01 |  |  |  |  |  |
| B1.SD.WTP.CV.001 |  | Civil Shop Drawing For WTP | 170.75d | 2023-12-24 A | 2024-08-01 A | B1.DET.D.WTP.CV.001, B1.DET.D.STP.CV.001, 003.PROJ.MIL.CONT. | 100% | 15,562 | 15,562 | 02 |

Notes:
- B1.DET.D.WTP.ARC.001: Expenses: (New Expense Item) 48046
- B1.DET.D.WTP.MEC.001: Expenses: (New Expense Item) 432416
- B1.DET.D.WTP.ELE.001: Expenses: (New Expense Item) 288278
- B1.DET.D.STP.CV.001: Expenses: (New Expense Item) 130764
- B1.DET.D.STP.ARC.001: Expenses: (New Expense Item) 32691
- B1.DET.D.STP.MEC.001: Expenses: (New Expense Item) 294220
- B1.DET.D.STP.ELE.001: Expenses: (New Expense Item) 196146
- B1.DET.D.IRR.MEC.001: Expenses: (New Expense Item) 217312
- B1.DET.D.IRR.ELE.001: Expenses: (New Expense Item) 54328
- B1.SD.WTP.CV.001: Expenses: (New Expense Item) 15562

| ID | WBS | Activity | Duration | Start | Finish | Predecessors | Complete | Total float | Free float | Cost | Actual cost | 05.EPS |
| --- | --- | --- | --- | --- | --- | --- | --- | --- | --- | --- | --- | --- |
|  | 2 | **Architectural** |  | 2023-12-24 | 2024-10-29 |  |  |  |  |  |  |  |
| B1.SD.WTP.ARC.001 |  | Architectural Shop Drawing For WTP | 170.75d | 2023-12-24 A | 2024-08-01 A | B1.DET.D.WTP.ARC.001, B1.DET.D.STP.ARC.001, 003.PROJ.MIL.CONT. | 100% |  |  | 1,945 | 1,945 | 02 |
| B1.SD.WTP.ARC.001.1 |  | Architectural Shop Drawing For WTP | 10d | 2024-10-19 | 2024-10-29 | B1.SD.WTP.ARC.001 FS+30d |  | 3d | 0d | 1,945 |  | 02 |
|  | 3 | **Mechanica** |  | 2023-12-24 | 2024-10-26 |  |  |  |  |  |  |  |
| B1.SD.WTP.MEC.001 |  | Mechanical Shop Drawing For WTP | 170.75d | 2023-12-24 A | 2024-08-01 A | B1.DET.D.WTP.MEC.001, B1.DET.D.STP.MEC.001, 003.PROJ.MIL.CONT. | 100% |  |  | 31,511.7 | 31,511.7 | 02 |
| B1.SD.WTP.MEC.001.1 |  | Mechanical Shop Drawing For Fire Fighting WTP | 7d | 2024-10-19 | 2024-10-26 | B1.SD.WTP.MEC.001 FS+33d |  | 67d | 0d | 3,501.3 |  | 02 |
|  | 4 | **Electrical** |  | 2023-12-24 | 2024-01-28 |  |  |  |  |  |  |  |
| B1.SD.WTP.ELE.001 |  | Electrical Shop Drawing For WTP | 30d | 2023-12-24 A | 2024-01-28 A | B1.DET.D.WTP.ELE.001, B1.DET.D.STP.ELE.001, 003.PROJ.MIL.CONT. | 100% |  |  | 23,342 | 23,342 | 02 |
|  | 2 | **STP** |  | 2023-12-24 | 2024-11-10 |  |  |  |  |  |  |  |
|  | 1 | **Civil** |  | 2023-12-24 | 2024-08-01 |  |  |  |  |  |  |  |
| B1.SD.STP.CV.001 |  | Civil Shop Drawing For STP | 170.75d | 2023-12-24 A | 2024-08-01 A | 003.PROJ.MIL.CONT. | 100% |  |  | 10,588 | 10,588 | 02 |
|  | 2 | **Architectural** |  | 2023-12-24 | 2024-11-10 |  |  |  |  |  |  |  |
| B1.SD.STP.ARC.001 |  | Architectural Shop Drawing For STP | 170.75d | 2023-12-24 A | 2024-08-01 A | 003.PROJ.MIL.CONT. | 100% |  |  | 1,323.5 | 1,323.5 | 02 |
| B1.SD.STP.ARC.001.1 |  | Architectural Shop Drawing For STP | 10d | 2024-10-30 | 2024-11-10 | B1.SD.WTP.ARC.001.1 SS, B1.SD.WTP.ARC.001.1 |  | 3d | 0d | 1,323.5 |  | 02 |
|  | 3 | **Mechanica** |  | 2023-12-24 | 2024-10-29 |  |  |  |  |  |  |  |
| B1.SD.STP.MEC.001 |  | Mechanical Shop Drawing For STP | 170.75d | 2023-12-24 A | 2024-08-01 A | 003.PROJ.MIL.CONT. | 100% |  |  | 21,440.7 | 21,440.7 | 02 |
| B1.SD.STP.MEC.001.1 |  | Mechanical Shop Drawing For Fire Fighting STP | 10d | 2024-10-19 | 2024-10-29 | B1.SD.WTP.MEC.001.1 SS |  | 67d | 50d | 2,382.3 |  | 02 |
|  | 4 | **Electrical** |  | 2023-12-24 | 2024-01-28 |  |  |  |  |  |  |  |
| B1.SD.STP.ELE.001 |  | Electrical Shop Drawing For STP | 30d | 2023-12-24 A | 2024-01-28 A | 003.PROJ.MIL.CONT. | 100% |  |  | 15,882 | 15,882 | 02 |
|  | 3 | **Irrigation** |  | 2023-12-24 | 2024-02-03 |  |  |  |  |  |  |  |
|  | 3 | **Mechanica** |  | 2023-12-24 | 2024-02-03 |  |  |  |  |  |  |  |
| B1.SD.IRR.MEC.001 |  | Mechanical Shop Drawing For Irrigation Networks | 35d | 2023-12-24 A | 2024-02-03 A | B1.DET.D.IRR.MEC.001, 003.PROJ.MIL.CONT. | 100% |  |  | 17,596 | 17,596 | 02 |
|  | 4 | **Electrical** |  | 2023-12-24 | 2024-01-28 |  |  |  |  |  |  |  |
| B1.SD.IRR.ELE.001 |  | Electrical Shop Drawing For Irrigation Networks | 30d | 2023-12-24 A | 2024-01-28 A | B1.DET.D.IRR.ELE.001, 003.PROJ.MIL.CONT. | 100% |  |  | 4,399 | 4,399 | 02 |

Notes:
- B1.SD.WTP.ARC.001: Expenses: (New Expense Item) 1945
- B1.SD.WTP.ARC.001.1: Expenses: (New Expense Item) 1945
- B1.SD.WTP.MEC.001: Expenses: (New Expense Item) 31511.7
- B1.SD.WTP.MEC.001.1: Expenses: (New Expense Item) 3501.3
- B1.SD.WTP.ELE.001: Expenses: (New Expense Item) 23342
- B1.SD.STP.CV.001: Expenses: (New Expense Item) 10588
- B1.SD.STP.ARC.001: Expenses: (New Expense Item) 1323.5
- B1.SD.STP.ARC.001.1: Expenses: (New Expense Item) 1323.5
- B1.SD.STP.MEC.001: Expenses: (New Expense Item) 21440.7
- B1.SD.STP.MEC.001.1: Expenses: (New Expense Item) 2382.3
- B1.SD.STP.ELE.001: Expenses: (New Expense Item) 15882
- B1.SD.IRR.MEC.001: Expenses: (New Expense Item) 17596
- B1.SD.IRR.ELE.001: Expenses: (New Expense Item) 4399

| ID | WBS | Activity | Duration | Start | Finish | Predecessors | Complete | Remaining | Planned start | Planned finish | Total float | Free float | Cost | Actual cost | 01.B.O.Q Items | 05.EPS | 02.Scope | 04.Discipline | 03.System |
| --- | --- | --- | --- | --- | --- | --- | --- | --- | --- | --- | --- | --- | --- | --- | --- | --- | --- | --- | --- |
|  | 3 | **Procurement** |  | 2023-05-27 | 2025-04-13 |  |  |  |  |  |  |  |  |  |  |  |  |  |  |
|  | 4 | **WTP** |  | 2023-05-27 | 2025-04-13 |  |  |  |  |  |  |  |  |  |  |  |  |  |  |
|  | 3 | **B04-New Water Treatment Plant** |  | 2023-05-27 | 2025-01-05 |  |  |  |  |  |  |  |  |  |  |  |  |  |  |
|  | 1 | **Mechanical** |  | 2023-09-10 | 2024-12-26 |  |  |  |  |  |  |  |  |  |  |  |  |  |  |
| B4.WTP.EQ.MEC.014.01 |  | Material Approval Chemical Dosing Tanks Equipment Building | 25d | 2023-09-10 A | 2023-10-09 A | B4.WTP.EQ.MEC.013.01 SS | 100% |  |  |  |  |  | 5,464 | 5,464 | B04 | 03 |  |  |  |
| B4.WTP.EQ.MEC.001.01 |  | Material Approval Filter Feed Pump Equipment Building | 25d | 2023-09-10 A | 2023-10-10 A | B20.WTP.HC.MEC.001.01 SS | 100% |  |  |  |  |  | 5,464 | 5,464 | B04 | 03 |  |  |  |
| B4.WTP.EQ.MEC.002.01 |  | Material Approval Sand Filter Equipment Building | 25d | 2023-09-10 A | 2023-10-10 A | B4.WTP.EQ.MEC.001.01 SS | 100% |  |  |  |  |  | 5,464 | 5,464 | B04 | 03 |  |  |  |
| B4.WTP.EQ.MEC.003.01 |  | Material Approval Acid Dosing Injection System Equipment Building | 25d | 2023-09-10 A | 2023-10-10 A | B4.WTP.EQ.MEC.002.01 SS | 100% |  |  |  |  |  | 5,464 | 5,464 | B04 | 03 |  |  |  |
| B4.WTP.EQ.MEC.004.01 |  | Material Approval Anti Sealant Injection System Equipment Building | 25d | 2023-09-10 A | 2023-10-10 A | B4.WTP.EQ.MEC.003.01 SS | 100% |  |  |  |  |  | 5,464 | 5,464 | B04 | 03 |  |  |  |
| B4.WTP.EQ.MEC.005.01 |  | Material Approval De-Cl2 Dosing Injection System Equipment Building | 25d | 2023-09-10 A | 2023-10-10 A | B4.WTP.EQ.MEC.004.01 SS | 100% |  |  |  |  |  | 5,464 | 5,464 | B04 | 03 |  |  |  |
| B4.WTP.EQ.MEC.006.01 |  | Material Approval Post-Chlorination Injection System Equipment Building | 25d | 2023-09-10 A | 2023-10-10 A | B4.WTP.EQ.MEC.005.01 SS | 100% |  |  |  |  |  | 5,464 | 5,464 | B04 | 03 |  |  |  |
| B4.WTP.EQ.MEC.007.01 |  | Material Approval Caustic Soda Injection System Equipment Building | 25d | 2023-09-10 A | 2023-10-10 A | B4.WTP.EQ.MEC.006.01 SS | 100% |  |  |  |  |  | 5,464 | 5,464 | B04 | 03 |  |  |  |
| B4.WTP.EQ.MEC.008.01 |  | Material Approval Pre-Cl2 Dosing Injection System Equipment Building | 25d | 2023-09-10 A | 2023-10-10 A | B4.WTP.EQ.MEC.007.01 SS | 100% |  |  |  |  |  | 5,464 | 5,464 | B04 | 03 |  |  |  |
| B4.WTP.EQ.MEC.009.01 |  | Material Approval R.O Skid Equipment Building | 25d | 2023-09-10 A | 2023-10-10 A | B4.WTP.EQ.MEC.008.01 SS | 100% |  |  |  |  |  | 5,464 | 5,464 | B04 | 03 |  |  |  |
| B4.WTP.EQ.MEC.010.01 |  | Material Approval Cartridge Filter Equipment Building | 25d | 2023-09-10 A | 2023-10-10 A | B4.WTP.EQ.MEC.009.01 SS | 100% |  |  |  |  |  | 5,464 | 5,464 | B04 | 03 |  |  |  |
| B4.WTP.EQ.MEC.011.01 |  | Material Approval High Pressure Pump Equipment Building | 25d | 2023-09-10 A | 2023-10-10 A | B4.WTP.EQ.MEC.010.01 SS | 100% |  |  |  |  |  | 5,464 | 5,464 | B04 | 03 |  |  |  |
| B4.WTP.EQ.MEC.012.01 |  | Material Approval R.O Vessel And R.O Membrane Equipment Building | 25d | 2023-09-10 A | 2023-10-10 A | B4.WTP.EQ.MEC.011.01 SS | 100% |  |  |  |  |  | 5,464 | 5,464 | B04 | 03 |  |  |  |
| B4.WTP.EQ.MEC.013.01 |  | Material Approval Flushing Tank Equipment Building | 25d | 2023-09-10 A | 2023-10-10 A | B4.WTP.EQ.MEC.012.01 SS | 100% |  |  |  |  |  | 5,464 | 5,464 | B04 | 03 |  |  |  |
| B4.WTP.EQ.MEC.015.01 |  | Material Approval Flushing Pump Equipment Building | 25d | 2023-09-10 A | 2023-10-10 A | B1.SCH.D.WTP.001 | 100% |  |  |  |  |  | 5,464 | 5,464 | B04 | 03 |  |  |  |
| B4.WTP.EQ.MEC.016.01 |  | Material Approval Exhaust Fan Equipment Building | 25d | 2023-09-10 A | 2023-10-10 A | B4.WTP.EQ.MEC.015.01 SS | 100% |  |  |  |  |  | 5,464 | 5,464 | B04 | 03 |  |  |  |
| B4.WTP.EQ.MEC.017.01 |  | Material Approval A.C_Equipment Building | 25d | 2023-09-10 A | 2023-10-10 A | B4.WTP.EQ.MEC.016.01 SS | 100% |  |  |  |  |  | 5,464 | 5,464 | B04 | 03 |  |  |  |
| B4.WTP.EQ.MEC.018.01 |  | Material Approval Crane_Equipment Building | 25d | 2023-09-10 A | 2023-10-10 A | B4.WTP.EQ.MEC.017.01 SS | 100% |  |  |  |  |  | 5,464 | 5,464 | B04 | 03 |  |  |  |
| B4.WTP.EQ.MEC.001.02 |  | PO Feed Pump Equipment Building | 30d | 2023-10-10 A | 2023-11-14 A | B4.WTP.EQ.MEC.001.01 | 100% |  |  |  |  |  | 2,732 | 2,732 | B04 | 03 |  |  |  |
| B4.WTP.EQ.MEC.002.02 |  | PO Sand Filter Equipment Building | 30d | 2023-10-10 A | 2023-11-14 A | B4.WTP.EQ.MEC.002.01 | 100% |  |  |  |  |  | 2,732 | 2,732 | B04 | 03 |  |  |  |
| B4.WTP.EQ.MEC.003.02 |  | PO Acid Dosing Injection System Equipment Building | 30d | 2023-10-10 A | 2023-11-14 A | B4.WTP.EQ.MEC.003.01 | 100% |  |  |  |  |  | 2,732 | 2,732 | B04 | 03 |  |  |  |
| B4.WTP.EQ.MEC.004.02 |  | PO Anti Sealant Injection System Equipment Building | 30d | 2023-10-10 A | 2023-11-14 A | B4.WTP.EQ.MEC.004.01 | 100% |  |  |  |  |  | 2,732 | 2,732 | B04 | 03 |  |  |  |
| B4.WTP.EQ.MEC.005.02 |  | PO De-Cl2 Dosing Injection System Equipment Building | 30d | 2023-10-10 A | 2023-11-14 A | B4.WTP.EQ.MEC.005.01 | 100% |  |  |  |  |  | 2,732 | 2,732 | B04 | 03 |  |  |  |
| B4.WTP.EQ.MEC.006.02 |  | PO Post-Chlorination Injection System Equipment Building | 30d | 2023-10-10 A | 2023-11-14 A | B4.WTP.EQ.MEC.006.01 | 100% |  |  |  |  |  | 2,732 | 2,732 | B04 | 03 |  |  |  |
| B4.WTP.EQ.MEC.007.02 |  | PO Caustic Soda Injection System Equipment Building | 30d | 2023-10-10 A | 2023-11-14 A | B4.WTP.EQ.MEC.007.01 | 100% |  |  |  |  |  | 2,732 | 2,732 | B04 | 03 |  |  |  |
| B4.WTP.EQ.MEC.008.02 |  | PO Pre-Cl2 Dosing Injection System Equipment Building | 30d | 2023-10-10 A | 2023-11-14 A | B4.WTP.EQ.MEC.008.01 | 100% |  |  |  |  |  | 2,732 | 2,732 | B04 | 03 |  |  |  |
| B4.WTP.EQ.MEC.009.02 |  | PO R.O Skid Equipment Building | 30d | 2023-10-10 A | 2023-11-14 A | B4.WTP.EQ.MEC.009.01 | 100% |  |  |  |  |  | 2,732 | 2,732 | B04 | 03 |  |  |  |
| B4.WTP.EQ.MEC.010.02 |  | PO Cartridge Filter Equipment Building | 30d | 2023-10-10 A | 2023-11-14 A | B4.WTP.EQ.MEC.010.01 | 100% |  |  |  |  |  | 2,732 | 2,732 | B04 | 03 |  |  |  |
| B4.WTP.EQ.MEC.011.02 |  | PO High Pressure Pump Equipment Building | 30d | 2023-10-10 A | 2023-11-14 A | B4.WTP.EQ.MEC.011.01 | 100% |  |  |  |  |  | 2,732 | 2,732 | B04 | 03 |  |  |  |
| B4.WTP.EQ.MEC.012.02 |  | PO R.O Vessel And R.O Membrane Equipment Building | 30d | 2023-10-10 A | 2023-11-14 A | B4.WTP.EQ.MEC.012.01 | 100% |  |  |  |  |  | 2,732 | 2,732 | B04 | 03 |  |  |  |
| B4.WTP.EQ.MEC.013.02 |  | PO Flushing Tank Equipment Building | 30d | 2023-10-10 A | 2023-11-14 A | B4.WTP.EQ.MEC.013.01 | 100% |  |  |  |  |  | 2,732 | 2,732 | B04 | 03 |  |  |  |
| B4.WTP.EQ.MEC.014.02 |  | PO Chemical Dosing Tanks Equipment Building | 30d | 2023-10-10 A | 2023-11-14 A | B4.WTP.EQ.MEC.014.01 | 100% |  |  |  |  |  | 2,732 | 2,732 | B04 | 03 |  |  |  |
| B4.WTP.EQ.MEC.015.02 |  | PO Flushing Pump Equipment Building | 30d | 2023-10-10 A | 2023-11-14 A | B4.WTP.EQ.MEC.015.01 | 100% |  |  |  |  |  | 2,732 | 2,732 | B04 | 03 |  |  |  |
| B4.WTP.EQ.MEC.016.02 |  | PO Exhaust Fan Equipment Building | 30d | 2023-10-10 A | 2023-11-14 A | B4.WTP.EQ.MEC.016.01 | 100% |  |  |  |  |  | 2,732 | 2,732 | B04 | 03 |  |  |  |
| B4.WTP.EQ.MEC.017.02 |  | PO A.C_Equipment Building | 30d | 2023-10-10 A | 2023-11-14 A | B4.WTP.EQ.MEC.017.01 | 100% |  |  |  |  |  | 2,732 | 2,732 | B04 | 03 |  |  |  |
| B4.WTP.EQ.MEC.018.02 |  | PO Crane_Equipment Building | 30d | 2023-10-10 A | 2023-11-14 A | B4.WTP.EQ.MEC.018.01 | 100% |  |  |  |  |  | 2,732 | 2,732 | B04 | 03 |  |  |  |
| B4.WTP.EQ.MEC.012.03 |  | Delivery To Site R.O Membrane Equipment Building | 188.75d | 2023-11-14 A | 2024-07-14 A | B4.WTP.EQ.MEC.012.02 | 100% |  |  |  |  |  | 2,732 | 2,732 | B04 | 03 |  |  |  |
| B4.WTP.EQ.MEC.013.03 |  | Delivery To Site Flushing Tank Equipment Building | 155d | 2023-11-14 A | 2024-05-29 A | B4.WTP.EQ.MEC.013.02 | 100% |  |  |  |  |  | 5,464 | 5,464 | B04 | 03 |  |  |  |
| B4.WTP.EQ.MEC.014.03 |  | Delivery To Site Chemical Dosing Tanks Equipment Building | 155d | 2023-11-14 A | 2024-05-29 A | B4.WTP.EQ.MEC.014.02 | 100% |  |  |  |  |  | 5,464 | 5,464 | B04 | 03 |  |  |  |
| B4.WTP.EQ.MEC.001.03 |  | Delivery To Site Feed Pump Equipment Building | 6d | 2024-06-27 A | 2024-07-03 A | B4.WTP.EQ.MEC.001.02 | 100% |  |  |  |  |  | 5,464 | 5,464 | B04 | 03 |  |  |  |
| B4.WTP.EQ.MEC.011.03 |  | Delivery To Site High Pressure Pump Equipment Building | 6d | 2024-06-27 A | 2024-07-03 A | B4.WTP.EQ.MEC.011.02 | 100% |  |  |  |  |  | 5,464 | 5,464 | B04 | 03 |  |  |  |
| B4.WTP.EQ.MEC.015.03 |  | Delivery To Site Flushing Pump Equipment Building | 6d | 2024-06-27 A | 2024-07-03 A | B4.WTP.EQ.MEC.015.02 | 100% |  |  |  |  |  | 5,464 | 5,464 | B04 | 03 |  |  |  |
| B4.WTP.EQ.MEC.019.01 |  | Material Approval Fire Fighting_Equipment Building | 5d | 2024-06-27 A | 2024-07-02 A | B4.WTP.EQ.MEC.018.01 SS | 100% |  |  |  |  |  | 5,464 | 5,464 | B04 | 03 |  |  |  |
| B4.WTP.EQ.MEC.002.03 |  | Delivery To Site Sand Filter Equipment Building | 41d | 2024-07-22 A | 2024-11-16 | B4.WTP.EQ.MEC.002.02 | 20% | 25d | 2024-07-30 | 2024-09-16 | 52d | 39d | 5,464 | 1,092.8 | B04 | 03 |  |  |  |
| B4.WTP.EQ.MEC.003.03 |  | Delivery To Site Acid Dosing Injection System Equipment Building | 6d | 2024-07-27 A | 2024-08-01 A | B4.WTP.EQ.MEC.003.02 | 100% |  |  |  |  |  | 5,464 | 5,464 | B04 | 03 |  |  |  |
| B4.WTP.EQ.MEC.004.03 |  | Delivery To Site Anti Sealant Injection System Equipment Building | 6d | 2024-07-27 A | 2024-08-01 A | B4.WTP.EQ.MEC.004.02 | 100% |  |  |  |  |  | 5,464 | 5,464 | B04 | 03 |  |  |  |
| B4.WTP.EQ.MEC.005.03 |  | Delivery To Site De-Cl2 Dosing Injection System Equipment Building | 6d | 2024-07-27 A | 2024-08-01 A | B4.WTP.EQ.MEC.005.02 | 100% |  |  |  |  |  | 5,464 | 5,464 | B04 | 03 |  |  |  |
| B4.WTP.EQ.MEC.006.03 |  | Delivery To Site Post-Chlorination Injection System Equipment Building | 6d | 2024-07-27 A | 2024-08-01 A | B4.WTP.EQ.MEC.006.02 | 100% |  |  |  |  |  | 5,464 | 5,464 | B04 | 03 |  |  |  |
| B4.WTP.EQ.MEC.007.03 |  | Delivery To Site Caustic Soda Injection System Equipment Building | 6d | 2024-07-27 A | 2024-08-01 A | B4.WTP.EQ.MEC.007.02 | 100% |  |  |  |  |  | 5,464 | 5,464 | B04 | 03 |  |  |  |
| B4.WTP.EQ.MEC.008.03 |  | Delivery To Site Pre-Cl2 Dosing Injection System Equipment Building | 6d | 2024-07-27 A | 2024-08-01 A | B4.WTP.EQ.MEC.008.02 | 100% |  |  |  |  |  | 5,464 | 5,464 | B04 | 03 |  |  |  |
| B4.WTP.EQ.MEC.020.04 |  | Delivery To Site Manholes_Equipment Building | 5d | 2024-09-28 A | 2024-10-02 A | B4.WTP.EQ.MEC.019.01 FS+50d | 100% |  |  |  |  |  | 2,732 | 2,732 | B04 | 03 | 01 | 03 | 001 |
| B4.WTP.EQ.MEC.009.03 |  | Delivery To Site R.O Skid Equipment Building | 30d | 2024-10-19 | 2024-11-21 | B4.WTP.EQ.MEC.009.02 FS+250d |  |  |  |  | 42d | 34d | 5,464 |  | B04 | 03 |  |  |  |
| B4.WTP.EQ.MEC.010.03 |  | Delivery To Site Cartridge Filter Equipment Building | 20d | 2024-10-19 | 2024-11-10 | B4.WTP.EQ.MEC.010.02 FS+260d |  |  |  |  | 64d | 44d | 5,464 |  | B04 | 03 |  |  |  |
| B4.WTP.EQ.MEC.012.04 |  | Delivery To Site R.O Vessel Equipment Building | 20d | 2024-10-19 | 2024-11-10 | B4.WTP.EQ.MEC.012.02 FS+250d |  |  |  |  | 67d | 44d | 2,732 |  |  |  |  |  |  |
| B4.WTP.EQ.MEC.017.03 |  | Delivery To Site A.C_Equipment Building | 15d | 2024-10-19 | 2024-11-04 | B4.WTP.EQ.MEC.017.02 FS+260d |  |  |  |  | 67d | 49d | 5,464 |  | B04 | 03 |  |  |  |
| B4.WTP.EQ.MEC.018.03 |  | Delivery To Site Crane_Equipment Building | 10d | 2024-10-19 | 2024-10-29 | B4.WTP.EQ.MEC.018.02 FS+235d |  |  |  |  | 62d | 54d | 5,464 |  | B04 | 03 |  |  |  |
| B4.WTP.EQ.MEC.019.02 |  | PO Fire Fighting_Equipment Building | 10d | 2024-10-19 | 2024-10-29 | B4.WTP.EQ.MEC.019.01 FS+60d |  |  |  |  | 17d | 0d | 2,732 |  | B04 | 03 |  |  |  |
| B4.WTP.EQ.MEC.020.01 |  | Material Approval Sanitary Fixtures & Manholes_Equipment Building | 12d | 2024-10-19 | 2024-10-31 | B20.WTP.HC.MEC.001.01 FS+300d |  |  |  |  | 48d | 0d | 2,732 |  | B04 | 03 |  |  |  |
| B4.WTP.EQ.MEC.019.03 |  | Delivery To Site Fire Fighting_Equipment Building | 50d | 2024-10-30 | 2024-12-26 | B4.WTP.EQ.MEC.019.02 |  |  |  |  | 17d | 4d | 5,464 |  | B04 | 03 |  |  |  |
| B4.WTP.EQ.MEC.016.03 |  | Delivery To Site Exhaust Fan Equipment Building | 29d | 2024-10-30 | 2024-12-03 | B4.WTP.EQ.MEC.016.02 FS+280d |  |  |  |  | 58.75d | 0d | 5,464 |  | B04 | 03 |  |  |  |
| B4.WTP.EQ.MEC.020.02 |  | PO Sanitary Fixtures & Manholes_Equipment Building | 10d | 2024-11-02 | 2024-11-12 | B4.WTP.EQ.MEC.020.01 |  |  |  |  | 48d | 0d | 5,464 |  | B04 | 03 |  |  |  |
| B4.WTP.EQ.MEC.020.03 |  | Delivery To Site Sanitary Fixtures & Manholes_Equipment Building | 20d | 2024-11-13 | 2024-12-05 | B4.WTP.EQ.MEC.020.02 |  |  |  |  | 48d | 0d | 2,732 |  | B04 | 03 |  |  |  |

Notes:
- B4.WTP.EQ.MEC.014.01: Expenses: (New Expense Item) 5464
- B4.WTP.EQ.MEC.001.01: Expenses: (New Expense Item) 5464
- B4.WTP.EQ.MEC.002.01: Expenses: (New Expense Item) 5464
- B4.WTP.EQ.MEC.003.01: Expenses: (New Expense Item) 5464
- B4.WTP.EQ.MEC.004.01: Expenses: (New Expense Item) 5464
- B4.WTP.EQ.MEC.005.01: Expenses: (New Expense Item) 5464
- B4.WTP.EQ.MEC.006.01: Expenses: (New Expense Item) 5464
- B4.WTP.EQ.MEC.007.01: Expenses: (New Expense Item) 5464
- B4.WTP.EQ.MEC.008.01: Expenses: (New Expense Item) 5464
- B4.WTP.EQ.MEC.009.01: Expenses: (New Expense Item) 5464
- B4.WTP.EQ.MEC.010.01: Expenses: (New Expense Item) 5464
- B4.WTP.EQ.MEC.011.01: Expenses: (New Expense Item) 5464
- B4.WTP.EQ.MEC.012.01: Expenses: (New Expense Item) 5464
- B4.WTP.EQ.MEC.013.01: Expenses: (New Expense Item) 5464
- B4.WTP.EQ.MEC.015.01: Expenses: (New Expense Item) 5464
- B4.WTP.EQ.MEC.016.01: Expenses: (New Expense Item) 5464
- B4.WTP.EQ.MEC.017.01: Expenses: (New Expense Item) 5464
- B4.WTP.EQ.MEC.018.01: Expenses: (New Expense Item) 5464
- B4.WTP.EQ.MEC.001.02: Expenses: (New Expense Item) 2732
- B4.WTP.EQ.MEC.002.02: Expenses: (New Expense Item) 2732
- B4.WTP.EQ.MEC.003.02: Expenses: (New Expense Item) 2732
- B4.WTP.EQ.MEC.004.02: Expenses: (New Expense Item) 2732
- B4.WTP.EQ.MEC.005.02: Expenses: (New Expense Item) 2732
- B4.WTP.EQ.MEC.006.02: Expenses: (New Expense Item) 2732
- B4.WTP.EQ.MEC.007.02: Expenses: (New Expense Item) 2732
- B4.WTP.EQ.MEC.008.02: Expenses: (New Expense Item) 2732
- B4.WTP.EQ.MEC.009.02: Expenses: (New Expense Item) 2732
- B4.WTP.EQ.MEC.010.02: Expenses: (New Expense Item) 2732
- B4.WTP.EQ.MEC.011.02: Expenses: (New Expense Item) 2732
- B4.WTP.EQ.MEC.012.02: Expenses: (New Expense Item) 2732
- B4.WTP.EQ.MEC.013.02: Expenses: (New Expense Item) 2732
- B4.WTP.EQ.MEC.014.02: Expenses: (New Expense Item) 2732
- B4.WTP.EQ.MEC.015.02: Expenses: (New Expense Item) 2732
- B4.WTP.EQ.MEC.016.02: Expenses: (New Expense Item) 2732
- B4.WTP.EQ.MEC.017.02: Expenses: (New Expense Item) 2732
- B4.WTP.EQ.MEC.018.02: Expenses: (New Expense Item) 2732
- B4.WTP.EQ.MEC.012.03: Expenses: (New Expense Item) 2732
- B4.WTP.EQ.MEC.013.03: Expenses: (New Expense Item) 5464
- B4.WTP.EQ.MEC.014.03: Expenses: (New Expense Item) 5464
- B4.WTP.EQ.MEC.001.03: Expenses: (New Expense Item) 5464
- B4.WTP.EQ.MEC.011.03: Expenses: (New Expense Item) 5464
- B4.WTP.EQ.MEC.015.03: Expenses: (New Expense Item) 5464
- B4.WTP.EQ.MEC.019.01: Expenses: (New Expense Item) 5464
- B4.WTP.EQ.MEC.002.03: Expenses: (New Expense Item) 5464
- B4.WTP.EQ.MEC.003.03: Expenses: (New Expense Item) 5464
- B4.WTP.EQ.MEC.004.03: Expenses: (New Expense Item) 5464
- B4.WTP.EQ.MEC.005.03: Expenses: (New Expense Item) 5464
- B4.WTP.EQ.MEC.006.03: Expenses: (New Expense Item) 5464
- B4.WTP.EQ.MEC.007.03: Expenses: (New Expense Item) 5464
- B4.WTP.EQ.MEC.008.03: Expenses: (New Expense Item) 5464
- B4.WTP.EQ.MEC.020.04: Expenses: (New Expense Item) 2732
- B4.WTP.EQ.MEC.009.03: Expenses: (New Expense Item) 5464
- B4.WTP.EQ.MEC.010.03: Expenses: (New Expense Item) 5464
- B4.WTP.EQ.MEC.012.04: Expenses: (New Expense Item) 2732
- B4.WTP.EQ.MEC.017.03: Expenses: (New Expense Item) 5464
- B4.WTP.EQ.MEC.018.03: Expenses: (New Expense Item) 5464
- B4.WTP.EQ.MEC.019.02: Expenses: (New Expense Item) 2732
- B4.WTP.EQ.MEC.020.01: Expenses: (New Expense Item) 2732
- B4.WTP.EQ.MEC.019.03: Expenses: (New Expense Item) 5464
- B4.WTP.EQ.MEC.016.03: Expenses: (New Expense Item) 5464
- B4.WTP.EQ.MEC.020.02: Expenses: (New Expense Item) 5464
- B4.WTP.EQ.MEC.020.03: Expenses: (New Expense Item) 2732

| ID | WBS | Activity | Duration | Start | Finish | Predecessors | Complete | Remaining | Planned start | Planned finish | Total float | Free float | Cost | Actual cost | 01.B.O.Q Items | 05.EPS |
| --- | --- | --- | --- | --- | --- | --- | --- | --- | --- | --- | --- | --- | --- | --- | --- | --- |
|  | 2 | **Electrical** |  | 2023-05-27 | 2025-01-05 |  |  |  |  |  |  |  |  |  |  |  |
| B4.WTP.EQ.ELE.009.01 |  | Material Approval Earthing And Lighting_Equipment Building | 122d | 2023-05-27 A | 2023-10-26 A | B4.WTP.EQ.ELE.008.01 SS | 100% |  |  |  |  |  | 2,802 | 2,802 | B04 | 03 |
| B4.WTP.EQ.ELE.001.01 |  | Material Approval PLC Scada_Equipment Building | 25d | 2023-09-27 A | 2023-10-26 A | B13.WTP.ATS.ELE.001.01 SS | 100% |  |  |  |  |  | 5,604 | 5,604 | B04 | 03 |
| B4.WTP.EQ.ELE.002.01 |  | Material Approval Instruments_Equipment Building | 25d | 2023-09-27 A | 2023-10-26 A | B4.WTP.EQ.ELE.001.01 SS | 100% |  |  |  |  |  | 5,604 | 5,604 | B04 | 03 |
| B4.WTP.EQ.ELE.003.01 |  | Material Approval Internal Lighting_Equipment Building | 25d | 2023-09-27 A | 2023-10-26 A | B4.WTP.EQ.ELE.002.01 SS | 100% |  |  |  |  |  | 5,604 | 5,604 | B04 | 03 |
| B4.WTP.EQ.ELE.004.01 |  | Material Approval External Lighting_Equipment Building | 25d | 2023-09-27 A | 2023-10-26 A | B4.WTP.EQ.ELE.003.01 SS | 100% |  |  |  |  |  | 5,604 | 5,604 | B04 | 03 |
| B4.WTP.EQ.ELE.005.01 |  | Material Approval Wiring Devices_Equipment Building | 25d | 2023-09-27 A | 2023-10-26 A | B4.WTP.EQ.ELE.004.01 SS | 100% |  |  |  |  |  | 5,604 | 5,604 | B04 | 03 |
| B4.WTP.EQ.ELE.006.01 |  | Material Approval Low Voltage Cables_Equipment Building | 25d | 2023-09-27 A | 2023-10-26 A | B4.WTP.EQ.ELE.005.01 SS | 100% |  |  |  |  |  | 5,604 | 5,604 | B04 | 03 |
| B4.WTP.EQ.ELE.007.01 |  | Material Approval EMCC , MDB , ATS , PFC_Equipment Building | 25d | 2023-09-27 A | 2023-10-26 A | B4.WTP.EQ.ELE.006.01 SS | 100% |  |  |  |  |  | 5,604 | 5,604 | B04 | 03 |
| B4.WTP.EQ.ELE.008.01 |  | Material Approval UPS_Equipment Building | 25d | 2023-09-27 A | 2023-10-26 A | B4.WTP.EQ.ELE.007.01 SS | 100% |  |  |  |  |  | 5,604 | 5,604 | B04 | 03 |
| B4.WTP.EQ.ELE.010.01 |  | Material Approval Cable Tray And Fittings_Equipment Building | 25d | 2023-09-27 A | 2023-10-26 A | B4.WTP.EQ.ELE.009.01 SS | 100% |  |  |  |  |  | 2,802 | 2,802 | B04 | 03 |
| B4.WTP.EQ.ELE.011.01 |  | Material Approval Building Wires_Equipment Building | 25d | 2023-09-27 A | 2023-10-26 A | B4.WTP.EQ.ELE.010.01 SS | 100% |  |  |  |  |  | 2,802 | 2,802 | B04 | 03 |
| B4.WTP.EQ.ELE.012.01 |  | Material Approval Emt Pipes Boles And Fittings_Equipment Building | 25d | 2023-09-27 A | 2023-10-26 A | B4.WTP.EQ.ELE.011.01 SS | 100% |  |  |  |  |  | 2,802 | 2,802 | B04 | 03 |
| B4.WTP.EQ.ELE.013.01 |  | Material Approval Fire Alarm System_Equipment Building | 25d | 2023-09-27 A | 2023-10-26 A | B4.WTP.EQ.ELE.012.01 SS | 100% |  |  |  |  |  | 2,802 | 2,802 | B04 | 03 |
| B4.WTP.EQ.ELE.001.02 |  | PO PLC Scada_Equipment Building | 30d | 2023-10-26 A | 2023-11-30 A | B4.WTP.EQ.ELE.001.01 | 100% |  |  |  |  |  | 2,802 | 2,802 | B04 | 03 |
| B4.WTP.EQ.ELE.002.02 |  | PO Instruments_Equipment Building | 30d | 2023-10-26 A | 2023-11-30 A | B4.WTP.EQ.ELE.002.01 | 100% |  |  |  |  |  | 2,802 | 2,802 | B04 | 03 |
| B4.WTP.EQ.ELE.003.02 |  | PO Internal Lighting_Equipment Building | 30d | 2023-10-26 A | 2023-11-30 A | B4.WTP.EQ.ELE.003.01 | 100% |  |  |  |  |  | 2,802 | 2,802 | B04 | 03 |
| B4.WTP.EQ.ELE.004.02 |  | PO External Lighting_Equipment Building | 30d | 2023-10-26 A | 2023-11-30 A | B4.WTP.EQ.ELE.004.01 | 100% |  |  |  |  |  | 2,802 | 2,802 | B04 | 03 |
| B4.WTP.EQ.ELE.005.02 |  | PO Wiring Devices_Equipment Building | 30d | 2023-10-26 A | 2023-11-30 A | B4.WTP.EQ.ELE.005.01 | 100% |  |  |  |  |  | 2,802 | 2,802 | B04 | 03 |
| B4.WTP.EQ.ELE.007.02 |  | PO EMCC , MDB , ATS , PFC_Equipment Building | 30d | 2023-10-26 A | 2023-11-30 A | B4.WTP.EQ.ELE.007.01 | 100% |  |  |  |  |  | 2,802 | 2,802 | B04 | 03 |
| B4.WTP.EQ.ELE.008.02 |  | PO UPS_Equipment Building | 30d | 2023-10-26 A | 2023-11-30 A | B4.WTP.EQ.ELE.008.01 | 100% |  |  |  |  |  | 2,802 | 2,802 | B04 | 03 |
| B4.WTP.EQ.ELE.009.02 |  | PO Earthing And Lighting_Equipment Building | 30d | 2023-10-26 A | 2023-11-30 A | B4.WTP.EQ.ELE.009.01 | 100% |  |  |  |  |  | 5,604 | 5,604 | B04 | 03 |
| B4.WTP.EQ.ELE.012.02 |  | PO Emt Pipes Boles And Fittings_Equipment Building | 30d | 2023-10-26 A | 2023-11-30 A | B4.WTP.EQ.ELE.012.01 | 100% |  |  |  |  |  | 5,604 | 5,604 | B04 | 03 |
| B4.WTP.EQ.ELE.009.03 |  | Delivery To Site Earthing And Lighting_Equipment Building | 80d | 2023-11-30 A | 2024-03-04 A | B4.WTP.EQ.ELE.009.02 | 100% |  |  |  |  |  | 5,604 | 5,604 | B04 | 03 |
| B4.WTP.EQ.ELE.012.03 |  | Delivery To Site Emt Pipes Boles And Fittings_Equipment Building | 80d | 2023-11-30 A | 2024-03-04 A | B4.WTP.EQ.ELE.012.02 | 100% |  |  |  |  |  | 5,604 | 5,604 | B04 | 03 |
| B4.WTP.EQ.ELE.006.02 |  | PO Low Voltage Cables_Equipment Building | 4d | 2024-06-22 A | 2024-06-25 A | B4.WTP.EQ.ELE.006.01 | 100% |  |  |  |  |  | 2,802 | 2,802 | B04 | 03 |
| B4.WTP.EQ.ELE.011.02 |  | PO Building Wires_Equipment Building | 4d | 2024-06-22 A | 2024-06-25 A | B4.WTP.EQ.ELE.011.01 | 100% |  |  |  |  |  | 5,604 | 5,604 | B04 | 03 |
| B4.WTP.EQ.ELE.002.03 |  | Delivery To Site Instruments_Equipment Building | 6d | 2024-06-27 A | 2024-07-03 A | B4.WTP.EQ.ELE.002.02 | 100% |  |  |  |  |  | 5,604 | 5,604 | B04 | 03 |
| B4.WTP.EQ.ELE.008.03 |  | Delivery To Site UPS_Equipment Building | 6d | 2024-06-27 A | 2024-07-03 A | B4.WTP.EQ.ELE.008.02 | 100% |  |  |  |  |  | 5,604 | 5,604 | B04 | 03 |
| B4.WTP.EQ.ELE.007.03 |  | Delivery To Site EMCC , MDB , ATS , PFC_Equipment Building | 84d | 2024-07-22 A | 2025-01-05 | B4.WTP.EQ.ELE.007.02 | 20% | 68d | 2024-07-21 | 2024-10-28 | 26d | 0d | 5,604 | 1,120.8 | B04 | 03 |
| B4.WTP.EQ.ELE.013.02 |  | PO Fire Alarm System_Equipment Building | 6d | 2024-08-10 A | 2024-08-15 A | B4.WTP.EQ.ELE.013.01 | 100% |  |  |  |  |  | 5,604 | 5,604 | B04 | 03 |
| B4.WTP.EQ.ELE.010.02 |  | PO Cable Tray And Fittings_Equipment Building | 5d | 2024-09-15 A | 2024-09-19 A | B4.WTP.EQ.ELE.010.01 FS+250d | 100% |  | 2024-09-21 | 2024-09-26 |  |  | 5,604 | 5,604 | B04 | 03 |
| B4.WTP.EQ.ELE.003.03 |  | Delivery To Site Internal Lighting_Equipment Building | 16d | 2024-10-19 | 2024-11-05 | B4.WTP.EQ.ELE.003.02 FS+240d |  |  |  |  | 73d | 0d | 5,604 |  | B04 | 03 |
| B4.WTP.EQ.ELE.004.03 |  | Delivery To Site External Lighting_Equipment Building | 16d | 2024-10-19 | 2024-11-05 | B4.WTP.EQ.ELE.004.02, B4.WTP.EQ.ELE.003.03 SS |  |  |  |  | 73d | 48d | 5,604 |  | B04 | 03 |
| B4.WTP.EQ.ELE.005.03 |  | Delivery To Site Wiring Devices_Equipment Building | 10d | 2024-10-19 | 2024-10-29 | B4.WTP.EQ.ELE.005.02 FS+250d |  |  |  |  | 79d | 54d | 5,604 |  | B04 | 03 |
| B4.WTP.EQ.ELE.006.03 |  | Delivery To Site Low Voltage Cables_Equipment Building | 20d | 2024-10-19 | 2024-11-10 | B4.WTP.EQ.ELE.006.02 FS+80d |  |  |  |  | 64d | 44d | 5,604 |  | B04 | 03 |
| B4.WTP.EQ.ELE.010.03 |  | Delivery To Site Cable Tray And Fittings_Equipment Building | 50d | 2024-10-19 | 2024-12-15 | B4.WTP.EQ.ELE.010.02 FS+10d |  |  |  |  | 46d | 14d | 5,604 |  | B04 | 03 |
| B4.WTP.EQ.ELE.011.03 |  | Delivery To Site Building Wires_Equipment Building | 15d | 2024-10-19 | 2024-11-04 | B4.WTP.EQ.ELE.011.02 FS+85d |  |  |  |  | 74d | 49d | 5,604 |  | B04 | 03 |
| B4.WTP.EQ.ELE.013.03 |  | Delivery To Site Fire Alarm System_Equipment Building | 25d | 2024-10-19 | 2024-11-16 | B4.WTP.EQ.ELE.013.02 FS+30d |  |  |  |  | 64d | 39d | 5,604 |  | B04 | 03 |
| B4.WTP.EQ.ELE.001.03 |  | Delivery To Site PLC Scada_Equipment Building | 20d | 2024-11-16 | 2024-12-09 | B4.WTP.EQ.ELE.001.02 FS+280d |  |  |  |  | 44.75d | 19.75d | 5,604 |  | B04 | 03 |

Notes:
- B4.WTP.EQ.ELE.009.01: Expenses: (New Expense Item) 2802
- B4.WTP.EQ.ELE.001.01: Expenses: (New Expense Item) 5604
- B4.WTP.EQ.ELE.002.01: Expenses: (New Expense Item) 5604
- B4.WTP.EQ.ELE.003.01: Expenses: (New Expense Item) 5604
- B4.WTP.EQ.ELE.004.01: Expenses: (New Expense Item) 5604
- B4.WTP.EQ.ELE.005.01: Expenses: (New Expense Item) 5604
- B4.WTP.EQ.ELE.006.01: Expenses: (New Expense Item) 5604
- B4.WTP.EQ.ELE.007.01: Expenses: (New Expense Item) 5604
- B4.WTP.EQ.ELE.008.01: Expenses: (New Expense Item) 5604
- B4.WTP.EQ.ELE.010.01: Expenses: (New Expense Item) 2802
- B4.WTP.EQ.ELE.011.01: Expenses: (New Expense Item) 2802
- B4.WTP.EQ.ELE.012.01: Expenses: (New Expense Item) 2802
- B4.WTP.EQ.ELE.013.01: Expenses: (New Expense Item) 2802
- B4.WTP.EQ.ELE.001.02: Expenses: (New Expense Item) 2802
- B4.WTP.EQ.ELE.002.02: Expenses: (New Expense Item) 2802
- B4.WTP.EQ.ELE.003.02: Expenses: (New Expense Item) 2802
- B4.WTP.EQ.ELE.004.02: Expenses: (New Expense Item) 2802
- B4.WTP.EQ.ELE.005.02: Expenses: (New Expense Item) 2802
- B4.WTP.EQ.ELE.007.02: Expenses: (New Expense Item) 2802
- B4.WTP.EQ.ELE.008.02: Expenses: (New Expense Item) 2802
- B4.WTP.EQ.ELE.009.02: Expenses: (New Expense Item) 5604
- B4.WTP.EQ.ELE.012.02: Expenses: (New Expense Item) 5604
- B4.WTP.EQ.ELE.009.03: Expenses: (New Expense Item) 5604
- B4.WTP.EQ.ELE.012.03: Expenses: (New Expense Item) 5604
- B4.WTP.EQ.ELE.006.02: Expenses: (New Expense Item) 2802
- B4.WTP.EQ.ELE.011.02: Expenses: (New Expense Item) 5604
- B4.WTP.EQ.ELE.002.03: Expenses: (New Expense Item) 5604
- B4.WTP.EQ.ELE.008.03: Expenses: (New Expense Item) 5604
- B4.WTP.EQ.ELE.007.03: Expenses: (New Expense Item) 5604
- B4.WTP.EQ.ELE.013.02: Expenses: (New Expense Item) 5604
- B4.WTP.EQ.ELE.010.02: Expenses: (New Expense Item) 5604
- B4.WTP.EQ.ELE.003.03: Expenses: (New Expense Item) 5604
- B4.WTP.EQ.ELE.004.03: Expenses: (New Expense Item) 5604
- B4.WTP.EQ.ELE.005.03: Expenses: (New Expense Item) 5604
- B4.WTP.EQ.ELE.006.03: Expenses: (New Expense Item) 5604
- B4.WTP.EQ.ELE.010.03: Expenses: (New Expense Item) 5604
- B4.WTP.EQ.ELE.011.03: Expenses: (New Expense Item) 5604
- B4.WTP.EQ.ELE.013.03: Expenses: (New Expense Item) 5604
- B4.WTP.EQ.ELE.001.03: Expenses: (New Expense Item) 5604

| ID | WBS | Activity | Duration | Start | Finish | Predecessors | Complete | Remaining | Planned start | Planned finish | Total float | Free float | Cost | Actual cost | 01.B.O.Q Items | 05.EPS |
| --- | --- | --- | --- | --- | --- | --- | --- | --- | --- | --- | --- | --- | --- | --- | --- | --- |
|  | 4 | **B05-Product Water Storage Tank** |  | 2023-09-10 | 2024-07-03 |  |  |  |  |  |  |  |  |  |  |  |
|  | 1 | **Mechanical** |  | 2023-09-10 | 2024-07-03 |  |  |  |  |  |  |  |  |  |  |  |
| B5.WTP.PRO.MEC.001.01 |  | Material Approval GLS Wall Sheets_Product Water Storage Tank | 7d | 2023-09-10 A | 2023-09-18 A | B49.WTP.WEL.MEC.004.01 SS | 100% |  |  |  |  |  | 26,475 | 26,475 | B05 | 03 |
| B5.WTP.PRO.MEC.002.01 |  | Material Approval GLS Roof Doom_Product Water Storage Tank | 7d | 2023-09-10 A | 2023-09-18 A | B5.WTP.PRO.MEC.001.01 SS | 100% |  |  |  |  |  | 26,475 | 26,475 | B05 | 03 |
| B5.WTP.PRO.MEC.003.01 |  | Material Approval Piping, Valve & Accessories_Product Water Storage Tank | 7d | 2023-09-10 A | 2023-09-18 A | B5.WTP.PRO.MEC.002.01 SS | 100% |  |  |  |  |  | 26,475 | 26,475 | B05 | 03 |
| B5.WTP.PRO.MEC.001.02 |  | PO GLS Wall Sheets_Product Water Storage Tank | 30d | 2023-09-18 A | 2023-10-24 A | B5.WTP.PRO.MEC.001.01 | 100% |  |  |  |  |  | 13,238 | 13,238 | B05 | 03 |
| B5.WTP.PRO.MEC.002.02 |  | PO GLS Roof Doom_Product Water Storage Tank | 30d | 2023-09-18 A | 2023-10-24 A | B5.WTP.PRO.MEC.002.01 | 100% |  |  |  |  |  | 13,238 | 13,238 | B05 | 03 |
| B5.WTP.PRO.MEC.003.02 |  | PO Piping, VaLves & Accessories_Product Water Storage Tank | 30d | 2023-09-18 A | 2023-10-24 A | B5.WTP.PRO.MEC.003.01 | 100% |  |  |  |  |  | 13,238 | 13,238 | B05 | 03 |
| B5.WTP.PRO.MEC.001.03 |  | Delivery To Site GLS Wall Sheets_Product Water Storage Tank | 148d | 2023-10-24 A | 2024-04-30 A | B5.WTP.PRO.MEC.001.02 | 100% |  |  |  |  |  | 26,475 | 26,475 | B05 | 03 |
| B5.WTP.PRO.MEC.003.03 |  | Delivery To Site Piping, VaLves & Accessories_Product Water Storage Tank | 197.75d | 2023-10-24 A | 2024-07-03 A | B5.WTP.PRO.MEC.003.02 | 100% |  |  |  |  |  | 26,475 | 26,475 | B05 | 03 |
| B5.WTP.PRO.MEC.002.03 |  | Delivery To Site GLS Roof Doom_Product Water Storage Tank | 6d | 2024-06-27 A | 2024-07-03 A | B5.WTP.PRO.MEC.002.02 | 100% |  |  |  |  |  | 26,475 | 26,475 | B05 | 03 |
|  | 5 | **B06-Water Lifting Pumps** |  | 2023-09-27 | 2024-11-21 |  |  |  |  |  |  |  |  |  |  |  |
|  | 1 | **Mechanical** |  | 2023-09-27 | 2024-07-03 |  |  |  |  |  |  |  |  |  |  |  |
| B6.WTP.WLF.MEC.001.01 |  | Material Approval _Water Lifting Pumps | 25d | 2023-09-27 A | 2023-10-26 A | B1.DET.D.WTP.MEC.001 SS | 100% |  |  |  |  |  | 1,027 | 1,027 | B06 | 03 |
| B6.WTP.WLF.MEC.002.01 |  | Material Approval Piping, VaLves & Accessories _Water Lifting Pumps | 25d | 2023-09-27 A | 2023-10-26 A | B6.WTP.WLF.MEC.001.01 SS | 100% |  |  |  |  |  | 1,027 | 1,027 | B06 | 03 |
| B6.WTP.WLF.MEC.001.02 |  | PO _Water Lifting Pumps | 30d | 2023-10-26 A | 2023-11-30 A | B6.WTP.WLF.MEC.001.01 | 100% |  |  |  |  |  | 514 | 514 | B06 | 03 |
| B6.WTP.WLF.MEC.002.02 |  | PO Piping, VaLves & Accessories _Water Lifting Pumps | 30d | 2023-10-26 A | 2023-11-30 A | B6.WTP.WLF.MEC.002.01 | 100% |  |  |  |  |  | 514 | 514 | B06 | 03 |
| B6.WTP.WLF.MEC.001.03 |  | Delivery To Site_Water Lifting Pumps | 6d | 2024-06-27 A | 2024-07-03 A | B6.WTP.WLF.MEC.001.02 | 100% |  |  |  |  |  | 1,027 | 1,027 | B06 | 03 |
| B6.WTP.WLF.MEC.002.03 |  | Delivery To Site Piping, VaLves & Accessories _Water Lifting Pumps | 6d | 2024-06-27 A | 2024-07-03 A | B6.WTP.WLF.MEC.002.02 | 100% |  |  |  |  |  | 1,027 | 1,027 | B06 | 03 |
|  | 2 | **Electrical** |  | 2023-09-27 | 2024-11-21 |  |  |  |  |  |  |  |  |  |  |  |
| B6.WTP.WLF.ELE.001.01 |  | Material Approval Cables & Control Panels _Water Lifting Pumps | 25d | 2023-09-27 A | 2023-10-26 A | B1.SCH.D.WTP.001 | 100% |  |  |  |  |  | 1,369 | 1,369 | B06 | 03 |
| B6.WTP.WLF.ELE.001.02 |  | PO Cables & Control Panels _Water Lifting Pumps | 4d | 2024-06-22 A | 2024-06-25 A | B6.WTP.WLF.ELE.001.01 | 100% |  |  |  |  |  | 685 | 685 | B06 | 03 |
| B6.WTP.WLF.ELE.001.03 |  | Delivery To Site Cables & Control Panels _Water Lifting Pumps | 46d | 2024-07-22 A | 2024-11-21 | B6.WTP.WLF.ELE.001.02 | 20% | 30d | 2024-07-29 | 2024-09-21 | 79d | 0d | 1,369 | 273.8 | B06 | 03 |
|  | 6 | **B07-Tanker Filling Station With Two Terminal Feeding Points** |  | 2024-09-28 | 2024-11-21 |  |  |  |  |  |  |  |  |  |  |  |
|  | 1 | **Mechanical** |  | 2024-09-28 | 2024-11-21 |  |  |  |  |  |  |  |  |  |  |  |
| B7.WTP.TFS.MEC.001.01 |  | Material Approval Steel Pipes, VaLves & Accessories _Tanker Filling Station | 14d | 2024-09-28 A | 2024-10-03 A | B6.WTP.WLF.MEC.002.01 FS+260d | 100% |  | 2024-09-28 | 2024-10-13 |  |  | 5,478 | 5,478 | B07 | 03 |
| B7.WTP.TFS.MEC.001.02 |  | PO Steel Pipes, VaLves & Accessories _Tanker Filling Station | 30d | 2024-10-03 A | 2024-10-03 A | B7.WTP.TFS.MEC.001.01 | 100% |  | 2024-10-14 | 2024-11-17 |  |  | 2,739 | 2,739 | B07 | 03 |
| B7.WTP.TFS.MEC.001.03 |  | Delivery To Site Steel Pipes, VaLves & Accessories _Tanker Filling Station | 30d | 2024-10-19 | 2024-11-21 | B7.WTP.TFS.MEC.001.02 |  |  |  |  | 76d | 31d | 5,478 |  | B07 | 03 |

Notes:
- B5.WTP.PRO.MEC.001.01: Expenses: (New Expense Item) 26475
- B5.WTP.PRO.MEC.002.01: Expenses: (New Expense Item) 26475
- B5.WTP.PRO.MEC.003.01: Expenses: (New Expense Item) 26475
- B5.WTP.PRO.MEC.001.02: Expenses: (New Expense Item) 13238
- B5.WTP.PRO.MEC.002.02: Expenses: (New Expense Item) 13238
- B5.WTP.PRO.MEC.003.02: Expenses: (New Expense Item) 13238
- B5.WTP.PRO.MEC.001.03: Expenses: (New Expense Item) 26475
- B5.WTP.PRO.MEC.003.03: Expenses: (New Expense Item) 26475
- B5.WTP.PRO.MEC.002.03: Expenses: (New Expense Item) 26475
- B6.WTP.WLF.MEC.001.01: Expenses: (New Expense Item) 1027
- B6.WTP.WLF.MEC.002.01: Expenses: (New Expense Item) 1027
- B6.WTP.WLF.MEC.001.02: Expenses: (New Expense Item) 514
- B6.WTP.WLF.MEC.002.02: Expenses: (New Expense Item) 514
- B6.WTP.WLF.MEC.001.03: Expenses: (New Expense Item) 1027
- B6.WTP.WLF.MEC.002.03: Expenses: (New Expense Item) 1027
- B6.WTP.WLF.ELE.001.01: Expenses: (New Expense Item) 1369
- B6.WTP.WLF.ELE.001.02: Expenses: (New Expense Item) 685
- B6.WTP.WLF.ELE.001.03: Expenses: (New Expense Item) 1369
- B7.WTP.TFS.MEC.001.01: Expenses: (New Expense Item) 5478
- B7.WTP.TFS.MEC.001.02: Expenses: (New Expense Item) 2739
- B7.WTP.TFS.MEC.001.03: Expenses: (New Expense Item) 5478

| ID | WBS | Activity | Duration | Start | Finish | Predecessors | Complete | Remaining | Planned start | Planned finish | Total float | Free float | Cost | Actual cost | 01.B.O.Q Items | 05.EPS |
| --- | --- | --- | --- | --- | --- | --- | --- | --- | --- | --- | --- | --- | --- | --- | --- | --- |
|  | 8 | **B09-New Reject Water Disposal System (Evaporation Pond)** |  | 2023-09-27 | 2024-07-03 |  |  |  |  |  |  |  |  |  |  |  |
|  | 1 | **Mechanical** |  | 2023-09-27 | 2024-07-03 |  |  |  |  |  |  |  |  |  |  |  |
| B9.WTP.EVP.MEC.004.01 |  | Material Approval Pipes _New Reject Water Disposal System (Evaporation Pond) | 25d | 2023-09-27 A | 2023-10-26 A | B1.SCH.D.WTP.001 | 100% |  |  |  |  |  | 36,803 | 36,803 | B09 | 03 |
| B9.WTP.EVP.MEC.006.01 |  | Material Approval Gate VaLVe & Accessories _New Reject Water Disposal System (Evaporation Pond) | 25d | 2023-09-27 A | 2023-10-26 A | B9.WTP.EVP.MEC.004.01 SS | 100% |  |  |  |  |  | 36,803 | 36,803 | B09 | 03 |
| B9.WTP.EVP.MEC.007.01 |  | Material Approval Pumps VaLves & Accessories _New Reject Water Disposal System (Evaporation Pond) | 25d | 2023-09-27 A | 2023-10-26 A | B9.WTP.EVP.MEC.006.01 SS | 100% |  |  |  |  |  | 36,803 | 36,803 | B09 | 03 |
| B9.WTP.EVP.MEC.008.01 |  | Material Approval Pumps _New Reject Water Disposal System (Evaporation Pond) | 25d | 2023-09-27 A | 2023-10-26 A | B9.WTP.EVP.MEC.007.01 SS | 100% |  |  |  |  |  | 36,803 | 36,803 | B09 | 03 |
| B9.WTP.EVP.MEC.004.02 |  | PO Pipes _New Reject Water Disposal System (Evaporation Pond) | 30d | 2023-10-26 A | 2023-11-30 A | B9.WTP.EVP.MEC.004.01 | 100% |  |  |  |  |  | 18,402 | 18,402 | B09 | 03 |
| B9.WTP.EVP.MEC.006.02 |  | PO Gate VaLVe & Accessories _New Reject Water Disposal System (Evaporation Pond) | 30d | 2023-10-26 A | 2023-11-30 A | B9.WTP.EVP.MEC.006.01 | 100% |  |  |  |  |  | 18,402 | 18,402 | B09 | 03 |
| B9.WTP.EVP.MEC.007.02 |  | PO Pumps VaLves & Accessories _New Reject Water Disposal System (Evaporation Pond) | 30d | 2023-10-26 A | 2023-11-30 A | B9.WTP.EVP.MEC.007.01 | 100% |  |  |  |  |  | 18,402 | 18,402 | B09 | 03 |
| B9.WTP.EVP.MEC.008.02 |  | PO Pumps _New Reject Water Disposal System (Evaporation Pond) | 30d | 2023-10-26 A | 2023-11-30 A | B9.WTP.EVP.MEC.008.01 | 100% |  |  |  |  |  | 18,402 | 18,402 | B09 | 03 |
| B9.WTP.EVP.MEC.004.03 |  | Delivery To Site Pipes _New Reject Water Disposal System (Evaporation Pond) | 154.75d | 2023-11-30 A | 2024-06-18 A | B9.WTP.EVP.MEC.004.02 | 100% |  | 2023-11-30 | 2024-06-13 |  |  | 36,803 | 36,803 | B09 | 03 |
| B9.WTP.EVP.MEC.006.03 |  | Delivery To Site Gate VaLVe & Accessories _New Reject Water Disposal System (Evaporation Pond) | 135d | 2023-11-30 A | 2024-05-22 A | B9.WTP.EVP.MEC.006.02 | 100% |  |  |  |  |  | 36,803 | 36,803 | B09 | 03 |
| B9.WTP.EVP.MEC.007.03 |  | Delivery To Site Pumps VaLves & Accessories _New Reject Water Disposal System (Evaporation Pond) | 6d | 2024-06-27 A | 2024-07-03 A | B9.WTP.EVP.MEC.007.02 | 100% |  |  |  |  |  | 36,803 | 36,803 | B09 | 03 |
| B9.WTP.EVP.MEC.008.03 |  | Delivery To Site Pumps _New Reject Water Disposal System (Evaporation Pond) | 6d | 2024-06-27 A | 2024-07-03 A | B9.WTP.EVP.MEC.008.02 | 100% |  |  |  |  |  | 36,803 | 36,803 | B09 | 03 |
|  | 9 | **B10-Backup Ggenerators (WTP)** |  | 2023-09-27 | 2024-11-17 |  |  |  |  |  |  |  |  |  |  |  |
|  | 2 | **Electrical** |  | 2023-09-27 | 2024-11-17 |  |  |  |  |  |  |  |  |  |  |  |
| B10.WTP.GEN.ELE.001.01 |  | Material Approval Backup Generators, ATS & Mdp_WTP | 25d | 2023-09-27 A | 2023-10-26 A | B1.SCH.D.WTP.001 | 100% |  |  |  |  |  | 27,388 | 27,388 | B10 | 03 |
| B10.WTP.GEN.ELE.001.02 |  | PO Backup Generators, ATS & Mdp_WTP | 30d | 2023-10-26 A | 2023-11-30 A | B10.WTP.GEN.ELE.001.01 | 100% |  |  |  |  |  | 13,694 | 13,694 | B10 | 03 |
| B10.WTP.GEN.ELE.001.03 |  | Delivery To Site Backup Generators, ATS & Mdp_WTP | 39d | 2024-07-24 A | 2024-11-17 | B10.WTP.GEN.ELE.001.02 | 100% | 26d | 2024-07-22 | 2024-09-05 | 75d | 38d | 27,388 | 27,388 | B10 | 03 |
|  | 10 | **B11-Package Sub Station (WTP)** |  | 2023-09-27 | 2024-09-26 |  |  |  |  |  |  |  |  |  |  |  |
|  | 2 | **Electrical** |  | 2023-09-27 | 2024-09-26 |  |  |  |  |  |  |  |  |  |  |  |
| B11.WTP.SUB.ELE.001.01 |  | Material Approval Package Sub Station (WTP) | 25d | 2023-09-27 A | 2023-10-26 A | B10.WTP.GEN.ELE.001.01 SS | 100% |  |  |  |  |  | 8,901 | 8,901 | B11 | 03 |
| B11.WTP.SUB.ELE.001.02 |  | PO Package Sub Station (WTP) | 30d | 2023-10-26 A | 2023-11-30 A | B11.WTP.SUB.ELE.001.01 | 100% |  |  |  |  |  | 4,451 | 4,451 | B11 | 03 |
| B11.WTP.SUB.ELE.001.03 |  | Delivery To Site Package Sub Station (WTP) | 39d | 2024-07-24 A | 2024-09-26 A | B11.WTP.SUB.ELE.001.02 | 100% |  | 2024-07-31 | 2024-09-15 |  |  | 8,901 | 8,901 | B11 | 03 |

Notes:
- B9.WTP.EVP.MEC.004.01: Expenses: (New Expense Item) 36803
- B9.WTP.EVP.MEC.006.01: Expenses: (New Expense Item) 36803
- B9.WTP.EVP.MEC.007.01: Expenses: (New Expense Item) 36803
- B9.WTP.EVP.MEC.008.01: Expenses: (New Expense Item) 36803
- B9.WTP.EVP.MEC.004.02: Expenses: (New Expense Item) 18402
- B9.WTP.EVP.MEC.006.02: Expenses: (New Expense Item) 18402
- B9.WTP.EVP.MEC.007.02: Expenses: (New Expense Item) 18402
- B9.WTP.EVP.MEC.008.02: Expenses: (New Expense Item) 18402
- B9.WTP.EVP.MEC.004.03: Expenses: (New Expense Item) 36803
- B9.WTP.EVP.MEC.006.03: Expenses: (New Expense Item) 36803
- B9.WTP.EVP.MEC.007.03: Expenses: (New Expense Item) 36803
- B9.WTP.EVP.MEC.008.03: Expenses: (New Expense Item) 36803
- B10.WTP.GEN.ELE.001.01: Expenses: (New Expense Item) 27388
- B10.WTP.GEN.ELE.001.02: Expenses: (New Expense Item) 13694
- B10.WTP.GEN.ELE.001.03: Expenses: (New Expense Item) 27388
- B11.WTP.SUB.ELE.001.01: Expenses: (New Expense Item) 8901
- B11.WTP.SUB.ELE.001.02: Expenses: (New Expense Item) 4451
- B11.WTP.SUB.ELE.001.03: Expenses: (New Expense Item) 8901

| ID | WBS | Activity | Duration | Start | Finish | Predecessors | Complete | Total float | Free float | Cost | Actual cost | 01.B.O.Q Items | 05.EPS |
| --- | --- | --- | --- | --- | --- | --- | --- | --- | --- | --- | --- | --- | --- |
|  | 11 | **B12-MV CABLE For RMU LOOP** |  | 2023-09-27 | 2024-11-21 |  |  |  |  |  |  |  |  |
|  | 2 | **Electrical** |  | 2023-09-27 | 2024-11-21 |  |  |  |  |  |  |  |  |
| B12.WTP.RMU.ELE.001.01 |  | Material Approval Cables_MV Cable For RMU Loop | 25d | 2023-09-27 A | 2023-10-26 A | B11.WTP.SUB.ELE.001.01 SS | 100% |  |  | 3,424 | 3,424 | B12 | 03 |
| B12.WTP.RMU.ELE.001.02 |  | PO Cables_MV Cable For RMU Loop | 4d | 2024-06-22 A | 2024-06-25 A | B12.WTP.RMU.ELE.001.01 | 100% |  |  | 1,712 | 1,712 | B12 | 03 |
| B12.WTP.RMU.ELE.001.03 |  | Delivery To Site Cables_MV Cable For RMU Loop | 30d | 2024-10-19 | 2024-11-21 | B12.WTP.RMU.ELE.001.02 FS+70d |  | 82d | 0d | 3,424 |  | B12 | 03 |
|  | 12 | **B13-LV CABLE TO ATS PANEL** |  | 2023-09-27 | 2024-11-21 |  |  |  |  |  |  |  |  |
|  | 2 | **Electrical** |  | 2023-09-27 | 2024-11-21 |  |  |  |  |  |  |  |  |
| B13.WTP.ATS.ELE.001.01 |  | Material Approval Cables_LV Cable To ATS Panel | 25d | 2023-09-27 A | 2023-10-26 A | B12.WTP.RMU.ELE.001.01 SS | 100% |  |  | 35,605 | 35,605 | B13 | 03 |
| B13.WTP.ATS.ELE.001.02 |  | PO Cables_LV Cable To ATS Panel | 4d | 2024-06-22 A | 2024-06-25 A | B13.WTP.ATS.ELE.001.01 | 100% |  |  | 17,802 | 17,802 | B13 | 03 |
| B13.WTP.ATS.ELE.001.03 |  | Delivery To Site Cables_LV Cable To ATS Panel | 30d | 2024-10-19 | 2024-11-21 | B13.WTP.ATS.ELE.001.02 FS+70d |  | 74d | 54d | 35,605 |  | B13 | 03 |
|  | 13 | **B20-House Connections** |  | 2023-09-10 | 2024-01-25 |  |  |  |  |  |  |  |  |
|  | 1 | **Mechanical** |  | 2023-09-10 | 2024-01-25 |  |  |  |  |  |  |  |  |
| B20.WTP.HC.MEC.001.01 |  | Material Approval Pipes, Valve & Valve Chamber_House Connections | 7d | 2023-09-10 A | 2023-09-18 A | B1.SCH.D.WTP.001 SS | 100% |  |  | 13,694 | 13,694 | B20 | 03 |
| B20.WTP.HC.MEC.001.02 |  | PO Pipes, VaLVe & VaLVe Chamber_House Connections | 30d | 2023-09-18 A | 2023-10-24 A | B20.WTP.HC.MEC.001.01 | 100% |  |  | 6,847 | 6,847 | B20 | 03 |
| B20.WTP.HC.MEC.001.03 |  | Delivery To Site Pipes, VaLVe & VaLVe Chamber_House Connections | 80d | 2023-10-24 A | 2024-01-25 A | B20.WTP.HC.MEC.001.02 | 100% |  |  | 13,694 | 13,694 | B20 | 03 |
|  | 14 | **B47-Hand Held Water Quality Instruments WTP** |  | 2023-09-10 | 2024-11-13 |  |  |  |  |  |  |  |  |
|  | 1 | **Mechanical** |  | 2023-09-10 | 2024-11-13 |  |  |  |  |  |  |  |  |
| B47.WTP.INS.MEC.001.01 |  | Material Approval Hand Held Water Quality Instruments_WTP | 7d | 2023-09-10 A | 2023-09-18 A | B1.DET.D.WTP.MEC.001 | 100% |  |  | 2,054 | 2,054 | B47 | 03 |
| B47.WTP.INS.MEC.001.02 |  | PO Hand Held Water Quality Instruments_WTP | 30d | 2023-09-18 A | 2023-10-24 A | B47.WTP.INS.MEC.001.01 | 100% |  |  | 1,027 | 1,027 | B47 | 03 |
| B47.WTP.INS.MEC.001.03 |  | Delivery To Site Hand Held Water Quality Instruments_WTP | 10d | 2024-11-02 | 2024-11-13 | B47.WTP.INS.MEC.001.02 FS+300d |  | 122.75d | 0d | 2,054 |  | B47 | 03 |
|  | 15 | **B49-New Deep Well** |  | 2023-09-10 | 2025-01-04 |  |  |  |  |  |  |  |  |
|  | 1 | **Mechanical** |  | 2023-09-10 | 2025-01-04 |  |  |  |  |  |  |  |  |
| B49.WTP.WEL.MEC.004.01 |  | Material Approval Pipes_New Deep Well | 7d | 2023-09-10 A | 2023-09-18 A | B47.WTP.INS.MEC.001.01 | 100% |  |  | 23,622 | 23,622 | B49 | 03 |
| B49.WTP.WEL.MEC.004.02 |  | PO Pipes_New Deep Well | 30d | 2023-09-18 A | 2023-10-24 A | B49.WTP.WEL.MEC.004.01 | 100% |  |  | 11,811 | 11,811 | B49 | 03 |
| B49.WTP.WEL.MEC.004.03 |  | Delivery To Site Pipes_New Deep Well | 90d | 2023-10-24 A | 2024-02-06 A | B49.WTP.WEL.MEC.004.02 | 100% |  |  | 23,622 | 23,622 | B49 | 03 |
| B49.WTP.WEL.MEC.002.01 |  | Material Approval SS Pipes_New Deep Well | 7d | 2024-10-19 | 2024-10-26 | B47.WTP.INS.MEC.001.01 FS+280d |  | 0d |  | 23,622 |  | B49 | 03 |
| B49.WTP.WEL.MEC.003.01 |  | Material Approval Pump_New Deep Well | 7d | 2024-10-19 | 2024-10-26 | B49.WTP.WEL.MEC.002.01 SS |  | 8d | 0d | 23,622 |  | B49 | 03 |
| B49.WTP.WEL.MEC.002.02 |  | PO Ss Pipes_New Deep Well | 20d | 2024-10-27 | 2024-11-18 | B49.WTP.WEL.MEC.002.01 |  | 6d | 0d | 11,811 |  | B49 | 03 |
| B49.WTP.WEL.MEC.003.02 |  | PO Pump_New Deep Well | 10d | 2024-10-27 | 2024-11-06 | B49.WTP.WEL.MEC.003.01 |  | 8d | 0d | 11,811 |  | B49 | 03 |
| B49.WTP.WEL.MEC.003.03 |  | Delivery To Site Pump_New Deep Well | 50d | 2024-11-07 | 2025-01-04 | B49.WTP.WEL.MEC.003.02 |  | 8d | 0d | 23,622 |  | B49 | 03 |
| B49.WTP.WEL.MEC.002.03 |  | Delivery To Site SS Pipes_New Deep Well | 30d | 2024-11-19 | 2024-12-23 | B49.WTP.WEL.MEC.002.02 |  | 18d | 0d | 23,622 |  | B49 | 03 |

Notes:
- B12.WTP.RMU.ELE.001.01: Expenses: (New Expense Item) 3424
- B12.WTP.RMU.ELE.001.02: Expenses: (New Expense Item) 1712
- B12.WTP.RMU.ELE.001.03: Expenses: (New Expense Item) 3424
- B13.WTP.ATS.ELE.001.01: Expenses: (New Expense Item) 35605
- B13.WTP.ATS.ELE.001.02: Expenses: (New Expense Item) 17802
- B13.WTP.ATS.ELE.001.03: Expenses: (New Expense Item) 35605
- B20.WTP.HC.MEC.001.01: Expenses: (New Expense Item) 13694
- B20.WTP.HC.MEC.001.02: Expenses: (New Expense Item) 6847
- B20.WTP.HC.MEC.001.03: Expenses: (New Expense Item) 13694
- B47.WTP.INS.MEC.001.01: Expenses: (New Expense Item) 2054
- B47.WTP.INS.MEC.001.02: Expenses: (New Expense Item) 1027
- B47.WTP.INS.MEC.001.03: Expenses: (New Expense Item) 2054
- B49.WTP.WEL.MEC.004.01: Expenses: (New Expense Item) 23622
- B49.WTP.WEL.MEC.004.02: Expenses: (New Expense Item) 11811
- B49.WTP.WEL.MEC.004.03: Expenses: (New Expense Item) 23622
- B49.WTP.WEL.MEC.002.01: Expenses: (New Expense Item) 23622
- B49.WTP.WEL.MEC.003.01: Expenses: (New Expense Item) 23622
- B49.WTP.WEL.MEC.002.02: Expenses: (New Expense Item) 11811
- B49.WTP.WEL.MEC.003.02: Expenses: (New Expense Item) 11811
- B49.WTP.WEL.MEC.003.03: Expenses: (New Expense Item) 23622
- B49.WTP.WEL.MEC.002.03: Expenses: (New Expense Item) 23622

| ID | WBS | Activity | Duration | Start | Finish | Predecessors | Complete | Total float | Free float | Cost | Actual cost | 01.B.O.Q Items | 05.EPS |
| --- | --- | --- | --- | --- | --- | --- | --- | --- | --- | --- | --- | --- | --- |
|  | 2 | **Electrical** |  | 2023-09-27 | 2024-12-31 |  |  |  |  |  |  |  |  |
| B49.WTP.WEL.ELE.001.01 |  | Material Approval Pipes, Cables & Control Panel_New Deep Well | 25d | 2023-09-27 A | 2023-10-26 A | B4.WTP.EQ.ELE.013.01 SS | 100% |  |  | 7,874 | 7,874 | B49 | 03 |
| B49.WTP.WEL.ELE.001.02 |  | PO Pipes, Cables & Control Panel_New Deep Well | 7d | 2024-11-19 | 2024-11-26 | B49.WTP.WEL.ELE.001.01, B49.WTP.WEL.MEC.002.02 |  | 6d | 0d | 3,937 |  | B49 | 03 |
| B49.WTP.WEL.ELE.001.03 |  | Delivery To Site Pipes, Cables & Control Panel_New Deep Well | 30d | 2024-11-27 | 2024-12-31 | B49.WTP.WEL.ELE.001.02 |  | 6d | 0d | 7,874 |  | B49 | 03 |
|  | 16 | **B53-New Well Pump WTP** |  | 2024-10-27 | 2025-02-16 |  |  |  |  |  |  |  |  |
|  | 1 | **Mechanical** |  | 2024-10-27 | 2025-02-05 |  |  |  |  |  |  |  |  |
| B53.WTP.NWP.MEC.002.01 |  | Material Approval SS Pipes_New Well Pump WTP | 7d | 2024-10-27 | 2024-11-03 | B49.WTP.WEL.MEC.002.01, B49.WTP.WEL.MEC.002.01 FF |  | 0d |  | 20,815 |  | B53 | 03 |
| B53.WTP.NWP.MEC.002.02 |  | PO SS Pipes_New Well Pump WTP | 14d | 2024-11-04 | 2024-11-19 | B53.WTP.NWP.MEC.002.01 |  | 24d | 0d | 10,408 |  | B53 | 03 |
| B53.WTP.NWP.MEC.003.01 |  | Material Approval Fans_New Well Pump WTP | 7d | 2024-11-04 | 2024-11-11 | B53.WTP.NWP.MEC.002.01 |  | 17d | 0d | 20,815 |  | B53 | 03 |
| B53.WTP.NWP.MEC.004.01 |  | Material Approval Pump And VaLves_New Well Pump WTP | 7d | 2024-11-04 | 2024-11-11 | B53.WTP.NWP.MEC.002.01, B53.WTP.NWP.MEC.002.01 FF |  | 0d |  | 20,815 |  | B53 | 03 |
| B53.WTP.NWP.MEC.003.02 |  | PO Fans_New Well Pump WTP | 14d | 2024-11-12 | 2024-11-27 | B53.WTP.NWP.MEC.003.01 |  | 17d | 0d | 10,408 |  | B53 | 03 |
| B53.WTP.NWP.MEC.004.02 |  | PO Pump And VaLves_New Well Pump WTP | 10d | 2024-11-12 | 2024-11-23 | B53.WTP.NWP.MEC.004.01 |  | 16d | 0d | 10,408 |  | B53 | 03 |
| B53.WTP.NWP.MEC.002.03 |  | Delivery To Site SS Pipes_New Well Pump WTP | 30d | 2024-11-20 | 2024-12-24 | B53.WTP.NWP.MEC.002.02 |  | 24d | 0d | 20,815 |  | B53 | 03 |
| B53.WTP.NWP.MEC.004.03 |  | Delivery To Site Pump And VaLves_New Well Pump WTP | 40d | 2024-11-24 | 2025-01-08 | B53.WTP.NWP.MEC.004.02 |  | 16d | 0d | 20,815 |  | B53 | 03 |
| B53.WTP.NWP.MEC.003.03 |  | Delivery To Site Fans_New Well Pump WTP | 60d | 2024-11-28 | 2025-02-05 | B53.WTP.NWP.MEC.003.02 |  | 17d | 0d | 20,815 |  | B53 | 03 |
|  | 2 | **Electrical** |  | 2024-11-04 | 2025-02-16 |  |  |  |  |  |  |  |  |
| B53.WTP.NWP.ELE.002.01 |  | Material Approval Panel_New Well Pump WTP | 30d | 2024-11-04 | 2024-12-08 | B53.WTP.NWP.MEC.004.01 SS |  | 0d |  | 7,806 |  | B53 | 03 |
| B53.WTP.NWP.ELE.002.02 |  | PO Panel_New Well Pump WTP | 10d | 2024-12-09 | 2024-12-19 | B53.WTP.NWP.ELE.002.01 |  | 7d | 0d | 3,903 |  | B53 | 03 |
| B53.WTP.NWP.ELE.001.01 |  | Material Approval Cabels_New Well Pump WTP | 10d | 2024-12-17 | 2024-12-28 | B53.WTP.NWP.MEC.002.01, B54.WTP.ROW.MEC.002.01 |  | 0d |  | 7,806 |  | B53 | 03 |
| B53.WTP.NWP.ELE.002.03 |  | Delivery To Site Panel_New Well Pump WTP | 50d | 2024-12-21 | 2025-02-16 | B53.WTP.NWP.ELE.002.02 |  | 7d |  | 7,806 |  | B53 | 03 |
| B53.WTP.NWP.ELE.001.02 |  | PO Cabels_New Well Pump WTP | 10d | 2024-12-29 | 2025-01-08 | B53.WTP.NWP.ELE.001.01 |  | 0d |  | 3,903 |  | B53 | 03 |
| B53.WTP.NWP.ELE.001.03 |  | Delivery To Site Cabels_New Well Pump WTP | 20d | 2025-01-09 | 2025-02-01 | B53.WTP.NWP.ELE.001.02 |  | 0d |  | 7,806 |  | B53 | 03 |
|  | 17 | **B54-New Pumps from Row Tank** |  | 2024-12-09 | 2025-04-13 |  |  |  |  |  |  |  |  |
|  | 1 | **Mechanical** |  | 2024-12-09 | 2025-03-15 |  |  |  |  |  |  |  |  |
| B54.WTP.ROW.MEC.002.01 |  | Material Approval Pump_New Pumps From Row Tank | 7d | 2024-12-09 | 2024-12-16 | B49.WTP.WEL.MEC.002.01 SF, B54.WTP.ROW.MEC.003.01 SS |  | 0d |  | 4,006 |  | B54 | 03 |
| B54.WTP.ROW.MEC.003.01 |  | Material Approval Pipes 200Mm._New Pumps From Row Tank | 7d | 2024-12-09 | 2024-12-16 | B53.WTP.NWP.ELE.002.01 |  | 0d |  | 4,006 |  | B54 | 03 |
| B54.WTP.ROW.MEC.002.02 |  | PO Pump_New Pumps From Row Tank | 12d | 2024-12-17 | 2024-12-30 | B54.WTP.ROW.MEC.002.01 |  | 6d | 0d | 2,003 |  | B54 | 03 |
| B54.WTP.ROW.MEC.003.02 |  | PO Pipes 200Mm._New Pumps From Row Tank | 10d | 2024-12-17 | 2024-12-28 | B54.WTP.ROW.MEC.003.01 |  | 28d | 0d | 2,003 |  | B54 | 03 |
| B54.WTP.ROW.MEC.003.03 |  | Delivery To Site Pipes 200Mm._New Pumps From Row Tank | 40d | 2024-12-29 | 2025-02-12 | B54.WTP.ROW.MEC.003.02 |  | 28d | 22d | 4,006 |  | B54 | 03 |
| B54.WTP.ROW.MEC.002.03 |  | Delivery To Site Pump_New Pumps From Row Tank | 60d | 2024-12-31 | 2025-03-15 | B54.WTP.ROW.MEC.002.02 |  | 6d | 0d | 4,006 |  | B54 | 03 |

Notes:
- B49.WTP.WEL.ELE.001.01: Expenses: (New Expense Item) 7874
- B49.WTP.WEL.ELE.001.02: Expenses: (New Expense Item) 3937
- B49.WTP.WEL.ELE.001.03: Expenses: (New Expense Item) 7874
- B53.WTP.NWP.MEC.002.01: Expenses: (New Expense Item) 20815
- B53.WTP.NWP.MEC.002.02: Expenses: (New Expense Item) 10408
- B53.WTP.NWP.MEC.003.01: Expenses: (New Expense Item) 20815
- B53.WTP.NWP.MEC.004.01: Expenses: (New Expense Item) 20815
- B53.WTP.NWP.MEC.003.02: Expenses: (New Expense Item) 10408
- B53.WTP.NWP.MEC.004.02: Expenses: (New Expense Item) 10408
- B53.WTP.NWP.MEC.002.03: Expenses: (New Expense Item) 20815
- B53.WTP.NWP.MEC.004.03: Expenses: (New Expense Item) 20815
- B53.WTP.NWP.MEC.003.03: Expenses: (New Expense Item) 20815
- B53.WTP.NWP.ELE.002.01: Expenses: (New Expense Item) 7806
- B53.WTP.NWP.ELE.002.02: Expenses: (New Expense Item) 3903
- B53.WTP.NWP.ELE.001.01: Expenses: (New Expense Item) 7806
- B53.WTP.NWP.ELE.002.03: Expenses: (New Expense Item) 7806
- B53.WTP.NWP.ELE.001.02: Expenses: (New Expense Item) 3903
- B53.WTP.NWP.ELE.001.03: Expenses: (New Expense Item) 7806
- B54.WTP.ROW.MEC.002.01: Expenses: (New Expense Item) 4006
- B54.WTP.ROW.MEC.003.01: Expenses: (New Expense Item) 4006
- B54.WTP.ROW.MEC.002.02: Expenses: (New Expense Item) 2003
- B54.WTP.ROW.MEC.003.02: Expenses: (New Expense Item) 2003
- B54.WTP.ROW.MEC.003.03: Expenses: (New Expense Item) 4006
- B54.WTP.ROW.MEC.002.03: Expenses: (New Expense Item) 4006

| ID | WBS | Activity | Duration | Start | Finish | Predecessors | Complete | Remaining | Planned start | Planned finish | Total float | Free float | Cost | Actual cost | 01.B.O.Q Items | 05.EPS |
| --- | --- | --- | --- | --- | --- | --- | --- | --- | --- | --- | --- | --- | --- | --- | --- | --- |
|  | 2 | **Electrical** |  | 2024-12-09 | 2025-04-13 |  |  |  |  |  |  |  |  |  |  |  |
| B54.WTP.ROW.ELE.001.01 |  | Material Approval Panel_New Pumps From Row Tank | 25d | 2024-12-09 | 2025-01-06 | B54.WTP.ROW.MEC.003.01 SS |  |  |  |  | 0d |  | 890 |  | B54 | 03 |
| B54.WTP.ROW.ELE.001.02 |  | PO Panel_New Pumps From Row Tank | 10d | 2025-01-07 | 2025-01-18 | B54.WTP.ROW.ELE.001.01 |  |  |  |  | 0d |  | 445 |  | B54 | 03 |
| B54.WTP.ROW.ELE.001.03 |  | Delivery To Site Panel_New Pumps From Row Tank | 60d | 2025-01-19 | 2025-04-13 | B54.WTP.ROW.ELE.001.02 |  |  |  |  | 0d |  | 890 |  | B54 | 03 |
|  | 1 | **B(14-15-16-17-18-19)-Refurbishment Water Supply Network** |  | 2023-09-27 | 2024-02-08 |  |  |  |  |  |  |  |  |  |  |  |
|  | 1 | **Mechanical** |  | 2023-09-27 | 2024-02-08 |  |  |  |  |  |  |  |  |  |  |  |
| REF.WTP.NET.MEC.001 |  | Material Approval Pipes,VaLVe & Accessories_Refurbishment Net.(WTP) | 25d | 2023-09-27 A | 2023-10-26 A | B9.WTP.EVP.MEC.008.01 SS | 100% |  |  |  |  |  | 10,271 | 10,271 |  | 03 |
| REF.WTP.NET.MEC.002 |  | PO Pipes,VaLVe & Accessories_Refurbishment Net.(WTP) | 30d | 2023-10-26 A | 2023-11-30 A | REF.WTP.NET.MEC.001 | 100% |  |  |  |  |  | 5,135 | 5,135 |  | 03 |
| REF.WTP.NET.MEC.003 |  | Delivery To Site Pipes,VaLVe & Accessories_Refurbishment Net.(WTP) | 60d | 2023-11-30 A | 2024-02-08 A | REF.WTP.NET.MEC.002 | 100% |  |  |  |  |  | 10,271 | 10,271 |  | 03 |
|  | 2 | **STP** |  | 2023-09-27 | 2025-02-05 |  |  |  |  |  |  |  |  |  |  |  |
|  | 3 | **B25-Build New Sewage Treatment Plant** |  | 2023-09-27 | 2025-01-05 |  |  |  |  |  |  |  |  |  |  |  |
|  | 1 | **Mechanical** |  | 2023-09-27 | 2024-12-30 |  |  |  |  |  |  |  |  |  |  |  |
| B25.STP.AR.MEC.001.01 |  | Material Approval GLS Wall Sheets_Aeration Tank | 25d | 2023-09-27 A | 2023-10-26 A | B1.SCH.D.STP.001 | 100% |  |  |  |  |  | 11,054 | 11,054 | B25 | 03 |
| B25.STP.AR.MEC.002.01 |  | Material Approval Air Diffusers_Aeration Tank | 25d | 2023-09-27 A | 2023-10-26 A | B25.STP.AR.MEC.001.01 SS | 100% |  |  |  |  |  | 11,054 | 11,054 | B25 | 03 |
| B25.STP.AR.MEC.003.01 |  | Material Approval Fine Screen / Grit Removal_Aeration Tank | 25d | 2023-09-27 A | 2023-10-26 A | B25.STP.AR.MEC.002.01 SS | 100% |  |  |  |  |  | 11,054 | 11,054 | B25 | 03 |
| B25.STP.CHL.MEC.001.01 |  | Material Approval GLS Wall Sheets_Chlorine Contact Tank | 25d | 2023-09-27 A | 2023-10-26 A | B25.STP.AR.MEC.003.01 SS | 100% |  |  |  |  |  | 11,054 | 11,054 | B25 | 03 |
| B25.STP.CLA.MEC.001.01 |  | Material Approval GLS Wall Sheets_Claifier Tank (Settling Tank) | 25d | 2023-09-27 A | 2023-10-26 A | B25.STP.CHL.MEC.001.01 SS | 100% |  |  |  |  |  | 11,054 | 11,054 | B25 | 03 |
| B25.STP.CLA.MEC.002.01 |  | Material Approval Clarifier_Claifier Tank (Settling Tank) | 25d | 2023-09-27 A | 2023-10-26 A | B25.STP.CLA.MEC.001.01 SS | 100% |  |  |  |  |  | 11,054 | 11,054 | B25 | 03 |
| B25.STP.CLA.MEC.003.01 |  | Material Approval Telescopic VaLVe_Claifier Tank (Settling Tank) | 25d | 2023-09-27 A | 2023-10-26 A | B25.STP.CLA.MEC.002.01 SS | 100% |  |  |  |  |  | 11,054 | 11,054 | B25 | 03 |
| B25.STP.EQ.MEC.001.01 |  | Material Approval Blower_Equipment Building (STP) | 25d | 2023-09-27 A | 2023-10-26 A | B25.STP.CLA.MEC.003.01 SS | 100% |  |  |  |  |  | 11,054 | 11,054 | B25 | 03 |
| B25.STP.EQ.MEC.002.01 |  | Material Approval Filter Feed / Backwash Pumps_Equipment Building (STP) | 25d | 2023-09-27 A | 2023-10-26 A | B25.STP.EQ.MEC.001.01 SS | 100% |  |  |  |  |  | 11,054 | 11,054 | B25 | 03 |
| B25.STP.EQ.MEC.003.01 |  | Material Approval Tanker Filling Pumps_Equipment Building (STP) | 25d | 2023-09-27 A | 2023-10-26 A | B25.STP.EQ.MEC.002.01 SS | 100% |  |  |  |  |  | 11,054 | 11,054 | B25 | 03 |
| B25.STP.EQ.MEC.004.01 |  | Material Approval Sand Filter & Filter Media & Motprized Butterfly VaLves_Equipment Building (STP) | 25d | 2023-09-27 A | 2023-10-26 A | B25.STP.EQ.MEC.003.01 SS | 100% |  |  |  |  |  | 11,054 | 11,054 | B25 | 03 |
| B25.STP.EQ.MEC.005.01 |  | Material Approval Chemical Tank_Equipment Building (STP) | 25d | 2023-09-27 A | 2023-10-26 A | B25.STP.EQ.MEC.004.01 SS | 100% |  |  |  |  |  | 11,054 | 11,054 | B25 | 03 |
| B25.STP.EQ.MEC.007.01 |  | Material Approval Chemical Dosing Pumps_Equipment Building (STP) | 25d | 2023-09-27 A | 2023-10-26 A | B1.SCH.D.STP.001 | 100% |  |  |  |  |  | 11,054 | 11,054 | B25 | 03 |
| B25.STP.EQ.MEC.008.01 |  | Material Approval Sludge Dewatering Unit (Medium Belt Press)_Equipment Building (STP) | 25d | 2023-09-27 A | 2023-10-26 A | B25.STP.EQ.MEC.007.01 SS | 100% |  |  |  |  |  | 11,054 | 11,054 | B25 | 03 |
| B25.STP.EQ.MEC.009.01 |  | Material Approval Polyelectrolite Unit (Polymer Mixing )_Equipment Building (STP) | 25d | 2023-09-27 A | 2023-10-26 A | B25.STP.EQ.MEC.008.01 SS | 100% |  |  |  |  |  | 11,054 | 11,054 | B25 | 03 |
| B25.STP.EQ.MEC.010.01 |  | Material Approval Exhaust Fan_Equipment Building (STP) | 25d | 2023-09-27 A | 2023-10-26 A | B25.STP.EQ.MEC.009.01 SS | 100% |  |  |  |  |  | 11,054 | 11,054 | B25 | 03 |
| B25.STP.EQ.MEC.011.01 |  | Material Approval A.C_Equipment Building (STP) | 25d | 2023-09-27 A | 2023-10-26 A | B25.STP.EQ.MEC.010.01 SS | 100% |  |  |  |  |  | 11,054 | 11,054 | B25 | 03 |
| B25.STP.EQ.MEC.012.01 |  | Material Approval Crane_Equipment Building (STP) | 25d | 2023-09-27 A | 2023-10-26 A | B25.STP.EQ.MEC.011.01 SS | 100% |  |  |  |  |  | 11,054 | 11,054 | B25 | 03 |
| B25.STP.LRS.MEC.001.01 |  | Material Approval Raw Sewage Lifting Pumps_Lifting (Raw Sewage) Tank | 25d | 2023-09-27 A | 2023-10-26 A | B1.SCH.D.STP.001 | 100% |  |  |  |  |  | 11,054 | 11,054 | B25 | 03 |
| B25.STP.SLG.MEC.001.01 |  | Material Approval Return Sludge Pumps_Return Sludge Tank | 25d | 2023-09-27 A | 2023-10-26 A | B25.STP.LRS.MEC.001.01 SS | 100% |  |  |  |  |  | 11,054 | 11,054 | B25 | 03 |
| B25.STP.AR.MEC.001.02 |  | PO GLS Wall Sheets_Aeration Tank | 30d | 2023-10-26 A | 2023-11-30 A | B25.STP.AR.MEC.001.01 | 100% |  |  |  |  |  | 5,527 | 5,527 | B25 | 03 |
| B25.STP.AR.MEC.002.02 |  | PO Air Diffusers_Aeration Tank | 30d | 2023-10-26 A | 2023-11-30 A | B25.STP.AR.MEC.002.01 | 100% |  |  |  |  |  | 5,527 | 5,527 | B25 | 03 |
| B25.STP.AR.MEC.003.02 |  | PO Fine Screen / Grit Removal_Aeration Tank | 30d | 2023-10-26 A | 2023-11-30 A | B25.STP.AR.MEC.003.01 | 100% |  |  |  |  |  | 5,527 | 5,527 | B25 | 03 |
| B25.STP.CHL.MEC.001.02 |  | PO GLS Wall Sheets_Chlorine Contact Tank | 30d | 2023-10-26 A | 2023-11-30 A | B25.STP.CHL.MEC.001.01 | 100% |  |  |  |  |  | 5,527 | 5,527 | B25 | 03 |
| B25.STP.CLA.MEC.001.02 |  | PO GLS Wall Sheets_Claifier Tank (Settling Tank) | 30d | 2023-10-26 A | 2023-11-30 A | B25.STP.CLA.MEC.001.01 | 100% |  |  |  |  |  | 5,527 | 5,527 | B25 | 03 |
| B25.STP.CLA.MEC.002.02 |  | PO Clarifier_Claifier Tank (Settling Tank) | 30d | 2023-10-26 A | 2023-11-30 A | B25.STP.CLA.MEC.002.01 | 100% |  |  |  |  |  | 5,527 | 5,527 | B25 | 03 |
| B25.STP.CLA.MEC.003.02 |  | PO Telescopic VaLVe_Claifier Tank (Settling Tank) | 30d | 2023-10-26 A | 2023-11-30 A | B25.STP.CLA.MEC.003.01 | 100% |  |  |  |  |  | 5,527 | 5,527 | B25 | 03 |
| B25.STP.EQ.MEC.001.02 |  | PO Blower_Equipment Building (STP) | 30d | 2023-10-26 A | 2023-11-30 A | B25.STP.EQ.MEC.001.01 | 100% |  |  |  |  |  | 5,527 | 5,527 | B25 | 03 |
| B25.STP.EQ.MEC.002.02 |  | PO Filter Feed / Backwash Pumps_Equipment Building (STP) | 30d | 2023-10-26 A | 2023-11-30 A | B25.STP.EQ.MEC.002.01 | 100% |  |  |  |  |  | 5,527 | 5,527 | B25 | 03 |
| B25.STP.EQ.MEC.003.02 |  | PO Tanker Filling Pumps_Equipment Building (STP) | 30d | 2023-10-26 A | 2023-11-30 A | B25.STP.EQ.MEC.003.01 | 100% |  |  |  |  |  | 5,527 | 5,527 | B25 | 03 |
| B25.STP.EQ.MEC.004.02 |  | PO Sand Filter & Filter Media & Motprized Butterfly VaLves_Equipment Building (STP) | 30d | 2023-10-26 A | 2023-11-30 A | B25.STP.EQ.MEC.004.01 | 100% |  |  |  |  |  | 5,527 | 5,527 | B25 | 03 |
| B25.STP.EQ.MEC.005.02 |  | PO Chemical Tank_Equipment Building (STP) | 30d | 2023-10-26 A | 2023-11-30 A | B25.STP.EQ.MEC.005.01 | 100% |  |  |  |  |  | 5,527 | 5,527 | B25 | 03 |
| B25.STP.EQ.MEC.007.02 |  | PO Chemical Dosing Pumps_Equipment Building (STP) | 30d | 2023-10-26 A | 2023-11-30 A | B25.STP.EQ.MEC.007.01 | 100% |  |  |  |  |  | 5,527 | 5,527 | B25 | 03 |
| B25.STP.EQ.MEC.008.02 |  | PO Sludge Dewatering Unit (Medium Belt Press)_Equipment Building (STP) | 30d | 2023-10-26 A | 2023-11-30 A | B25.STP.EQ.MEC.008.01 | 100% |  |  |  |  |  | 5,527 | 5,527 | B25 | 03 |
| B25.STP.EQ.MEC.009.02 |  | PO Polyelectrolite Unit (Polymer Mixing )_Equipment Building (STP) | 30d | 2023-10-26 A | 2023-11-30 A | B25.STP.EQ.MEC.009.01 | 100% |  |  |  |  |  | 5,527 | 5,527 | B25 | 03 |
| B25.STP.EQ.MEC.010.02 |  | PO Exhaust Fan_Equipment Building (STP) | 30d | 2023-10-26 A | 2023-11-30 A | B25.STP.EQ.MEC.010.01 | 100% |  |  |  |  |  | 5,527 | 5,527 | B25 | 03 |
| B25.STP.EQ.MEC.011.02 |  | PO A.C_Equipment Building (STP) | 30d | 2023-10-26 A | 2023-11-30 A | B25.STP.EQ.MEC.011.01 | 100% |  |  |  |  |  | 5,527 | 5,527 | B25 | 03 |
| B25.STP.EQ.MEC.012.02 |  | PO Crane_Equipment Building (STP) | 30d | 2023-10-26 A | 2023-11-30 A | B25.STP.EQ.MEC.012.01 | 100% |  |  |  |  |  | 5,527 | 5,527 | B25 | 03 |
| B25.STP.LRS.MEC.001.02 |  | PO Raw Sewage Lifting Pumps_Lifting (Raw Sewage) Tank | 30d | 2023-10-26 A | 2023-11-30 A | B25.STP.LRS.MEC.001.01 | 100% |  |  |  |  |  | 5,527 | 5,527 | B25 | 03 |
| B25.STP.SLG.MEC.001.02 |  | PO Return Sludge Pumps_Return Sludge Tank | 30d | 2023-10-26 A | 2023-11-30 A | B25.STP.SLG.MEC.001.01 | 100% |  |  |  |  |  | 5,527 | 5,527 | B25 | 03 |
| B25.STP.AR.MEC.001.03 |  | Delivery To Site GLS Wall Sheets_Aeration Tank | 148d | 2023-11-30 A | 2024-06-06 A | B25.STP.AR.MEC.001.02 | 100% |  |  |  |  |  | 11,054 | 11,054 | B25 | 03 |
| B25.STP.AR.MEC.002.03 |  | Delivery To Site Air Diffusers_Aeration Tank | 80d | 2023-11-30 A | 2024-03-04 A | B25.STP.AR.MEC.002.02 | 100% |  |  |  |  |  | 11,054 | 11,054 | B25 | 03 |
| B25.STP.CHL.MEC.001.03 |  | Delivery To Site GLS Wall Sheets_Chlorine Contact Tank | 148d | 2023-11-30 A | 2024-06-06 A | B25.STP.CHL.MEC.001.02 | 100% |  |  |  |  |  | 11,054 | 11,054 | B25 | 03 |
| B25.STP.CLA.MEC.001.03 |  | Delivery To Site GLS Wall Sheets_Claifier Tank (Settling Tank) | 148d | 2023-11-30 A | 2024-06-06 A | B25.STP.CLA.MEC.001.02 | 100% |  |  |  |  |  | 11,054 | 11,054 | B25 | 03 |
| B25.STP.EQ.MEC.005.03 |  | Delivery To Site Chemical Tank_Equipment Building (STP) | 80d | 2023-11-30 A | 2024-03-04 A | B25.STP.EQ.MEC.005.02 | 100% |  |  |  |  |  | 11,054 | 11,054 | B25 | 03 |
| B25.STP.EQ.MEC.002.03 |  | Delivery To Site Filter Feed / Backwash Pumps_Equipment Building (STP) | 6d | 2024-06-27 A | 2024-07-03 A | B25.STP.EQ.MEC.002.02 | 100% |  |  |  |  |  | 11,054 | 11,054 | B25 | 03 |
| B25.STP.EQ.MEC.003.03 |  | Delivery To Site Tanker Filling Pumps_Equipment Building (STP) | 6d | 2024-06-27 A | 2024-07-03 A | B25.STP.EQ.MEC.003.02 | 100% |  |  |  |  |  | 11,054 | 11,054 | B25 | 03 |
| B25.STP.EQ.MEC.004.03 |  | Delivery To Site Sand Filter & Filter Media & Motprized Butterfly VaLves_Equipment Building (STP) | 62d | 2024-06-27 A | 2024-11-16 | B25.STP.EQ.MEC.004.02 | 20% | 25d | 2024-07-25 | 2024-10-07 | 47d | 34d | 11,054 | 2,210.8 | B25 | 03 |
| B25.STP.EQ.MEC.013.01 |  | Material Approval Fire Fighting Syestm & Units_Equipment Building (STP) | 4d | 2024-06-27 A | 2024-07-01 A | B25.STP.EQ.MEC.012.01 SS | 100% |  |  |  |  |  | 11,054 | 11,054 | B25 | 03 |
| B25.STP.EQ.MEC.001.03 |  | Delivery To Site Blower_Equipment Building (STP) | 105d | 2024-07-23 A | 2024-12-15 | B25.STP.EQ.MEC.001.02 | 20% | 50d | 2024-07-16 | 2024-11-16 | 30d | 9d | 11,054 | 2,210.8 | B25 | 03 |
| B25.STP.LRS.MEC.001.03 |  | Delivery To Site Raw Sewage Lifting Pumps__Lifting (Raw Sewage) Tank | 5d | 2024-07-27 A | 2024-07-31 A | B25.STP.LRS.MEC.001.02 | 100% |  |  |  |  |  | 11,054 | 11,054 | B25 | 03 |
| B25.STP.SLG.MEC.001.03 |  | Delivery To Site Return Sludge Pumps_Return Sludge Tank | 5d | 2024-07-27 A | 2024-07-31 A | B25.STP.SLG.MEC.001.02 | 100% |  |  |  |  |  | 11,054 | 11,054 | B25 | 03 |
| B25.STP.EQ.MEC.006.4 |  | Delivery To Site Manholes_Equipment Building (STP) | 7d | 2024-09-28 A | 2024-10-03 A | B25.STP.EQ.MEC.010.02 FS+195d | 100% |  | 2024-09-28 | 2024-10-05 |  |  | 5,527 | 5,527 | B25 | 03 |
| B25.STP.CLA.MEC.002.03 |  | Delivery To Site Clarifier_Claifier Tank (Settling Tank) | 12d | 2024-10-19 | 2024-10-31 | B25.STP.CLA.MEC.002.02 FS+255d |  |  |  |  | 127d | 0d | 11,054 |  | B25 | 03 |
| B25.STP.CLA.MEC.003.03 |  | Delivery To Site Telescopic VaLVe_Claifier Tank (Settling Tank) | 23d | 2024-10-19 | 2024-11-13 | B25.STP.CLA.MEC.003.02 FS+230d |  |  |  |  | 116d | 0d | 11,054 |  | B25 | 03 |
| B25.STP.EQ.MEC.006.01 |  | Material Approval Sanitary Fixtures & Manholes_Equipment Building (STP) | 12d | 2024-10-19 | 2024-10-31 | B25.STP.EQ.MEC.004.01 FS+270d |  |  |  |  | 92d | 0d | 11,054 |  | B25 | 03 |
| B25.STP.EQ.MEC.007.03 |  | Delivery To Site Chemical Dosing Pumps_Equipment Building (STP) | 25d | 2024-10-19 | 2024-11-16 | B25.STP.EQ.MEC.007.02 FS+250d |  |  |  |  | 62d | 34d | 11,054 |  | B25 | 03 |
| B25.STP.EQ.MEC.008.03 |  | Delivery To Site Sludge Dewatering Unit (Medium Belt Press)_Equipment Building (STP) | 20d | 2024-10-19 | 2024-11-10 | B25.STP.EQ.MEC.008.02 FS+210d |  |  |  |  | 42d | 39d | 11,054 |  | B25 | 03 |

Notes:
- B54.WTP.ROW.ELE.001.01: Expenses: (New Expense Item) 890
- B54.WTP.ROW.ELE.001.02: Expenses: (New Expense Item) 445
- B54.WTP.ROW.ELE.001.03: Expenses: (New Expense Item) 890
- REF.WTP.NET.MEC.001: Expenses: (New Expense Item) 10271
- REF.WTP.NET.MEC.002: Expenses: (New Expense Item) 5135
- REF.WTP.NET.MEC.003: Expenses: (New Expense Item) 10271
- B25.STP.AR.MEC.001.01: Expenses: (New Expense Item) 11054
- B25.STP.AR.MEC.002.01: Expenses: (New Expense Item) 11054
- B25.STP.AR.MEC.003.01: Expenses: (New Expense Item) 11054
- B25.STP.CHL.MEC.001.01: Expenses: (New Expense Item) 11054
- B25.STP.CLA.MEC.001.01: Expenses: (New Expense Item) 11054
- B25.STP.CLA.MEC.002.01: Expenses: (New Expense Item) 11054
- B25.STP.CLA.MEC.003.01: Expenses: (New Expense Item) 11054
- B25.STP.EQ.MEC.001.01: Expenses: (New Expense Item) 11054
- B25.STP.EQ.MEC.002.01: Expenses: (New Expense Item) 11054
- B25.STP.EQ.MEC.003.01: Expenses: (New Expense Item) 11054
- B25.STP.EQ.MEC.004.01: Expenses: (New Expense Item) 11054
- B25.STP.EQ.MEC.005.01: Expenses: (New Expense Item) 11054
- B25.STP.EQ.MEC.007.01: Expenses: (New Expense Item) 11054
- B25.STP.EQ.MEC.008.01: Expenses: (New Expense Item) 11054
- B25.STP.EQ.MEC.009.01: Expenses: (New Expense Item) 11054
- B25.STP.EQ.MEC.010.01: Expenses: (New Expense Item) 11054
- B25.STP.EQ.MEC.011.01: Expenses: (New Expense Item) 11054
- B25.STP.EQ.MEC.012.01: Expenses: (New Expense Item) 11054
- B25.STP.LRS.MEC.001.01: Expenses: (New Expense Item) 11054
- B25.STP.SLG.MEC.001.01: Expenses: (New Expense Item) 11054
- B25.STP.AR.MEC.001.02: Expenses: (New Expense Item) 5527
- B25.STP.AR.MEC.002.02: Expenses: (New Expense Item) 5527
- B25.STP.AR.MEC.003.02: Expenses: (New Expense Item) 5527
- B25.STP.CHL.MEC.001.02: Expenses: (New Expense Item) 5527
- B25.STP.CLA.MEC.001.02: Expenses: (New Expense Item) 5527
- B25.STP.CLA.MEC.002.02: Expenses: (New Expense Item) 5527
- B25.STP.CLA.MEC.003.02: Expenses: (New Expense Item) 5527
- B25.STP.EQ.MEC.001.02: Expenses: (New Expense Item) 5527
- B25.STP.EQ.MEC.002.02: Expenses: (New Expense Item) 5527
- B25.STP.EQ.MEC.003.02: Expenses: (New Expense Item) 5527
- B25.STP.EQ.MEC.004.02: Expenses: (New Expense Item) 5527
- B25.STP.EQ.MEC.005.02: Expenses: (New Expense Item) 5527
- B25.STP.EQ.MEC.007.02: Expenses: (New Expense Item) 5527
- B25.STP.EQ.MEC.008.02: Expenses: (New Expense Item) 5527
- B25.STP.EQ.MEC.009.02: Expenses: (New Expense Item) 5527
- B25.STP.EQ.MEC.010.02: Expenses: (New Expense Item) 5527
- B25.STP.EQ.MEC.011.02: Expenses: (New Expense Item) 5527
- B25.STP.EQ.MEC.012.02: Expenses: (New Expense Item) 5527
- B25.STP.LRS.MEC.001.02: Expenses: (New Expense Item) 5527
- B25.STP.SLG.MEC.001.02: Expenses: (New Expense Item) 5527
- B25.STP.AR.MEC.001.03: Expenses: (New Expense Item) 11054
- B25.STP.AR.MEC.002.03: Expenses: (New Expense Item) 11054
- B25.STP.CHL.MEC.001.03: Expenses: (New Expense Item) 11054
- B25.STP.CLA.MEC.001.03: Expenses: (New Expense Item) 11054
- B25.STP.EQ.MEC.005.03: Expenses: (New Expense Item) 11054
- B25.STP.EQ.MEC.002.03: Expenses: (New Expense Item) 11054
- B25.STP.EQ.MEC.003.03: Expenses: (New Expense Item) 11054
- B25.STP.EQ.MEC.004.03: Expenses: (New Expense Item) 11054
- B25.STP.EQ.MEC.013.01: Expenses: (New Expense Item) 11054
- B25.STP.EQ.MEC.001.03: Expenses: (New Expense Item) 11054
- B25.STP.LRS.MEC.001.03: Expenses: (New Expense Item) 11054
- B25.STP.SLG.MEC.001.03: Expenses: (New Expense Item) 11054
- B25.STP.EQ.MEC.006.4: Expenses: (New Expense Item) 5527
- B25.STP.CLA.MEC.002.03: Expenses: (New Expense Item) 11054
- B25.STP.CLA.MEC.003.03: Expenses: (New Expense Item) 11054
- B25.STP.EQ.MEC.006.01: Expenses: (New Expense Item) 11054
- B25.STP.EQ.MEC.007.03: Expenses: (New Expense Item) 11054
- B25.STP.EQ.MEC.008.03: Expenses: (New Expense Item) 11054

| ID | WBS | Activity | Duration | Start | Finish | Predecessors | Complete | Remaining | Planned start | Planned finish | Total float | Free float | Cost | Actual cost | 01.B.O.Q Items | 05.EPS |
| --- | --- | --- | --- | --- | --- | --- | --- | --- | --- | --- | --- | --- | --- | --- | --- | --- |
| B25.STP.EQ.MEC.009.03 |  | Delivery To Site Polyelectrolite Unit (Polymer Mixing )_Equipment Building (STP) | 20d | 2024-10-19 | 2024-11-10 | B25.STP.EQ.MEC.009.02 FS+250d |  |  |  |  | 62d | 39d | 11,054 |  | B25 | 03 |
| B25.STP.EQ.MEC.011.03 |  | Delivery To Site A.C_Equipment Building (STP) | 15d | 2024-10-19 | 2024-11-04 | B25.STP.EQ.MEC.011.02 FS+246d |  |  |  |  | 79d | 43d | 11,054 |  | B25 | 03 |
| B25.STP.EQ.MEC.012.03 |  | Delivery To Site Crane_Equipment Building (STP) | 20d | 2024-10-19 | 2024-11-10 | B25.STP.EQ.MEC.012.02 FS+211d |  |  |  |  | 69d | 38d | 11,054 |  | B25 | 03 |
| B25.STP.EQ.MEC.013.02 |  | PO Fire Fighting Syestm & Units_Equipment Building (STP) | 10d | 2024-10-19 | 2024-10-29 | B25.STP.EQ.MEC.013.01 FS+60d |  |  |  |  | 17d | 0d | 5,527 |  | B25 | 03 |
| B25.STP.EQ.MEC.010.03 |  | Delivery To Site Exhaust Fan_Equipment Building (STP) | 30d | 2024-10-29 | 2024-12-03 | B25.STP.EQ.MEC.010.02 FS+265d |  |  |  |  | 52.75d | 18.75d | 11,054 |  | B25 | 03 |
| B25.STP.EQ.MEC.013.03 |  | Delivery To Site Fire Fighting Syestm & Units_Equipment Building (STP) | 50d | 2024-10-30 | 2024-12-26 | B25.STP.EQ.MEC.013.02 |  |  |  |  | 17d | 0d | 11,054 |  | B25 | 03 |
| B25.STP.EQ.MEC.006.02 |  | PO Sanitary Fixtures & Manholes_Equipment Building (STP) | 10d | 2024-11-02 | 2024-11-12 | B25.STP.EQ.MEC.006.01 |  |  |  |  | 92d | 0d | 5,527 |  | B25 | 03 |
| B25.STP.EQ.MEC.006.03 |  | Delivery To Site Sanitary Fixtures _Equipment Building (STP) | 18d | 2024-11-13 | 2024-12-03 | B25.STP.EQ.MEC.006.02 |  |  |  |  | 92d | 4d | 5,527 |  | B25 | 03 |
| B25.STP.AR.MEC.003.03 |  | Delivery To Site Fine Screen / Grit Removal_Aeration Tank | 30d | 2024-11-25 | 2024-12-30 | B25.STP.AR.MEC.003.02 FS+288d |  |  |  |  | 76.75d | 0d | 11,054 |  | B25 | 03 |
|  | 2 | **Electrical** |  | 2023-09-27 | 2025-01-05 |  |  |  |  |  |  |  |  |  |  |  |
| B25.STP.EQ.ELE.001.01 |  | Material Approval PLC Scada_Equipment Building (STP) | 25d | 2023-09-27 A | 2023-10-26 A | B1.SCH.D.STP.001 | 100% |  |  |  |  |  | 12,471 | 12,471 | B25 | 03 |
| B25.STP.EQ.ELE.002.01 |  | Material Approval Instruments_Equipment Building (STP) | 25d | 2023-09-27 A | 2023-10-26 A | B25.STP.EQ.ELE.001.01 SS | 100% |  |  |  |  |  | 12,471 | 12,471 | B25 | 03 |
| B25.STP.EQ.ELE.003.01 |  | Material Approval Internal Lighting_Equipment Building (STP) | 25d | 2023-09-27 A | 2023-10-26 A | B25.STP.EQ.ELE.002.01 SS | 100% |  |  |  |  |  | 12,471 | 12,471 | B25 | 03 |
| B25.STP.EQ.ELE.004.01 |  | Material Approval External Lighting_Equipment Building (STP) | 25d | 2023-09-27 A | 2023-10-26 A | B25.STP.EQ.ELE.003.01 SS | 100% |  |  |  |  |  | 12,471 | 12,471 | B25 | 03 |
| B25.STP.EQ.ELE.005.01 |  | Material Approval Wiring Devices_Equipment Building (STP) | 25d | 2023-09-27 A | 2023-10-26 A | B25.STP.EQ.ELE.004.01 SS | 100% |  |  |  |  |  | 12,471 | 12,471 | B25 | 03 |
| B25.STP.EQ.ELE.007.01 |  | Material Approval EMCC , MDB , ATS , PFC_Equipment Building (STP) | 25d | 2023-09-27 A | 2023-10-26 A | B1.SCH.D.STP.001 | 100% |  |  |  |  |  | 12,471 | 12,471 | B25 | 03 |
| B25.STP.EQ.ELE.008.01 |  | Material Approval UPS_Equipment Building (STP) | 25d | 2023-09-27 A | 2023-10-26 A | B25.STP.EQ.ELE.007.01 SS | 100% |  |  |  |  |  | 12,471 | 12,471 | B25 | 03 |
| B25.STP.EQ.ELE.009.01 |  | Material Approval Earthing And Lighting_Equipment Building (STP) | 25d | 2023-09-27 A | 2023-10-26 A | B25.STP.EQ.ELE.008.01 SS | 100% |  |  |  |  |  | 12,471 | 12,471 | B25 | 03 |
| B25.STP.EQ.ELE.010.01 |  | Material Approval Cable Tray And Fittings_Equipment Building (STP) | 25d | 2023-09-27 A | 2023-10-26 A | B25.STP.EQ.ELE.009.01 SS | 100% |  |  |  |  |  | 12,471 | 12,471 | B25 | 03 |
| B25.STP.EQ.ELE.011.01 |  | Material Approval Building Wires_Equipment Building (STP) | 25d | 2023-09-27 A | 2023-10-26 A | B25.STP.EQ.ELE.010.01 SS | 100% |  |  |  |  |  | 12,471 | 12,471 | B25 | 03 |
| B25.STP.EQ.ELE.012.01 |  | Material Approval Emt Pipes Boles And Fittings_Equipment Building (STP) | 25d | 2023-09-27 A | 2023-10-26 A | B25.STP.EQ.ELE.011.01 SS | 100% |  |  |  |  |  | 12,471 | 12,471 | B25 | 03 |
| B25.STP.EQ.ELE.013.01 |  | Material Approval Fire Alarm System_Equipment Building (STP) | 25d | 2023-09-27 A | 2023-10-26 A | B25.STP.EQ.ELE.012.01 SS | 100% |  |  |  |  |  | 12,471 | 12,471 | B25 | 03 |
| B25.STP.EQ.ELE.001.02 |  | PO PLC Scada_Equipment Building (STP) | 30d | 2023-10-26 A | 2023-11-30 A | B25.STP.EQ.ELE.001.01 | 100% |  |  |  |  |  | 6,236 | 6,236 | B25 | 03 |
| B25.STP.EQ.ELE.002.02 |  | PO Instruments_Equipment Building (STP) | 30d | 2023-10-26 A | 2023-11-30 A | B25.STP.EQ.ELE.002.01 | 100% |  |  |  |  |  | 6,236 | 6,236 | B25 | 03 |
| B25.STP.EQ.ELE.003.02 |  | PO Internal Lighting_Equipment Building (STP) | 30d | 2023-10-26 A | 2023-11-30 A | B25.STP.EQ.ELE.003.01 | 100% |  |  |  |  |  | 6,236 | 6,236 | B25 | 03 |
| B25.STP.EQ.ELE.004.02 |  | PO External Lighting_Equipment Building (STP) | 30d | 2023-10-26 A | 2023-11-30 A | B25.STP.EQ.ELE.004.01 | 100% |  |  |  |  |  | 6,236 | 6,236 | B25 | 03 |
| B25.STP.EQ.ELE.007.02 |  | PO EMCC , MDB , ATS , PFC_Equipment Building (STP) | 30d | 2023-10-26 A | 2023-11-30 A | B25.STP.EQ.ELE.007.01 | 100% |  |  |  |  |  | 6,236 | 6,236 | B25 | 03 |
| B25.STP.EQ.ELE.008.02 |  | PO UPS_Equipment Building (STP) | 30d | 2023-10-26 A | 2023-11-30 A | B25.STP.EQ.ELE.008.01 | 100% |  |  |  |  |  | 6,236 | 6,236 | B25 | 03 |
| B25.STP.EQ.ELE.009.02 |  | PO Earthing And Lighting_Equipment Building (STP) | 30d | 2023-10-26 A | 2023-11-30 A | B25.STP.EQ.ELE.009.01 | 100% |  |  |  |  |  | 6,236 | 6,236 | B25 | 03 |
| B25.STP.EQ.ELE.012.02 |  | PO Emt Pipes Boles And Fittings_Equipment Building (STP) | 30d | 2023-10-26 A | 2023-11-30 A | B25.STP.EQ.ELE.012.01 | 100% |  |  |  |  |  | 6,236 | 6,236 | B25 | 03 |
| B25.STP.EQ.ELE.009.03 |  | Delivery To Site Earthing And Lighting_Equipment Building (STP) | 80d | 2023-11-30 A | 2024-03-04 A | B25.STP.EQ.ELE.009.02 | 100% |  |  |  |  |  | 12,471 | 12,471 | B25 | 03 |
| B25.STP.EQ.ELE.012.03 |  | Delivery To Site Emt Pipes Boles And Fittings_Equipment Building (STP) | 80d | 2023-11-30 A | 2024-03-04 A | B25.STP.EQ.ELE.012.02 | 100% |  |  |  |  |  | 12,471 | 12,471 | B25 | 03 |
| B25.STP.EQ.ELE.006.01 |  | Material Approval Low Voltage Cables_Equipment Building (STP) | 25d | 2024-01-01 A | 2024-01-29 A | B25.STP.EQ.ELE.005.01 SS | 100% |  |  |  |  |  | 12,471 | 12,471 | B25 | 03 |
| B25.STP.EQ.ELE.005.02 |  | PO Wiring Devices_Equipment Building (STP) | 4d | 2024-06-22 A | 2024-06-25 A | B25.STP.EQ.ELE.005.01 | 100% |  |  |  |  |  | 6,236 | 6,236 | B25 | 03 |
| B25.STP.EQ.ELE.006.02 |  | PO Low Voltage Cables_Equipment Building (STP) | 4d | 2024-06-22 A | 2024-06-25 A | B25.STP.EQ.ELE.006.01 | 100% |  |  |  |  |  | 6,236 | 6,236 | B25 | 03 |
| B25.STP.EQ.ELE.011.02 |  | PO Building Wires_Equipment Building (STP) | 4d | 2024-06-22 A | 2024-06-25 A | B25.STP.EQ.ELE.011.01 | 100% |  |  |  |  |  | 6,236 | 6,236 | B25 | 03 |
| B25.STP.EQ.ELE.002.03 |  | Delivery To Site Instruments_Equipment Building (STP) | 6d | 2024-06-27 A | 2024-07-03 A | B25.STP.EQ.ELE.002.02 | 100% |  |  |  |  |  | 12,471 | 12,471 | B25 | 03 |
| B25.STP.EQ.ELE.008.03 |  | Delivery To Site UPS_Equipment Building (STP) | 6d | 2024-06-27 A | 2024-07-03 A | B25.STP.EQ.ELE.008.02 | 100% |  |  |  |  |  | 12,471 | 12,471 | B25 | 03 |
| B25.STP.EQ.ELE.007.03 |  | Delivery To Site EMCC , MDB , ATS , PFC_Equipment Building (STP) | 82d | 2024-07-24 A | 2025-01-05 | B25.STP.EQ.ELE.007.02 FS+180d | 40% | 68d | 2024-07-02 | 2024-10-07 | 68d | 0d | 12,471 | 4,988.4 | B25 | 03 |
| B25.STP.EQ.ELE.013.02 |  | PO Fire Alarm System_Equipment Building (STP) | 6d | 2024-08-10 A | 2024-08-15 A | B25.STP.EQ.ELE.013.01 | 100% |  |  |  |  |  | 6,236 | 6,236 | B25 | 03 |
| B25.STP.EQ.ELE.010.02 |  | PO Cable Tray And Fittings_Equipment Building (STP) | 5d | 2024-09-15 A | 2024-09-19 A | B25.STP.EQ.ELE.010.01 FS+245d | 100% |  | 2024-09-21 | 2024-09-26 |  |  | 6,236 | 6,236 | B25 | 03 |
| B25.STP.EQ.ELE.001.03 |  | Delivery To Site PLC Scada_Equipment Building (STP) | 25d | 2024-10-19 | 2024-11-16 | B25.STP.EQ.ELE.001.02 FS+235d |  |  |  |  | 106d | 33d | 12,471 |  | B25 | 03 |
| B25.STP.EQ.ELE.005.03 |  | Delivery To Site Wiring Devices_Equipment Building (STP) | 25d | 2024-10-19 | 2024-11-16 | B25.STP.EQ.ELE.005.02 FS+77d |  |  |  |  | 106d | 33d | 12,471 |  | B25 | 03 |
| B25.STP.EQ.ELE.006.03 |  | Delivery To Site Low Voltage Cables_Equipment Building (STP) | 20d | 2024-10-19 | 2024-11-10 | B25.STP.EQ.ELE.006.02 FS+80d |  |  |  |  | 106d | 38d | 12,471 |  | B25 | 03 |
| B25.STP.EQ.ELE.010.03 |  | Delivery To Site Cable Tray And Fittings_Equipment Building (STP) | 50d | 2024-10-19 | 2024-12-15 | B25.STP.EQ.ELE.010.02 |  |  |  |  | 88d | 0d | 12,471 |  | B25 | 03 |
| B25.STP.EQ.ELE.011.03 |  | Delivery To Site Building Wires_Equipment Building (STP) | 30d | 2024-10-19 | 2024-11-21 | B25.STP.EQ.ELE.011.02 FS+70d |  |  |  |  | 101d | 0d | 12,471 |  | B25 | 03 |
| B25.STP.EQ.ELE.013.03 |  | Delivery To Site Fire Alarm System_Equipment Building (STP) | 25d | 2024-10-19 | 2024-11-16 | B25.STP.EQ.ELE.013.02 FS+30d |  |  |  |  | 106d | 0d | 12,471 |  | B25 | 03 |
| B25.STP.EQ.ELE.003.03 |  | Delivery To Site Internal Lighting_Equipment Building (STP) | 26d | 2024-11-04 | 2024-12-04 | B25.STP.EQ.ELE.003.02 FS+270d |  |  |  |  | 90.75d | 0d | 12,471 |  | B25 | 03 |
| B25.STP.EQ.ELE.004.03 |  | Delivery To Site External Lighting_Equipment Building (STP) | 26d | 2024-11-04 | 2024-12-04 | B25.STP.EQ.ELE.004.02, B25.STP.EQ.ELE.003.03 SS |  |  |  |  | 90.75d | 17.75d | 12,471 |  | B25 | 03 |

Notes:
- B25.STP.EQ.MEC.009.03: Expenses: (New Expense Item) 11054
- B25.STP.EQ.MEC.011.03: Expenses: (New Expense Item) 11054
- B25.STP.EQ.MEC.012.03: Expenses: (New Expense Item) 11054
- B25.STP.EQ.MEC.013.02: Expenses: (New Expense Item) 5527
- B25.STP.EQ.MEC.010.03: Expenses: (New Expense Item) 11054
- B25.STP.EQ.MEC.013.03: Expenses: (New Expense Item) 11054
- B25.STP.EQ.MEC.006.02: Expenses: (New Expense Item) 5527
- B25.STP.EQ.MEC.006.03: Expenses: (New Expense Item) 5527
- B25.STP.AR.MEC.003.03: Expenses: (New Expense Item) 11054
- B25.STP.EQ.ELE.001.01: Expenses: (New Expense Item) 12471
- B25.STP.EQ.ELE.002.01: Expenses: (New Expense Item) 12471
- B25.STP.EQ.ELE.003.01: Expenses: (New Expense Item) 12471
- B25.STP.EQ.ELE.004.01: Expenses: (New Expense Item) 12471
- B25.STP.EQ.ELE.005.01: Expenses: (New Expense Item) 12471
- B25.STP.EQ.ELE.007.01: Expenses: (New Expense Item) 12471
- B25.STP.EQ.ELE.008.01: Expenses: (New Expense Item) 12471
- B25.STP.EQ.ELE.009.01: Expenses: (New Expense Item) 12471
- B25.STP.EQ.ELE.010.01: Expenses: (New Expense Item) 12471
- B25.STP.EQ.ELE.011.01: Expenses: (New Expense Item) 12471
- B25.STP.EQ.ELE.012.01: Expenses: (New Expense Item) 12471
- B25.STP.EQ.ELE.013.01: Expenses: (New Expense Item) 12471
- B25.STP.EQ.ELE.001.02: Expenses: (New Expense Item) 6236
- B25.STP.EQ.ELE.002.02: Expenses: (New Expense Item) 6236
- B25.STP.EQ.ELE.003.02: Expenses: (New Expense Item) 6236
- B25.STP.EQ.ELE.004.02: Expenses: (New Expense Item) 6236
- B25.STP.EQ.ELE.007.02: Expenses: (New Expense Item) 6236
- B25.STP.EQ.ELE.008.02: Expenses: (New Expense Item) 6236
- B25.STP.EQ.ELE.009.02: Expenses: (New Expense Item) 6236
- B25.STP.EQ.ELE.012.02: Expenses: (New Expense Item) 6236
- B25.STP.EQ.ELE.009.03: Expenses: (New Expense Item) 12471
- B25.STP.EQ.ELE.012.03: Expenses: (New Expense Item) 12471
- B25.STP.EQ.ELE.006.01: Expenses: (New Expense Item) 12471
- B25.STP.EQ.ELE.005.02: Expenses: (New Expense Item) 6236
- B25.STP.EQ.ELE.006.02: Expenses: (New Expense Item) 6236
- B25.STP.EQ.ELE.011.02: Expenses: (New Expense Item) 6236
- B25.STP.EQ.ELE.002.03: Expenses: (New Expense Item) 12471
- B25.STP.EQ.ELE.008.03: Expenses: (New Expense Item) 12471
- B25.STP.EQ.ELE.007.03: Expenses: (New Expense Item) 12471
- B25.STP.EQ.ELE.013.02: Expenses: (New Expense Item) 6236
- B25.STP.EQ.ELE.010.02: Expenses: (New Expense Item) 6236
- B25.STP.EQ.ELE.001.03: Expenses: (New Expense Item) 12471
- B25.STP.EQ.ELE.005.03: Expenses: (New Expense Item) 12471
- B25.STP.EQ.ELE.006.03: Expenses: (New Expense Item) 12471
- B25.STP.EQ.ELE.010.03: Expenses: (New Expense Item) 12471
- B25.STP.EQ.ELE.011.03: Expenses: (New Expense Item) 12471
- B25.STP.EQ.ELE.013.03: Expenses: (New Expense Item) 12471
- B25.STP.EQ.ELE.003.03: Expenses: (New Expense Item) 12471
- B25.STP.EQ.ELE.004.03: Expenses: (New Expense Item) 12471

| ID | WBS | Activity | Duration | Start | Finish | Predecessors | Complete | Remaining | Planned start | Planned finish | Total float | Free float | Cost | Actual cost | 01.B.O.Q Items | 05.EPS |
| --- | --- | --- | --- | --- | --- | --- | --- | --- | --- | --- | --- | --- | --- | --- | --- | --- |
|  | 4 | **B26-Backup Ggenerators (STP)** |  | 2023-09-27 | 2024-11-16 |  |  |  |  |  |  |  |  |  |  |  |
|  | 2 | **Electrical** |  | 2023-09-27 | 2024-11-16 |  |  |  |  |  |  |  |  |  |  |  |
| B26.STP.GEN.ELE.001.01 |  | Material Approval Backup Generators (STP) | 25d | 2023-09-27 A | 2023-10-26 A | B25.STP.EQ.ELE.013.01 SS | 100% |  |  |  |  |  | 27,021 | 27,021 | B26 | 03 |
| B26.STP.GEN.ELE.001.02 |  | PO Backup Generators (STP) | 30d | 2023-10-26 A | 2023-11-30 A | B26.STP.GEN.ELE.001.01 | 100% |  |  |  |  |  | 13,511 | 13,511 | B26 | 03 |
| B26.STP.GEN.ELE.001.03 |  | Delivery To Site Backup Generators (STP) | 39d | 2024-07-24 A | 2024-11-16 | B26.STP.GEN.ELE.001.02 | 40% | 25d | 2024-07-22 | 2024-09-05 | 76d | 34d | 27,021 | 10,808.4 | B26 | 03 |
|  | 5 | **B27-Package Sub Station (STP)** |  | 2023-09-27 | 2024-09-26 |  |  |  |  |  |  |  |  |  |  |  |
|  | 2 | **Electrical** |  | 2023-09-27 | 2024-09-26 |  |  |  |  |  |  |  |  |  |  |  |
| B27.STP.SUB.ELE.001.01 |  | Material Approval The Transformer (STP) | 25d | 2023-09-27 A | 2023-10-26 A | B26.STP.GEN.ELE.001.01 SS | 100% |  |  |  |  |  | 8,852 | 8,852 | B27 | 03 |
| B27.STP.SUB.ELE.001.02 |  | PO The Transformer (STP) | 30d | 2023-10-26 A | 2023-11-30 A | B27.STP.SUB.ELE.001.01 | 100% |  |  |  |  |  | 4,426 | 4,426 | B27 | 03 |
| B27.STP.SUB.ELE.001.03 |  | Delivery To Site The Transformer (STP) | 41d | 2024-07-22 A | 2024-09-26 A | B27.STP.SUB.ELE.001.02 | 100% |  | 2024-07-30 | 2024-09-16 |  |  | 8,852 | 8,852 | B27 | 03 |
|  | 6 | **B28-MV CABLE For RMU LOOP** |  | 2023-09-27 | 2024-11-13 |  |  |  |  |  |  |  |  |  |  |  |
|  | 2 | **Electrical** |  | 2023-09-27 | 2024-11-13 |  |  |  |  |  |  |  |  |  |  |  |
| B28.STP.RMU.ELE.001.01 |  | Material Approval Cables_MV Cable For RMU Loop | 25d | 2023-09-27 A | 2023-10-26 A | B27.STP.SUB.ELE.001.01 SS | 100% |  |  |  |  |  | 5,591 | 5,591 | B28 | 03 |
| B28.STP.RMU.ELE.001.02 |  | PO Cables_MV Cable For RMU Loop | 4d | 2024-06-22 A | 2024-06-25 A | B28.STP.RMU.ELE.001.01 | 100% |  |  |  |  |  | 2,795 | 2,795 | B28 | 03 |
| B28.STP.RMU.ELE.001.03 |  | Delivery To Site Cables_MV Cable For RMU Loop | 23d | 2024-10-19 | 2024-11-13 | B28.STP.RMU.ELE.001.02 FS+77d |  |  |  |  | 87d | 0d | 5,591 |  | B28 | 03 |
|  | 7 | **B29-LV CABLE TO ATS PANEL** |  | 2023-09-27 | 2024-11-16 |  |  |  |  |  |  |  |  |  |  |  |
|  | 2 | **Electrical** |  | 2023-09-27 | 2024-11-16 |  |  |  |  |  |  |  |  |  |  |  |
| B29.STP.ATS.ELE.001.01 |  | Material Approval Cables_LV Cable To ATS Panel | 25d | 2023-09-27 A | 2023-10-26 A | B28.STP.RMU.ELE.001.01 SS | 100% |  |  |  |  |  | 3,261 | 3,261 | B29 | 03 |
| B29.STP.ATS.ELE.001.02 |  | PO Cables_LV Cable To ATS Panel | 4d | 2024-06-22 A | 2024-06-25 A | B29.STP.ATS.ELE.001.01 | 100% |  |  |  |  |  | 1,631 | 1,631 | B29 | 03 |
| B29.STP.ATS.ELE.001.03 |  | Delivery To Site Cables_LV Cable To ATS Panel | 25d | 2024-10-19 | 2024-11-16 | B29.STP.ATS.ELE.001.02 FS+77d |  |  |  |  | 83d | 0d | 3,261 |  | B29 | 03 |
|  | 8 | **B47-Hand Held Water Quality Instruments STP** |  | 2023-09-27 | 2024-11-13 |  |  |  |  |  |  |  |  |  |  |  |
|  | 1 | **Mechanica** |  | 2023-09-27 | 2024-11-13 |  |  |  |  |  |  |  |  |  |  |  |
| B47.STP.INS.MEC.001.01 |  | Material Approval Hand Held Water Quality Instruments_STP | 25d | 2023-09-27 A | 2023-10-26 A | B25.STP.SLG.MEC.001.01 SS | 100% |  |  |  |  |  | 2,329 | 2,329 | B47 | 03 |
| B47.STP.INS.MEC.001.02 |  | PO Hand Held Water Quality Instruments_STP | 30d | 2023-10-26 A | 2023-11-30 A | B47.STP.INS.MEC.001.01 | 100% |  |  |  |  |  | 1,165 | 1,165 | B47 | 03 |
| B47.STP.INS.MEC.001.03 |  | Delivery To Site Hand Held Water Quality Instruments_STP | 12d | 2024-10-30 | 2024-11-13 | B47.STP.INS.MEC.001.02 FS+266d |  |  |  |  | 122.75d | 0d | 2,329 |  | B47 | 03 |

Notes:
- B26.STP.GEN.ELE.001.01: Expenses: (New Expense Item) 27021
- B26.STP.GEN.ELE.001.02: Expenses: (New Expense Item) 13511
- B26.STP.GEN.ELE.001.03: Expenses: (New Expense Item) 27021
- B27.STP.SUB.ELE.001.01: Expenses: (New Expense Item) 8852
- B27.STP.SUB.ELE.001.02: Expenses: (New Expense Item) 4426
- B27.STP.SUB.ELE.001.03: Expenses: (New Expense Item) 8852
- B28.STP.RMU.ELE.001.01: Expenses: (New Expense Item) 5591
- B28.STP.RMU.ELE.001.02: Expenses: (New Expense Item) 2795
- B28.STP.RMU.ELE.001.03: Expenses: (New Expense Item) 5591
- B29.STP.ATS.ELE.001.01: Expenses: (New Expense Item) 3261
- B29.STP.ATS.ELE.001.02: Expenses: (New Expense Item) 1631
- B29.STP.ATS.ELE.001.03: Expenses: (New Expense Item) 3261
- B47.STP.INS.MEC.001.01: Expenses: (New Expense Item) 2329
- B47.STP.INS.MEC.001.02: Expenses: (New Expense Item) 1165
- B47.STP.INS.MEC.001.03: Expenses: (New Expense Item) 2329

| ID | WBS | Activity | Duration | Start | Finish | Predecessors | Complete | Total float | Free float | Cost | Actual cost | 01.B.O.Q Items | 05.EPS |
| --- | --- | --- | --- | --- | --- | --- | --- | --- | --- | --- | --- | --- | --- |
|  | 9 | **B52-New Residential city Gate** |  | 2024-11-04 | 2025-02-05 |  |  |  |  |  |  |  |  |
|  | 1 | **Mechanical** |  | 2024-11-04 | 2025-02-05 |  |  |  |  |  |  |  |  |
| B52.STP.GAT.MEC.001.01 |  | Material Approval Gates_New Residential City Gate | 14d | 2024-11-04 | 2024-11-19 | B53.WTP.NWP.MEC.002.01 |  | 18d | 0d | 6,522 |  | B52 | 03 |
| B52.STP.GAT.MEC.001.02 |  | PO Gates_New Residential City Gate | 7d | 2024-11-20 | 2024-11-27 | B52.STP.GAT.MEC.001.01 |  | 18d | 0d | 3,261 |  | B52 | 03 |
| B52.STP.GAT.MEC.001.03 |  | Delivery To Site Gates_New Residential City Gate | 60d | 2024-11-28 | 2025-02-05 | B52.STP.GAT.MEC.001.02 |  | 18d | 0d | 6,522 |  | B52 | 03 |
|  | 1 | **B(31-32-33-34)-Refurbishment Existing Sewage Network** |  | 2023-09-27 | 2024-03-04 |  |  |  |  |  |  |  |  |
|  | 2 | **Mechanical** |  | 2023-09-27 | 2024-03-04 |  |  |  |  |  |  |  |  |
| REF.STP.NET.MEC.001 |  | Material Approval Pipes,VaLVe & Accessories_Refurbishment Net.(STP) | 25d | 2023-09-27 A | 2023-10-26 A | B25.STP.LRS.MEC.001.01 SS | 100% |  |  | 6,988 | 6,988 |  | 03 |
| REF.STP.NET.MEC.002 |  | PO Pipes,VaLVe & Accessories_Refurbishment Net.(STP) | 30d | 2023-10-26 A | 2023-11-30 A | REF.STP.NET.MEC.001 | 100% |  |  | 3,494 | 3,494 |  | 03 |
| REF.STP.NET.MEC.003 |  | Delivery To Site Pipes,VaLVe & Accessories_Refurbishment Net.(STP) | 80d | 2023-11-30 A | 2024-03-04 A | REF.STP.NET.MEC.002 | 100% |  |  | 6,988 | 6,988 |  | 03 |
|  | 3 | **Irrigation** |  | 2023-11-01 | 2024-11-23 |  |  |  |  |  |  |  |  |
|  | 3 | **B38-Pipeline Dia. 200mm** |  | 2023-11-01 | 2024-03-17 |  |  |  |  |  |  |  |  |
|  | 1 | **Mechanica** |  | 2023-11-01 | 2024-03-17 |  |  |  |  |  |  |  |  |
| B38.IRR.200.MEC.001.01 |  | Material Approval Pipes_Irr.Pipeline Dia. 200Mm | 25d | 2023-11-01 A | 2023-11-30 A | B1.DET.D.IRR.MEC.001 | 100% |  |  | 32,905 | 32,905 | B38 | 03 |
| B38.IRR.200.MEC.001.02 |  | PO Pipes_Irr.Pipeline Dia. 200Mm | 30d | 2023-11-30 A | 2024-01-04 A | B38.IRR.200.MEC.001.01 | 100% |  |  | 16,452 | 16,452 | B38 | 03 |
| B38.IRR.200.MEC.001.03 |  | Delivery To Site Pipes_Irr.Pipeline Dia. 200Mm | 60d | 2024-01-04 A | 2024-03-17 A | B38.IRR.200.MEC.001.02 | 100% |  |  | 32,905 | 32,905 | B38 | 03 |
|  | 2 | **Electrical** |  |  |  |  |  |  |  |  |  |  |  |
|  | 4 | **B39-Pipeline Dia. 160mm** |  | 2023-11-01 | 2024-03-17 |  |  |  |  |  |  |  |  |
|  | 1 | **Mechanica** |  | 2023-11-01 | 2024-03-17 |  |  |  |  |  |  |  |  |
| B39.IRR.160.MEC.001.01 |  | Material Approval Pipes_Irr.Pipeline Dia. 160Mm | 25d | 2023-11-01 A | 2023-11-30 A | B38.IRR.200.MEC.001.01 SS | 100% |  |  | 23,227 | 23,227 | B39 | 03 |
| B39.IRR.160.MEC.001.02 |  | PO Pipes_Irr.Pipeline Dia. 160Mm | 30d | 2023-11-30 A | 2024-01-04 A | B39.IRR.160.MEC.001.01 | 100% |  |  | 11,613 | 11,613 | B39 | 03 |
| B39.IRR.160.MEC.001.03 |  | Delivery To Site Pipes_Irr.Pipeline Dia. 160Mm | 60d | 2024-01-04 A | 2024-03-17 A | B39.IRR.160.MEC.001.02 | 100% |  |  | 23,227 | 23,227 | B39 | 03 |
|  | 5 | **B40-Pipeline Dia. 110mm** |  | 2023-11-01 | 2024-03-17 |  |  |  |  |  |  |  |  |
|  | 1 | **Mechanica** |  | 2023-11-01 | 2024-03-17 |  |  |  |  |  |  |  |  |
| B40.IRR.110.MEC.001.01 |  | Material Approval Pipes_Irr.Pipeline Dia. 110Mm | 25d | 2023-11-01 A | 2023-11-30 A | B39.IRR.160.MEC.001.01 SS | 100% |  |  | 19,356 | 19,356 | B40 | 03 |
| B40.IRR.110.MEC.001.02 |  | PO Pipes_Irr.Pipeline Dia. 110Mm | 30d | 2023-11-30 A | 2024-01-04 A | B40.IRR.110.MEC.001.01 | 100% |  |  | 9,678 | 9,678 | B40 | 03 |
| B40.IRR.110.MEC.001.03 |  | Delivery To Site Pipes_Irr.Pipeline Dia. 110Mm | 60d | 2024-01-04 A | 2024-03-17 A | B40.IRR.110.MEC.001.02 | 100% |  |  | 19,356 | 19,356 | B40 | 03 |

Notes:
- B52.STP.GAT.MEC.001.01: Expenses: (New Expense Item) 6522
- B52.STP.GAT.MEC.001.02: Expenses: (New Expense Item) 3261
- B52.STP.GAT.MEC.001.03: Expenses: (New Expense Item) 6522
- REF.STP.NET.MEC.001: Expenses: (New Expense Item) 6988
- REF.STP.NET.MEC.002: Expenses: (New Expense Item) 3494
- REF.STP.NET.MEC.003: Expenses: (New Expense Item) 6988
- B38.IRR.200.MEC.001.01: Expenses: (New Expense Item) 32905
- B38.IRR.200.MEC.001.02: Expenses: (New Expense Item) 16452
- B38.IRR.200.MEC.001.03: Expenses: (New Expense Item) 32905
- B39.IRR.160.MEC.001.01: Expenses: (New Expense Item) 23227
- B39.IRR.160.MEC.001.02: Expenses: (New Expense Item) 11613
- B39.IRR.160.MEC.001.03: Expenses: (New Expense Item) 23227
- B40.IRR.110.MEC.001.01: Expenses: (New Expense Item) 19356
- B40.IRR.110.MEC.001.02: Expenses: (New Expense Item) 9678
- B40.IRR.110.MEC.001.03: Expenses: (New Expense Item) 19356

| ID | WBS | Activity | Duration | Start | Finish | Predecessors | Complete | Planned start | Planned finish | Cost | Actual cost | 01.B.O.Q Items | 05.EPS |
| --- | --- | --- | --- | --- | --- | --- | --- | --- | --- | --- | --- | --- | --- |
|  | 2 | **Electrical** |  |  |  |  |  |  |  |  |  |  |  |
|  | 6 | **B41-Pipeline Dia. 90mm** |  | 2023-11-01 | 2024-03-17 |  |  |  |  |  |  |  |  |
|  | 1 | **Mechanica** |  | 2023-11-01 | 2024-03-17 |  |  |  |  |  |  |  |  |
| B41.IRR.90.MEC.001.01 |  | Material Approval Pipes_Irr.Pipeline Dia. 90Mm | 25d | 2023-11-01 A | 2023-11-30 A | B40.IRR.110.MEC.001.01 SS | 100% |  |  | 11,613 | 11,613 | B41 | 03 |
| B41.IRR.90.MEC.001.02 |  | PO Pipes_Irr.Pipeline Dia. 90Mm | 30d | 2023-11-30 A | 2024-01-04 A | B41.IRR.90.MEC.001.01 | 100% |  |  | 5,807 | 5,807 | B41 | 03 |
| B41.IRR.90.MEC.001.03 |  | Delivery To Site Pipes_Irr.Pipeline Dia. 90Mm | 60d | 2024-01-04 A | 2024-03-17 A | B41.IRR.90.MEC.001.02 | 100% |  |  | 11,613 | 11,613 | B41 | 03 |
|  | 7 | **B42-Pipeline Dia. 50mm** |  | 2023-11-01 | 2024-08-22 |  |  |  |  |  |  |  |  |
|  | 1 | **Mechanica** |  | 2023-11-01 | 2024-08-22 |  |  |  |  |  |  |  |  |
| B42.IRR.50.MEC.001.01 |  | Material Approval Pipes, VaLves & VaLVe Chamber & Accessories_Irr.Pipeline Dia. 50Mm | 25d | 2023-11-01 A | 2023-11-30 A | B41.IRR.90.MEC.001.01 SS | 100% |  |  | 6,774 | 6,774 | B42 | 03 |
| B42.IRR.50.MEC.002.01 |  | Material Approval Bublers, Dripers, Quick Cupling & Sprinklers_Irr.Pipeline Dia. 50Mm | 25d | 2023-11-01 A | 2023-11-30 A | B42.IRR.50.MEC.001.01 SS | 100% |  |  | 6,774 | 6,774 | B42 | 03 |
| B42.IRR.50.MEC.001.02 |  | PO Pipes, VaLves & VaLVe Chamber & Accessories_Irr.Pipeline Dia. 50Mm | 30d | 2023-11-30 A | 2024-01-04 A | B42.IRR.50.MEC.001.01 | 100% |  |  | 3,387 | 3,387 | B42 | 03 |
| B42.IRR.50.MEC.002.02 |  | PO Bublers, Dripers, Quick Cupling & Sprinklers_Irr.Pipeline Dia. 50Mm | 30d | 2023-11-30 A | 2024-01-04 A | B42.IRR.50.MEC.002.01 | 100% |  |  | 3,387 | 3,387 | B42 | 03 |
| B42.IRR.50.MEC.001.03 |  | Delivery To Site Pipes, VaLves & VaLVe Chamber & Accessories_Irr.Pipeline Dia. 50Mm | 159.75d | 2024-01-04 A | 2024-08-01 A | B42.IRR.50.MEC.001.02 | 100% | 2024-01-04 | 2024-07-31 | 6,774 | 6,774 | B42 | 03 |
| B42.IRR.50.MEC.002.03 |  | Delivery To Site Bublers, Dripers, Quick Cupling & Sprinklers_Irr.Pipeline Dia. 50Mm | 15d | 2024-08-18 A | 2024-08-22 A | B42.IRR.50.MEC.002.02, B42.IRR.50.MEC.001.03 FS+25d | 100% | 2024-08-31 | 2024-09-16 | 6,774 | 6,774 | B42 | 03 |
|  | 8 | **B43-Pipeline Dia. 32mm** |  | 2023-11-01 | 2024-08-22 |  |  |  |  |  |  |  |  |
|  | 1 | **Mechanica** |  | 2023-11-01 | 2024-08-22 |  |  |  |  |  |  |  |  |
| B43.IRR.32.MEC.001.01 |  | Material Approval Pipes, VaLves & VaLVe Chamber & Accessories_Irr.Pipeline Dia. 32Mm | 25d | 2023-11-01 A | 2023-11-30 A | B42.IRR.50.MEC.002.01 SS | 100% |  |  | 25,162 | 25,162 | B43 | 03 |
| B43.IRR.32.MEC.002.01 |  | Material Approval Bublers, Dripers, Quick Cupling & Sprinklersirr.Pipeline Dia. 32Mm | 25d | 2023-11-01 A | 2023-11-30 A | B43.IRR.32.MEC.001.01 SS | 100% |  |  | 25,162 | 25,162 | B43 | 03 |
| B43.IRR.32.MEC.001.02 |  | PO Pipes, VaLves & VaLVe Chamber & Accessories_Irr.Pipeline Dia. 32Mm | 30d | 2023-11-30 A | 2024-01-04 A | B43.IRR.32.MEC.001.01 | 100% |  |  | 12,581 | 12,581 | B43 | 03 |
| B43.IRR.32.MEC.002.02 |  | PO Bublers, Dripers, Quick Cupling & Sprinklersirr.Pipeline Dia. 32Mm | 30d | 2023-11-30 A | 2024-01-04 A | B43.IRR.32.MEC.002.01 | 100% |  |  | 12,581 | 12,581 | B43 | 03 |
| B43.IRR.32.MEC.001.03 |  | Delivery To Site Pipes, VaLves & VaLVe Chamber & Accessories_Irr.Pipeline Dia. 32Mm | 159.75d | 2024-01-04 A | 2024-07-31 A | B43.IRR.32.MEC.001.02 | 100% |  |  | 25,162 | 25,162 | B43 | 03 |
| B43.IRR.32.MEC.002.03 |  | Delivery To Site Bublers, Dripers, Quick Cupling & Sprinklers_Irr.Pipeline Dia. 32Mm | 15d | 2024-08-18 A | 2024-08-22 A | B43.IRR.32.MEC.002.02, B43.IRR.32.MEC.001.03 FS+30d | 100% | 2024-09-05 | 2024-09-22 | 25,162 | 25,162 | B43 | 03 |
|  | 9 | **B44-Pipeline Dia. 32-16mm** |  | 2023-11-01 | 2024-08-22 |  |  |  |  |  |  |  |  |
|  | 1 | **Mechanica** |  | 2023-11-01 | 2024-08-22 |  |  |  |  |  |  |  |  |
| B44.IRR.16.MEC.001.01 |  | Material Approval Pipes, VaLves & VaLVe Chamber & Accessories_Irr.Pipeline Dia. 16Mm | 25d | 2023-11-01 A | 2023-11-30 A | B43.IRR.32.MEC.002.01 SS | 100% |  |  | 15,485 | 15,485 | B44 | 03 |
| B44.IRR.16.MEC.002.01 |  | Material Approval Bublers, Dripers, Quick Cupling & Sprinklersirr.Pipeline Dia. 16Mm | 25d | 2023-11-01 A | 2023-11-30 A | B44.IRR.16.MEC.001.01 SS | 100% |  |  | 15,485 | 15,485 | B44 | 03 |
| B44.IRR.16.MEC.001.02 |  | PO Pipes, VaLves & VaLVe Chamber & Accessories_Irr.Pipeline Dia. 16Mm | 30d | 2023-11-30 A | 2024-01-04 A | B44.IRR.16.MEC.001.01 | 100% |  |  | 7,742 | 7,742 | B44 | 03 |
| B44.IRR.16.MEC.002.02 |  | PO Bublers, Dripers, Quick Cupling & Sprinklersirr.Pipeline Dia. 16Mm | 30d | 2023-11-30 A | 2024-01-04 A | B44.IRR.16.MEC.002.01 | 100% |  |  | 7,742 | 7,742 | B44 | 03 |
| B44.IRR.16.MEC.001.03 |  | Delivery To Site Pipes, VaLves & VaLVe Chamber & Accessories_Irr.Pipeline Dia. 16mm | 159.75d | 2024-01-04 A | 2024-07-31 A | B44.IRR.16.MEC.001.02 | 100% |  |  | 15,485 | 15,485 | B44 | 03 |
| B44.IRR.16.MEC.002.03 |  | Delivery To Site Bublers, Dripers, Quick Cupling _Irr.Pipeline Dia. 16mm | 160.75d | 2024-01-04 A | 2024-08-01 A | B44.IRR.16.MEC.002.02, B44.IRR.16.MEC.001.03 | 100% |  |  | 12,388 | 12,388 | B44 | 03 |
| B44.IRR.16.MEC.002.4 |  | Delivery To Site Sprinklers_Irr.Pipeline Dia. 16mm | 15d | 2024-08-18 A | 2024-08-22 A | B44.IRR.16.MEC.001.03 FS+30d | 100% | 2024-09-05 | 2024-09-22 | 3,097 | 3,097 |  |  |

Notes:
- B41.IRR.90.MEC.001.01: Expenses: (New Expense Item) 11613
- B41.IRR.90.MEC.001.02: Expenses: (New Expense Item) 5807
- B41.IRR.90.MEC.001.03: Expenses: (New Expense Item) 11613
- B42.IRR.50.MEC.001.01: Expenses: (New Expense Item) 6774
- B42.IRR.50.MEC.002.01: Expenses: (New Expense Item) 6774
- B42.IRR.50.MEC.001.02: Expenses: (New Expense Item) 3387
- B42.IRR.50.MEC.002.02: Expenses: (New Expense Item) 3387
- B42.IRR.50.MEC.001.03: Expenses: (New Expense Item) 6774
- B42.IRR.50.MEC.002.03: Expenses: (New Expense Item) 6774
- B43.IRR.32.MEC.001.01: Expenses: (New Expense Item) 25162
- B43.IRR.32.MEC.002.01: Expenses: (New Expense Item) 25162
- B43.IRR.32.MEC.001.02: Expenses: (New Expense Item) 12581
- B43.IRR.32.MEC.002.02: Expenses: (New Expense Item) 12581
- B43.IRR.32.MEC.001.03: Expenses: (New Expense Item) 25162
- B43.IRR.32.MEC.002.03: Expenses: (New Expense Item) 25162
- B44.IRR.16.MEC.001.01: Expenses: (New Expense Item) 15485
- B44.IRR.16.MEC.002.01: Expenses: (New Expense Item) 15485
- B44.IRR.16.MEC.001.02: Expenses: (New Expense Item) 7742
- B44.IRR.16.MEC.002.02: Expenses: (New Expense Item) 7742
- B44.IRR.16.MEC.001.03: Expenses: (New Expense Item) 15485
- B44.IRR.16.MEC.002.03: Expenses: (New Expense Item) 12388
- B44.IRR.16.MEC.002.4: Expenses: (New Expense Item) 3097

| ID | WBS | Activity | Duration | Start | Finish | Predecessors | Complete | Planned start | Planned finish | Total float | Free float | Resources | Cost | Actual cost | 01.B.O.Q Items | 05.EPS | 02.Scope | 04.Discipline | 03.System |
| --- | --- | --- | --- | --- | --- | --- | --- | --- | --- | --- | --- | --- | --- | --- | --- | --- | --- | --- | --- |
|  | 10 | **B45-Irrigation Controller System** |  | 2024-06-27 | 2024-08-22 |  |  |  |  |  |  |  |  |  |  |  |  |  |  |
|  | 2 | **Electrical** |  | 2024-06-27 | 2024-08-22 |  |  |  |  |  |  |  |  |  |  |  |  |  |  |
| B45.IRR.COS.MEC.002.01 |  | Material Approval Cables, Decoder, Solenoid VaLVe, Control Panel & Accessories_Irr.Net. | 6d | 2024-06-27 A | 2024-07-03 A | B44.IRR.16.MEC.001.01 | 100% |  |  |  |  |  | 968 | 968 | B45 | 03 |  |  |  |
| B45.IRR.COS.MEC.002.02 |  | PO Cables, Decoder, Solenoid VaLVe, Control Panel & Accessories_Irr.Net. | 1d | 2024-07-03 A | 2024-07-03 A | B45.IRR.COS.MEC.002.01 | 100% |  |  |  |  |  | 484 | 484 | B45 | 03 |  |  |  |
| B45.IRR.COS.MEC.002.03 |  | Delivery To Site Cables, Decoder, Solenoid VaLVe, Control Panel & Accessories_Irr.Net. | 142d | 2024-07-18 A | 2024-08-22 A | B45.IRR.COS.MEC.002.02 FS+94d | 100% | 2024-04-24 | 2024-10-15 |  |  |  | 968 | 968 | B45 | 03 |  |  |  |
| B45.IRR.COS.MEC.001.01 |  | Material Approval Irrigation Controller System | 3d | 2024-07-27 A | 2024-07-29 A | B1.DET.D.IRR.ELE.001 | 100% |  |  |  |  |  | 968 | 968 | B45 | 03 |  |  |  |
| B45.IRR.COS.MEC.001.02 |  | PO Irrigation Controller System | 3d | 2024-07-30 A | 2024-08-01 A | B45.IRR.COS.MEC.001.01 | 100% |  |  |  |  |  | 484 | 484 | B45 | 03 |  |  |  |
| B45.IRR.COS.MEC.001.03 |  | Delivery To Site Irrigation Controller System | 30d | 2024-08-18 A | 2024-08-22 A | B45.IRR.COS.MEC.001.02 FS+99d | 100% | 2024-11-27 | 2024-12-31 |  |  |  | 968 | 968 | B45 | 03 |  |  |  |
|  | 11 | **B46-Irrigation Pumps** |  | 2024-06-27 | 2024-11-23 |  |  |  |  |  |  |  |  |  |  |  |  |  |  |
|  | 1 | **Mechanica** |  | 2024-06-27 | 2024-11-23 |  |  |  |  |  |  |  |  |  |  |  |  |  |  |
| B46.IRR.PUM.MEC.001.01 |  | Material Approval Pump, VaLves, Digital Flow Meter, Disk Filter & Accessories_Irr.Net. | 6d | 2024-06-27 A | 2024-07-03 A | B44.IRR.16.MEC.002.01 SS | 100% |  |  |  |  |  | 9,678 | 9,678 | B46 | 03 |  |  |  |
| B46.IRR.PUM.MEC.001.02 |  | PO Pump, VaLves, Digital Flow Meter, Disk Filter & Accessories_Irr.Net. | 1d | 2024-07-03 A | 2024-07-03 A | B46.IRR.PUM.MEC.001.01 | 100% |  |  |  |  |  | 4,839 | 4,839 | B46 | 03 |  |  |  |
| B46.IRR.PUM.MEC.001.03 |  | Delivery To Site Pump, VaLves, Digital Flow Meter, Disk Filter & Accessories_Irr.Net. | 31d | 2024-10-19 | 2024-11-23 | B46.IRR.PUM.MEC.001.02 FS+88d |  |  |  | 100d | 0d |  | 9,678 |  | B46 | 03 |  |  |  |
|  | 1 | **Construction** |  | 2023-03-23 | 2025-04-21 |  |  |  |  |  |  |  |  |  |  |  |  |  |  |
|  | 1 | **Construction** |  | 2023-03-23 | 2025-04-21 |  |  |  |  |  |  |  |  |  |  |  |  |  |  |
|  | 1 | **WTP** |  | 2024-03-02 | 2025-04-21 |  |  |  |  |  |  |  |  |  |  |  |  |  |  |
|  | 17 | **Water Treatment Plant** |  | 2024-03-17 | 2025-04-21 |  |  |  |  |  |  |  |  |  |  |  |  |  |  |
|  | 1 | **B04-New Water Treatment Plant** |  | 2024-04-17 | 2025-02-26 |  |  |  |  |  |  |  |  |  |  |  |  |  |  |
|  | 1 | **Equipment Building** |  | 2024-05-18 | 2025-02-26 |  |  |  |  |  |  |  |  |  |  |  |  |  |  |
|  | 2 | **Civil Works** |  | 2024-05-18 | 2024-10-10 |  |  |  |  |  |  |  |  |  |  |  |  |  |  |
| B4.WTP.EQ.CV.001 |  | Excavation Work Until The Required Depth Is Reached | 10d | 2024-05-18 A | 2024-05-29 A | B1.SD.WTP.CV.001 SS+91d | 100% |  |  |  |  | Civil Crew [80 h]; Equipment [80 h] | 41,609 | 41,609 | B04 | 04 | 01 | 01 | 001 |
| B4.WTP.EQ.CV.002 |  | Plain Concrete Footing Works, Formwork And Casting | 3d | 2024-05-29 A | 2024-06-02 A | B4.WTP.EQ.CV.001 | 100% |  |  |  |  | Civil Crew [144 h] | 40,394 | 40,394 | B04 | 04 | 01 | 01 | 001 |
| B4.WTP.EQ.CV.003 |  | Reinforcement Concrete Footing Works, Formwork , Steel Work , And Casting | 21.75d | 2024-06-02 A | 2024-07-03 A | B4.WTP.EQ.CV.002 | 100% |  |  |  |  | Civil Crew [1968 h] | 113,892 | 113,892 | B04 | 04 | 01 | 01 | 001 |
| B4.WTP.EQ.CV.008 |  | Bitumen Isolation Work | 21.75d | 2024-06-02 A | 2024-07-03 A | B4.WTP.EQ.CV.003 FF | 100% |  |  |  |  | Civil Crew [984 h] | 6,378 | 6,378 | B04 | 04 | 01 | 01 | 001 |
| B4.WTP.EQ.CV.007 |  | Backfilling Work | 30.75d | 2024-06-06 A | 2024-07-18 A | B4.WTP.EQ.CV.008 FF | 100% |  |  |  |  | Civil Crew [214 h]; Equipment [214 h] | 6,378 | 6,378 | B04 | 04 | 01 | 01 | 001 |
| B4.WTP.EQ.CV.005 |  | Reinforcement Concrete For S.O.G. | 6d | 2024-07-18 A | 2024-07-24 A | B4.WTP.EQ.CV.007 | 100% |  |  |  |  | Civil Crew [336 h] | 58,616 | 58,616 | B04 | 04 | 01 | 01 | 001 |
| B4.WTP.EQ.CV.004 |  | Reinforcement Concrete For Columns Works, Formwork , Steel Work , And Casting | 10d | 2024-08-08 A | 2024-08-15 A | B4.WTP.EQ.CV.005 | 100% | 2024-08-05 | 2024-08-15 |  |  | Civil Crew [320 h] | 66,817 | 66,817 | B04 | 04 | 01 | 01 | 001 |
| B4.WTP.EQ.CV.006 |  | Reinforcement Concrete For Roof Slab Works, Formwork , Steel Work , And Casting | 34d | 2024-08-24 A | 2024-10-10 A | B4.WTP.EQ.CV.004 | 100% | 2024-08-24 | 2024-10-02 |  |  | Civil Crew [1680 h] | 91,114 | 91,114 | B04 | 04 | 01 | 01 | 001 |

Notes:
- B45.IRR.COS.MEC.002.01: Expenses: (New Expense Item) 968
- B45.IRR.COS.MEC.002.02: Expenses: (New Expense Item) 484
- B45.IRR.COS.MEC.002.03: Expenses: (New Expense Item) 968
- B45.IRR.COS.MEC.001.01: Expenses: (New Expense Item) 968
- B45.IRR.COS.MEC.001.02: Expenses: (New Expense Item) 484
- B45.IRR.COS.MEC.001.03: Expenses: (New Expense Item) 968
- B46.IRR.PUM.MEC.001.01: Expenses: (New Expense Item) 9678
- B46.IRR.PUM.MEC.001.02: Expenses: (New Expense Item) 4839
- B46.IRR.PUM.MEC.001.03: Expenses: (New Expense Item) 9678
- B4.WTP.EQ.CV.001: Expenses: (New Expense Item) 41609
- B4.WTP.EQ.CV.002: Expenses: (New Expense Item) 40394
- B4.WTP.EQ.CV.003: Expenses: (New Expense Item) 113892
- B4.WTP.EQ.CV.008: Expenses: (New Expense Item) 6378
- B4.WTP.EQ.CV.007: Expenses: (New Expense Item) 6378
- B4.WTP.EQ.CV.005: Expenses: (New Expense Item) 58616
- B4.WTP.EQ.CV.004: Expenses: (New Expense Item) 66817
- B4.WTP.EQ.CV.006: Expenses: (New Expense Item) 91114

| ID | WBS | Activity | Duration | Start | Finish | Predecessors | Complete | Total float | Free float | Resources | Cost | Actual cost | 01.B.O.Q Items | 02.Scope | 04.Discipline | 05.EPS | 03.System |
| --- | --- | --- | --- | --- | --- | --- | --- | --- | --- | --- | --- | --- | --- | --- | --- | --- | --- |
|  | 3 | **Architectural work** |  | 2024-10-30 | 2025-02-26 |  |  |  |  |  |  |  |  |  |  |  |  |
| B4.WTP.EQ.ARC.001 |  | Block Work | 21d | 2024-10-30 | 2024-11-23 | B4.WTP.EQ.CV.006, B1.SD.WTP.ARC.001, B1.SD.WTP.ARC.001.1 |  | 4d | 0d | Architectural Crew [640 h] | 5,797 |  | B04 | 01 | 02 | 04 | 001 |
| B4.WTP.EQ.ARC.002 |  | Plastering Work | 21d | 2024-11-24 | 2024-12-17 | B4.WTP.EQ.ARC.001 |  | 4d | 0d | Architectural Crew [640 h] | 5,797 |  | B04 | 01 | 02 | 04 | 001 |
| B4.WTP.EQ.ARC.005 |  | Water Proofing | 10d | 2024-11-24 | 2024-12-04 | B4.WTP.EQ.ARC.002 SS |  | 49d | 0d | Architectural Crew [480 h] | 4,348 |  | B04 | 01 | 02 | 04 | 001 |
| B4.WTP.EQ.ARC.006 |  | Heat Insulation | 8d | 2024-12-05 | 2024-12-14 | B4.WTP.EQ.ARC.005 |  | 72d | 0d | Architectural Crew [192 h] | 4,348 |  | B04 | 01 | 02 | 04 | 001 |
| B4.WTP.EQ.ARC.007 |  | Roof Foam Concrete | 10d | 2024-12-15 | 2024-12-25 | B4.WTP.EQ.ARC.006 |  | 72d | 0d | Architectural Crew [480 h] | 5,508 |  | B04 | 01 | 02 | 04 | 001 |
| B4.WTP.EQ.ARC.003 |  | Painting First Coat | 12d | 2024-12-18 | 2024-12-31 | B4.WTP.EQ.ARC.002 |  | 4d | 0d | Architectural Crew [512 h] | 2,899 |  | B04 | 01 | 02 | 04 | 001 |
| B4.WTP.EQ.ARC.004 |  | Ground Finishing Epoxy First Coat | 12d | 2024-12-18 | 2024-12-31 | B4.WTP.EQ.ARC.003 SS |  | 8d | 0d | Architectural Crew [240 h] | 4,348 |  | B04 | 01 | 02 | 04 | 001 |
| B4.WTP.EQ.ARC.008 |  | Cement Tiles | 5d | 2024-12-26 | 2024-12-31 | B4.WTP.EQ.ARC.007 |  | 72d | 0d | Architectural Crew [160 h] | 4,058 |  | B04 | 01 | 02 | 04 | 001 |
| B4.WTP.EQ.ARC.009 |  | Install Windows | 10d | 2025-01-01 | 2025-01-12 | B4.WTP.EQ.ARC.008 |  | 72d | 0d | Architectural Crew [144 h] | 19,711 |  | B04 | 01 | 02 | 04 | 001 |
| B4.WTP.EQ.ARC.011 |  | Install The Doors | 10d | 2025-01-01 | 2025-01-12 | B4.WTP.EQ.ARC.009 SS |  | 72d |  | Architectural Crew [144 h] | 22,900 |  | B04 | 01 | 02 | 04 | 001 |
| B4.WTP.EQ.ARC.012 |  | Painting Second Coat | 12d | 2025-02-12 | 2025-02-26 | B4.WTP.EQ.MEC.010, B4.WTP.EQ.MEC.012, B4.WTP.EQ.MEC.013, B4.WTP.EQ.MEC.014, B4.WTP.EQ.MEC.016, B4.WTP.EQ.MEC.003, B4.WTP.EQ.MEC.004, B4.WTP.EQ.MEC.005, B4.WTP.EQ.MEC.006, B4.WTP.EQ.MEC.007, B4.WTP.EQ.MEC.017, B4.WTP.EQ.MEC.009, B4.WTP.EQ.MEC.018, B4.WTP.EQ.MEC.002, B4.WTP.EQ.MEC.008, B4.WTP.EQ.MEC.019, B4.WTP.EQ.ELE.002, B4.WTP.EQ.ELE.001, B4.WTP.EQ.ELE.003, B4.WTP.EQ.ELE.004, B4.WTP.EQ.ELE.005, B4.WTP.EQ.ELE.006, B4.WTP.EQ.ELE.008, B4.WTP.EQ.ELE.010, B4.WTP.EQ.ELE.011, B4.WTP.EQ.ELE.012, B4.WTP.EQ.ELE.013, B4.WTP.EQ.MEC.022, B4.WTP.EQ.ELE.007 |  | 4d |  | Architectural Crew [256 h] | 2,899 |  | B04 | 01 | 02 | 04 | 001 |
| B4.WTP.EQ.ARC.013 |  | Ground Finishing Epoxy Second Coat | 12d | 2025-02-12 | 2025-02-26 | B4.WTP.EQ.MEC.011, B4.WTP.EQ.MEC.015, B4.WTP.EQ.MEC.001, B4.WTP.EQ.ELE.002 |  | 34d |  | Architectural Crew [128 h] | 4,348 |  | B04 | 01 | 02 | 04 | 001 |
|  | 1 | **Mechanical work** |  | 2024-07-07 | 2025-01-28 |  |  |  |  |  |  |  |  |  |  |  |  |
| B4.WTP.EQ.MEC.020 |  | Sanitary Fixtures & Manholes-First Fix | 4.88d | 2024-07-07 A | 2024-07-11 A | B4.WTP.EQ.CV.007 SS | 100% |  |  | Mechanical Crew [96 h] | 16,979 | 16,979 | B04 | 01 | 03 | 04 | 001 |
| B4.WTP.EQ.MEC.016 |  | Install Exhaust Fan | 6d | 2024-12-03 | 2024-12-10 | B4.WTP.EQ.MEC.016.03 |  | 58.75d | 54.75d | Mechanical Crew [96 h] | 48,899 |  | B04 | 01 | 03 | 04 | 001 |
| B4.WTP.EQ.MEC.021 |  | Sanitary Fixtures & Manholes-Second Fix | 7d | 2024-12-07 | 2024-12-14 | B4.WTP.EQ.MEC.020, B4.WTP.EQ.ARC.001, B4.WTP.EQ.ARC.005, B4.WTP.EQ.MEC.020.03 |  | 48d | 15d | Mechanical Crew [96 h] | 16,979 |  | B04 | 01 | 03 | 04 | 001 |
| B4.WTP.EQ.MEC.001 |  | Install Filter Feed Pump | 10d | 2025-01-01 | 2025-01-12 | B4.WTP.EQ.ARC.004, B4.WTP.EQ.MEC.001.03 |  | 18d | 14d | Mechanical Crew [224 h] | 55,418 |  | B04 | 01 | 03 | 04 | 001 |
| B4.WTP.EQ.MEC.002 |  | Install Sand Filter | 15d | 2025-01-01 | 2025-01-18 | B4.WTP.EQ.ARC.004, B4.WTP.EQ.MEC.002.03 |  | 13d | 9d | Mechanical Crew [720 h]; Equipment [120 h] | 69,220 |  | B04 | 01 | 03 | 04 | 001 |
| B4.WTP.EQ.MEC.003 |  | Acid Dosing Injection System | 10d | 2025-01-01 | 2025-01-12 | B4.WTP.EQ.ARC.003, B4.WTP.EQ.MEC.003.03 |  | 18d | 14d | Mechanical Crew [168 h] | 20,374 |  | B04 | 01 | 03 | 04 | 001 |
| B4.WTP.EQ.MEC.004 |  | Antiscalant Injection System | 10d | 2025-01-01 | 2025-01-12 | B4.WTP.EQ.ARC.003, B4.WTP.EQ.MEC.004.03 |  | 18d | 14d | Mechanical Crew [168 h] | 20,374 |  | B04 | 01 | 03 | 04 | 001 |
| B4.WTP.EQ.MEC.005 |  | De-Cl2 Dosing Injection System | 12d | 2025-01-01 | 2025-01-14 | B4.WTP.EQ.ARC.003, B4.WTP.EQ.MEC.005.03 |  | 4d | 0d | Mechanical Crew [168 h] | 20,374 |  | B04 | 01 | 03 | 04 | 001 |
| B4.WTP.EQ.MEC.006 |  | Post-Chlorination Injection System | 10d | 2025-01-01 | 2025-01-12 | B4.WTP.EQ.ARC.003, B4.WTP.EQ.MEC.006.03 |  | 18d | 14d | Mechanical Crew [168 h] | 20,374 |  | B04 | 01 | 03 | 04 | 001 |
| B4.WTP.EQ.MEC.007 |  | Caustic Soda Injection System | 10d | 2025-01-01 | 2025-01-12 | B4.WTP.EQ.ARC.003, B4.WTP.EQ.MEC.007.03 |  | 18d | 14d | Mechanical Crew [168 h] | 20,374 |  | B04 | 01 | 03 | 04 | 001 |
| B4.WTP.EQ.MEC.009 |  | Install R.O Skid | 20d | 2025-01-01 | 2025-01-23 | B4.WTP.EQ.ARC.004, B4.WTP.EQ.MEC.009.03 |  | 8d | 4d | Mechanical Crew [312 h]; Equipment [104 h] | 20,374 |  | B04 | 01 | 03 | 04 | 001 |
| B4.WTP.EQ.MEC.010 |  | Install Cartridge Filter | 8d | 2025-01-01 | 2025-01-09 | B4.WTP.EQ.ARC.004, B4.WTP.EQ.MEC.010.03 |  | 20d | 16d | Mechanical Crew [32 h]; Equipment [8 h] | 67,032 |  | B04 | 01 | 03 | 04 | 001 |
| B4.WTP.EQ.MEC.011 |  | Install High Pressure Pump | 8d | 2025-01-01 | 2025-01-09 | B4.WTP.EQ.ARC.004, B4.WTP.EQ.MEC.011.03 |  | 20d | 16d | Mechanical Crew [96 h] | 81,498 |  | B04 | 01 | 03 | 04 | 001 |
| B4.WTP.EQ.MEC.012 |  | Install R.O Vessel And R.O Membrane | 5d | 2025-01-01 | 2025-01-06 | B4.WTP.EQ.ARC.004, B4.WTP.EQ.MEC.012.03, B4.WTP.EQ.MEC.012.04 |  | 23d | 19d | Mechanical Crew [96 h] | 99,972 |  | B04 | 01 | 03 | 04 | 001 |
| B4.WTP.EQ.MEC.013 |  | Install Flushing Tank | 6d | 2025-01-01 | 2025-01-07 | B4.WTP.EQ.ARC.004, B4.WTP.EQ.MEC.013.03 |  | 22d | 18d | Mechanical Crew [96 h] | 81,498 |  | B04 | 01 | 03 | 04 | 001 |
| B4.WTP.EQ.MEC.014 |  | Install Chemical Dosing Tanks | 6d | 2025-01-01 | 2025-01-07 | B4.WTP.EQ.ARC.004, B4.WTP.EQ.MEC.014.03 |  | 22d | 18d | Mechanical Crew [48 h] | 10,187 |  | B04 | 01 | 03 | 04 | 001 |
| B4.WTP.EQ.MEC.015 |  | Install Flushing Pump | 6d | 2025-01-01 | 2025-01-07 | B4.WTP.EQ.ARC.004, B4.WTP.EQ.MEC.015.03 |  | 22d | 18d | Mechanical Crew [96 h] | 10,187 |  | B04 | 01 | 03 | 04 | 001 |
| B4.WTP.EQ.MEC.017 |  | Install A.C | 10d | 2025-01-01 | 2025-01-12 | B4.WTP.EQ.ARC.003, B4.WTP.EQ.MEC.017.03 |  | 18d | 14d | Mechanical Crew [240 h] | 24,653 |  | B04 | 01 | 03 | 04 | 001 |
| B4.WTP.EQ.MEC.018 |  | Install Crane | 20d | 2025-01-01 | 2025-01-23 | B4.WTP.EQ.MEC.018.03, B4.WTP.EQ.ARC.003 |  | 8d | 4d | Mechanical Crew [800 h]; Equipment [160 h] | 103,417 |  | B04 | 01 | 03 | 04 | 001 |
| B4.WTP.EQ.MEC.019 |  | Install Fire Fighting System | 15d | 2025-01-01 | 2025-01-18 | B4.WTP.EQ.ARC.003, B4.WTP.EQ.MEC.019.03, B1.SD.WTP.MEC.001 |  | 13d | 9d | Mechanical Crew [720 h] | 71,310 |  | B04 | 01 | 03 | 04 | 001 |
| B4.WTP.EQ.MEC.022 |  | Sanitary Fixtures & Manholes-Third Fix | 7d | 2025-01-01 | 2025-01-08 | B4.WTP.EQ.ARC.003, B4.WTP.EQ.MEC.021, B4.WTP.EQ.MEC.020.03, B4.WTP.EQ.MEC.020.04 |  | 33d | 29d | Mechanical Crew [96 h] | 16,979 |  | B04 | 01 | 03 | 04 | 001 |
| B4.WTP.EQ.MEC.008 |  | Pre-Cl2 Dosing Injection System | 12d | 2025-01-15 | 2025-01-28 | B4.WTP.EQ.MEC.005, B4.WTP.EQ.MEC.008.03 |  | 4d | 0d | Mechanical Crew [168 h] | 20,374 |  | B04 | 01 | 03 | 04 | 001 |

Notes:
- B4.WTP.EQ.ARC.001: Expenses: (New Expense Item) 5797
- B4.WTP.EQ.ARC.002: Expenses: (New Expense Item) 5797
- B4.WTP.EQ.ARC.005: Expenses: (New Expense Item) 4348
- B4.WTP.EQ.ARC.006: Expenses: (New Expense Item) 4348
- B4.WTP.EQ.ARC.007: Expenses: (New Expense Item) 5508
- B4.WTP.EQ.ARC.003: Expenses: (New Expense Item) 2899
- B4.WTP.EQ.ARC.004: Expenses: (New Expense Item) 4348
- B4.WTP.EQ.ARC.008: Expenses: (New Expense Item) 4058
- B4.WTP.EQ.ARC.009: Expenses: (New Expense Item) 19711
- B4.WTP.EQ.ARC.011: Expenses: (New Expense Item) 22900
- B4.WTP.EQ.ARC.012: Expenses: (New Expense Item) 2899
- B4.WTP.EQ.ARC.013: Expenses: (New Expense Item) 4348
- B4.WTP.EQ.MEC.020: Expenses: (New Expense Item) 16979
- B4.WTP.EQ.MEC.016: Expenses: (New Expense Item) 48899
- B4.WTP.EQ.MEC.021: Expenses: (New Expense Item) 16979
- B4.WTP.EQ.MEC.001: Expenses: (New Expense Item) 55418
- B4.WTP.EQ.MEC.002: Expenses: (New Expense Item) 69220
- B4.WTP.EQ.MEC.003: Expenses: (New Expense Item) 20374
- B4.WTP.EQ.MEC.004: Expenses: (New Expense Item) 20374
- B4.WTP.EQ.MEC.005: Expenses: (New Expense Item) 20374
- B4.WTP.EQ.MEC.006: Expenses: (New Expense Item) 20374
- B4.WTP.EQ.MEC.007: Expenses: (New Expense Item) 20374
- B4.WTP.EQ.MEC.009: Expenses: (New Expense Item) 20374
- B4.WTP.EQ.MEC.010: Expenses: (New Expense Item) 67032
- B4.WTP.EQ.MEC.011: Expenses: (New Expense Item) 81498
- B4.WTP.EQ.MEC.012: Expenses: (New Expense Item) 99972
- B4.WTP.EQ.MEC.013: Expenses: (New Expense Item) 81498
- B4.WTP.EQ.MEC.014: Expenses: (New Expense Item) 10187
- B4.WTP.EQ.MEC.015: Expenses: (New Expense Item) 10187
- B4.WTP.EQ.MEC.017: Expenses: (New Expense Item) 24653
- B4.WTP.EQ.MEC.018: Expenses: (New Expense Item) 103417
- B4.WTP.EQ.MEC.019: Expenses: (New Expense Item) 71310
- B4.WTP.EQ.MEC.022: Expenses: (New Expense Item) 16979
- B4.WTP.EQ.MEC.008: Expenses: (New Expense Item) 20374

| ID | WBS | Activity | Duration | Start | Finish | Predecessors | Complete | Planned start | Planned finish | Total float | Free float | Resources | Cost | Actual cost | 01.B.O.Q Items | 02.Scope | 04.Discipline | 05.EPS | 03.System |
| --- | --- | --- | --- | --- | --- | --- | --- | --- | --- | --- | --- | --- | --- | --- | --- | --- | --- | --- | --- |
|  | 4 | **Electrical Work** |  | 2024-06-02 | 2025-02-11 |  |  |  |  |  |  |  |  |  |  |  |  |  |  |
| B4.WTP.EQ.ELE.009 |  | Earthing And Lighting-First Fix | 10.75d | 2024-06-02 A | 2024-06-18 A | B4.WTP.EQ.ELE.009.03, B1.SD.WTP.ELE.001 | 100% | 2024-06-02 | 2024-06-13 |  |  | Electrical Crew [516 h] | 15,363 | 15,363 | B04 | 01 | 04 | 04 | 001 |
| B4.WTP.EQ.ELE.014 |  | Earthing And Lighting-Second Fix | 1d | 2024-08-24 A | 2024-08-24 A | B4.WTP.EQ.ELE.009, B4.WTP.EQ.CV.004, B1.SD.WTP.ELE.001 | 100% |  |  |  |  | Electrical Crew [32 h] | 15,363 | 15,363 | B04 | 01 | 04 | 04 | 001 |
| B4.WTP.EQ.ELE.015 |  | Earthing And Lighting-Third Fix | 15d | 2024-10-19 | 2024-11-04 | B4.WTP.EQ.ELE.014, B4.WTP.EQ.CV.006 SS+7d, B1.SD.WTP.ELE.001 |  |  |  | 66d | 0d | Electrical Crew [720 h] | 15,363 |  | B04 | 01 | 04 | 04 | 001 |
| B4.WTP.EQ.ELE.001 |  | PLC Scada | 15d | 2025-01-01 | 2025-01-18 | B4.WTP.EQ.ARC.003, B4.WTP.EQ.ARC.004, B4.WTP.EQ.ELE.001.03, B1.SD.WTP.ELE.001 |  |  |  | 25d | 21d | Electrical Crew [480 h] | 210,736 |  | B04 | 01 | 04 | 04 | 001 |
| B4.WTP.EQ.ELE.003 |  | Internal Lighting | 15d | 2025-01-01 | 2025-01-18 | B4.WTP.EQ.ARC.003, B4.WTP.EQ.ELE.003.03, B1.SD.WTP.ELE.001 |  |  |  | 25d | 21d | Electrical Crew [480 h] | 21,161 |  | B04 | 01 | 04 | 04 | 001 |
| B4.WTP.EQ.ELE.004 |  | External Lighting | 15d | 2025-01-01 | 2025-01-18 | B4.WTP.EQ.ARC.003, B4.WTP.EQ.ELE.004.03, B1.SD.WTP.ELE.001 |  |  |  | 25d | 21d | Electrical Crew [480 h] | 21,161 |  | B04 | 01 | 04 | 04 | 001 |
| B4.WTP.EQ.ELE.005 |  | Wiring Devices | 15d | 2025-01-01 | 2025-01-18 | B4.WTP.EQ.ARC.003, B4.WTP.EQ.ELE.005.03, B1.SD.WTP.ELE.001 |  |  |  | 25d | 21d | Electrical Crew [480 h] | 14,494 |  | B04 | 01 | 04 | 04 | 001 |
| B4.WTP.EQ.ELE.006 |  | Low Voltage Cables | 20d | 2025-01-01 | 2025-01-23 | B4.WTP.EQ.ARC.004, B4.WTP.EQ.ELE.006.03, B1.SD.WTP.ELE.001 |  |  |  | 20d | 16d | Electrical Crew [1600 h] | 73,627 |  | B04 | 01 | 04 | 04 | 001 |
| B4.WTP.EQ.ELE.008 |  | UPS | 2d | 2025-01-01 | 2025-01-02 | B4.WTP.EQ.ARC.003, B4.WTP.EQ.ARC.004, B4.WTP.EQ.ELE.008.03, B1.SD.WTP.ELE.001 |  |  |  | 38d | 34d | Electrical Crew [32 h] | 123,195 |  | B04 | 01 | 04 | 04 | 001 |
| B4.WTP.EQ.ELE.010 |  | Cable Tray And Fittings | 8d | 2025-01-01 | 2025-01-09 | B4.WTP.EQ.ARC.003, B4.WTP.EQ.ELE.010.03, B1.SD.WTP.ELE.001 |  |  |  | 32d | 28d | Electrical Crew [480 h] | 14,494 |  | B04 | 01 | 04 | 04 | 001 |
| B4.WTP.EQ.ELE.011 |  | Building Wires | 15d | 2025-01-01 | 2025-01-18 | B4.WTP.EQ.ARC.003, B4.WTP.EQ.ELE.011.03, B1.SD.WTP.ELE.001 |  |  |  | 25d | 21d | Electrical Crew [720 h] | 14,494 |  | B04 | 01 | 04 | 04 | 001 |
| B4.WTP.EQ.ELE.012 |  | EMT. Pipes Boles And Fittings | 15d | 2025-01-01 | 2025-01-18 | B4.WTP.EQ.ARC.003, B4.WTP.EQ.ELE.012.03, B1.SD.WTP.ELE.001 |  |  |  | 25d | 21d | Electrical Crew [720 h] | 11,595 |  | B04 | 01 | 04 | 04 | 001 |
| B4.WTP.EQ.ELE.013 |  | Fire Alarm System | 15d | 2025-01-01 | 2025-01-18 | B4.WTP.EQ.ARC.003, B4.WTP.EQ.ELE.013.03, B1.SD.WTP.ELE.001 |  |  |  | 25d | 21d | Electrical Crew [480 h] | 46,089 |  | B04 | 01 | 04 | 04 | 001 |
| B4.WTP.EQ.ELE.007 |  | EMCC , MDB, ATS , PFC | 10d | 2025-01-06 | 2025-01-16 | B4.WTP.EQ.ARC.003, B4.WTP.EQ.ARC.004, B4.WTP.EQ.ELE.007.03, B1.SD.WTP.ELE.001 |  |  |  | 26d | 22d | Electrical Crew [720 h] | 157,979 |  | B04 | 01 | 04 | 04 | 001 |
| B4.WTP.EQ.ELE.002 |  | Instruments | 12d | 2025-01-29 | 2025-02-11 | B4.WTP.EQ.MEC.001, B4.WTP.EQ.MEC.002, B4.WTP.EQ.MEC.003, B4.WTP.EQ.MEC.004, B4.WTP.EQ.MEC.005, B4.WTP.EQ.MEC.006, B4.WTP.EQ.MEC.007, B4.WTP.EQ.MEC.008, B4.WTP.EQ.MEC.009, B4.WTP.EQ.MEC.010, B4.WTP.EQ.MEC.011, B4.WTP.EQ.MEC.012, B4.WTP.EQ.MEC.013, B4.WTP.EQ.MEC.014, B4.WTP.EQ.MEC.015, B4.WTP.EQ.MEC.017, B4.WTP.EQ.MEC.018, B4.WTP.EQ.MEC.019, B4.WTP.EQ.MEC.020, B4.WTP.EQ.ELE.002.03, B1.SD.WTP.ELE.001 |  |  |  | 4d | 0d | Electrical Crew [480 h] | 56,525 |  | B04 | 01 | 04 | 04 | 001 |
|  | 5 | **Reject Water Tank** |  | 2024-04-17 | 2024-08-15 |  |  |  |  |  |  |  |  |  |  |  |  |  |  |
|  | 1 | **Civil Works** |  | 2024-04-17 | 2024-08-15 |  |  |  |  |  |  |  |  |  |  |  |  |  |  |
| B4.WTP.RJ.CV.001 |  | Excavation Work Until The Required Depth Is Reached | 5d | 2024-04-17 A | 2024-04-23 A | B1.SD.WTP.CV.001 SS+65d | 100% |  |  |  |  | Civil Crew; Equipment [40 h] | 12,175 | 12,175 | B04 | 01 | 01 | 04 | 001 |
| B4.WTP.RJ.CV.002 |  | Plain Concrete Footing Works, Formwork And Casting | 2d | 2024-04-23 A | 2024-04-25 A | B4.WTP.RJ.CV.001 | 100% |  |  |  |  | Civil Crew [64 h] | 13,914 | 13,914 | B04 | 01 | 01 | 04 | 001 |
| B4.WTP.RJ.CV.003 |  | Reinforcement Concrete Footing Works, Formwork , Steel Work , And Casting | 7d | 2024-04-25 A | 2024-05-04 A | B4.WTP.RJ.CV.002 | 100% |  |  |  |  | Civil Crew [560 h] | 24,059 | 24,059 | B04 | 01 | 01 | 04 | 001 |
| B4.WTP.RJ.CV.004 |  | Reinforcement Concrete For Walls Works, Formwork , Steel Work , And Casting | 10d | 2024-05-04 A | 2024-05-15 A | B4.WTP.RJ.CV.003 | 100% |  |  |  |  | Civil Crew [800 h] | 22,030 | 22,030 | B04 | 01 | 01 | 04 | 001 |
| B4.WTP.RJ.CV.005 |  | Reinforcement Concrete For The Slab Works, Formwork , Steel Work , And Casting | 7d | 2024-05-15 A | 2024-05-23 A | B4.WTP.RJ.CV.004 | 100% |  |  |  |  | Civil Crew [560 h] | 19,131 | 19,131 | B04 | 01 | 01 | 04 | 001 |
| B4.WTP.RJ.CV.007 |  | Membrane Isolation Work | 5d | 2024-05-23 A | 2024-05-29 A | B4.WTP.RJ.CV.005 | 100% |  |  |  |  | Civil Crew [200 h] | 8,116 | 8,116 | B04 | 01 | 01 | 04 | 001 |
| B4.WTP.RJ.CV.006 |  | Backfilling Work | 10d | 2024-05-29 A | 2024-06-10 A | B4.WTP.RJ.CV.007 | 100% |  |  |  |  | Civil Crew; Equipment [80 h] | 8,116 | 8,116 | B04 | 01 | 01 | 04 | 001 |
| B4.WTP.RJ.CV.008 |  | Epoxy Work | 14d | 2024-08-01 A | 2024-08-15 A | B4.WTP.RJ.CV.006 | 100% | 2024-07-27 | 2024-08-12 |  |  | Civil Crew [224 h] | 8,406 | 8,406 | B04 | 01 | 01 | 04 | 001 |

Notes:
- B4.WTP.EQ.ELE.009: Expenses: (New Expense Item) 15363
- B4.WTP.EQ.ELE.014: Expenses: (New Expense Item) 15363
- B4.WTP.EQ.ELE.015: Expenses: (New Expense Item) 15363
- B4.WTP.EQ.ELE.001: Expenses: (New Expense Item) 210736
- B4.WTP.EQ.ELE.003: Expenses: (New Expense Item) 21161
- B4.WTP.EQ.ELE.004: Expenses: (New Expense Item) 21161
- B4.WTP.EQ.ELE.005: Expenses: (New Expense Item) 14494
- B4.WTP.EQ.ELE.006: Expenses: (New Expense Item) 73627
- B4.WTP.EQ.ELE.008: Expenses: (New Expense Item) 123195
- B4.WTP.EQ.ELE.010: Expenses: (New Expense Item) 14494
- B4.WTP.EQ.ELE.011: Expenses: (New Expense Item) 14494
- B4.WTP.EQ.ELE.012: Expenses: (New Expense Item) 11595
- B4.WTP.EQ.ELE.013: Expenses: (New Expense Item) 46089
- B4.WTP.EQ.ELE.007: Expenses: (New Expense Item) 157979
- B4.WTP.EQ.ELE.002: Expenses: (New Expense Item) 56525
- B4.WTP.RJ.CV.001: Expenses: (New Expense Item) 12175
- B4.WTP.RJ.CV.002: Expenses: (New Expense Item) 13914
- B4.WTP.RJ.CV.003: Expenses: (New Expense Item) 24059
- B4.WTP.RJ.CV.004: Expenses: (New Expense Item) 22030
- B4.WTP.RJ.CV.005: Expenses: (New Expense Item) 19131
- B4.WTP.RJ.CV.007: Expenses: (New Expense Item) 8116
- B4.WTP.RJ.CV.006: Expenses: (New Expense Item) 8116
- B4.WTP.RJ.CV.008: Expenses: (New Expense Item) 8406

| ID | WBS | Activity | Duration | Start | Finish | Predecessors | Complete | Remaining | Planned start | Planned finish | Total float | Free float | Resources | Cost | Actual cost | 01.B.O.Q Items | 02.Scope | 04.Discipline | 05.EPS | 03.System |
| --- | --- | --- | --- | --- | --- | --- | --- | --- | --- | --- | --- | --- | --- | --- | --- | --- | --- | --- | --- | --- |
|  | 2 | **Internal Pipes Work** |  | 2024-08-10 | 2024-11-11 |  |  |  |  |  |  |  |  |  |  |  |  |  |  |  |
| B4.WTP.IP.CV.001 |  | Excavation Work Until The Required Depth Is Reached | 20d | 2024-08-10 A | 2024-11-10 | B4.WTP.EQ.CV.004 | 90% | 20d | 2024-09-26 | 2024-10-19 | 95d | 0d | Civil Crew [160 h]; Equipment [160 h] | 4,348 | 3,913.2 | B04 | 01 | 01 | 04 | 001 |
| B4.WTP.IP.CV.002 |  | Leveling The Bottom Of The Excavation | 10d | 2024-08-13 A | 2024-10-29 | B4.WTP.IP.CV.001 SS+2d | 90% | 10d | 2024-09-21 | 2024-10-02 | 95d | 0d | Civil Crew [160 h] | 4,348 | 3,913.2 | B04 | 01 | 01 | 04 | 001 |
| B4.WTP.IP.CV.003 |  | Sand Backfilling | 4d | 2024-08-14 A | 2024-10-22 | B4.WTP.IP.CV.004 SS+2d | 90% | 4d | 2024-09-26 | 2024-09-30 | 95d | 0d | Civil Crew [32 h]; Equipment [32 h] | 4,348 | 3,913.2 | B04 | 01 | 01 | 04 | 001 |
| B4.WTP.IP.CV.004 |  | Install Pipes | 21d | 2024-08-15 A | 2024-11-11 | B4.WTP.IP.CV.002 SS+2d | 90% | 21d | 2024-09-24 | 2024-10-17 | 95d | 0d | Mechanical Crew [1344 h] | 12,175 | 10,957.5 | B04 | 01 | 03 | 04 | 001 |
| B4.WTP.IP.CV.005 |  | Water Pressure Test | 21d | 2024-08-19 A | 2024-11-11 | B4.WTP.IP.CV.003 SS+3d | 90% | 21d | 2024-08-19 | 2024-09-11 | 95d | 0d | Mechanical Crew [504 h] | 2,899 | 2,609.1 | B04 | 01 | 03 | 04 | 001 |
| B4.WTP.IP.CV.006 |  | Backfilling Work Until The Final Level | 7d | 2024-09-14 A | 2024-10-26 | B4.WTP.IP.CV.005 SS+5d | 90% | 7d | 2024-09-14 | 2024-09-21 | 139d |  | Civil Crew [56 h]; Equipment [56 h] | 870 | 783 | B04 | 01 | 01 | 04 | 001 |
|  | 2 | **B05-Product Water Storage Tank** |  | 2024-03-17 | 2024-10-29 |  |  |  |  |  |  |  |  |  |  |  |  |  |  |  |
|  | 1 | **Civil Works** |  | 2024-03-17 | 2024-10-29 |  |  |  |  |  |  |  |  |  |  |  |  |  |  |  |
| B5.WTP.PRO.CV.001 |  | Excavation Work Until The Required Depth Is Reached | 7d | 2024-03-17 A | 2024-03-30 A | B1.SD.WTP.CV.001 SS+50d | 100% |  |  |  |  |  | Civil Crew [56 h]; Equipment [56 h] | 56,352 | 56,352 | B05 | 01 | 01 | 04 | 001 |
| B5.WTP.PRO.CV.002 |  | Plain Concrete Footing Works, Formwork And Casting | 4d | 2024-03-31 A | 2024-04-06 A | B5.WTP.PRO.CV.001 | 100% |  |  |  |  |  | Civil Crew [160 h] | 56,352 | 56,352 | B05 | 01 | 01 | 04 | 001 |
| B5.WTP.PRO.CV.003 |  | Reinforcement Concrete Footing Works, Formwork , Steel Work , And Casting | 12d | 2024-04-06 A | 2024-04-27 A | B5.WTP.PRO.CV.002 | 100% |  |  |  |  |  | Civil Crew [864 h] | 225,409 | 225,409 | B05 | 01 | 01 | 04 | 001 |
| B5.WTP.PRO.CV.004 |  | Bitumen | 3d | 2024-04-27 A | 2024-04-30 A | B5.WTP.PRO.CV.003 | 100% |  |  |  |  |  | Civil Crew [144 h] | 22,541 | 22,541 | B05 | 01 | 01 | 04 | 001 |
| B5.WTP.PRO.CV.005 |  | Epoxy | 10d | 2024-10-19 | 2024-10-29 | B5.WTP.PRO.MEC.002 |  |  |  |  | 106d |  | Civil Crew [480 h] | 22,541 |  | B05 | 01 | 01 | 04 | 001 |
|  | 2 | **Mechanical work** |  | 2024-06-29 | 2024-10-26 |  |  |  |  |  |  |  |  |  |  |  |  |  |  |  |
| B5.WTP.PRO.MEC.001 |  | Install GLS Wall Sheets | 24d | 2024-06-29 A | 2024-07-25 A | B5.WTP.PRO.CV.004, B5.WTP.PRO.MEC.001.03 | 100% |  |  |  |  |  | Mechanical Crew [1000 h]; Equipment [200 h] | 360,654 | 360,654 | B05 | 01 | 03 | 04 | 001 |
| B5.WTP.PRO.MEC.002 |  | Install GLS Roof Doom | 36d | 2024-07-01 A | 2024-08-15 A | B5.WTP.PRO.MEC.001 FF, B5.WTP.PRO.MEC.002.03 | 100% |  | 2024-06-30 | 2024-08-11 |  |  | Mechanical Crew [800 h]; Equipment [160 h] | 304,302 | 304,302 | B05 | 01 | 03 | 04 | 001 |
| B5.WTP.PRO.MEC.003 |  | Install Piping, VaLves & Accessories & Level Control | 7d | 2024-10-19 | 2024-10-26 | B5.WTP.PRO.MEC.002, B5.WTP.PRO.MEC.003.03 |  |  |  |  | 139d |  | Mechanical Crew [168 h]; Equipment [56 h] | 22,541 |  | B05 | 01 | 03 | 04 | 001 |
|  | 3 | **B06-Water Lifting Pumps** |  | 2024-10-19 | 2024-11-30 |  |  |  |  |  |  |  |  |  |  |  |  |  |  |  |
|  | 1 | **Mechanical work** |  | 2024-10-19 | 2024-11-04 |  |  |  |  |  |  |  |  |  |  |  |  |  |  |  |
| B6.WTP.WLF.MEC.001 |  | Install Pumps | 10d | 2024-10-19 | 2024-10-29 | B6.WTP.WLF.MEC.001.03 |  |  |  |  | 94d | 0d | Mechanical Crew [240 h] | 34,934 |  | B06 | 01 | 03 | 04 | 001 |
| B6.WTP.WLF.MEC.002 |  | Install Piping, VaLves & Accessories | 5d | 2024-10-30 | 2024-11-04 | B6.WTP.WLF.MEC.001, B6.WTP.WLF.MEC.002.03 |  |  |  |  | 94d | 15d | Mechanical Crew [120 h] | 7,486 |  | B06 | 01 | 03 | 04 | 001 |
|  | 2 | **Electrical Work** |  | 2024-11-23 | 2024-11-30 |  |  |  |  |  |  |  |  |  |  |  |  |  |  |  |
| B6.WTP.WLF.ELE.001 |  | Install Cables & Control Panels | 7d | 2024-11-23 | 2024-11-30 | B6.WTP.WLF.MEC.002, B6.WTP.WLF.ELE.001.03, B1.SD.WTP.ELE.001 |  |  |  |  | 79d |  | Electrical Crew [280 h] | 4,991 |  | B06 | 01 | 04 | 04 | 001 |

Notes:
- B4.WTP.IP.CV.001: Expenses: (New Expense Item) 4348
- B4.WTP.IP.CV.002: Expenses: (New Expense Item) 4348
- B4.WTP.IP.CV.003: Expenses: (New Expense Item) 4348
- B4.WTP.IP.CV.004: Expenses: (New Expense Item) 12175
- B4.WTP.IP.CV.005: Expenses: (New Expense Item) 2899
- B4.WTP.IP.CV.006: Expenses: (New Expense Item) 870
- B5.WTP.PRO.CV.001: Expenses: (New Expense Item) 56352
- B5.WTP.PRO.CV.002: Expenses: (New Expense Item) 56352
- B5.WTP.PRO.CV.003: Expenses: (New Expense Item) 225409
- B5.WTP.PRO.CV.004: Expenses: (New Expense Item) 22541
- B5.WTP.PRO.CV.005: Expenses: (New Expense Item) 22541
- B5.WTP.PRO.MEC.001: Expenses: (New Expense Item) 360654
- B5.WTP.PRO.MEC.002: Expenses: (New Expense Item) 304302
- B5.WTP.PRO.MEC.003: Expenses: (New Expense Item) 22541
- B6.WTP.WLF.MEC.001: Expenses: (New Expense Item) 34934
- B6.WTP.WLF.MEC.002: Expenses: (New Expense Item) 7486
- B6.WTP.WLF.ELE.001: Expenses: (New Expense Item) 4991

| ID | WBS | Activity | Duration | Start | Finish | Predecessors | Complete | Planned start | Planned finish | Total float | Free float | Resources | Cost | Actual cost | 01.B.O.Q Items | 02.Scope | 04.Discipline | 05.EPS | 03.System |
| --- | --- | --- | --- | --- | --- | --- | --- | --- | --- | --- | --- | --- | --- | --- | --- | --- | --- | --- | --- |
|  | 4 | **B07-Tanker Filling Station With Two Terminal Feeding Points** |  | 2024-12-21 | 2025-01-08 |  |  |  |  |  |  |  |  |  |  |  |  |  |  |
|  | 1 | **Civil Works** |  | 2024-12-21 | 2024-12-28 |  |  |  |  |  |  |  |  |  |  |  |  |  |  |
| B7.WTP.TFS.CV.001 |  | Filling Station R.C Concrete Foundation | 7d | 2024-12-21 | 2024-12-28 | B8.WTP.CP.CV.001 |  |  |  | 45d | 0d | Civil Crew [144 h] | 35,521 |  | B07 | 01 | 01 | 04 | 001 |
|  | 2 | **Mechanical work** |  | 2024-12-29 | 2025-01-08 |  |  |  |  |  |  |  |  |  |  |  |  |  |  |
| B7.WTP.TFS.MEC.001 |  | Install Steel Pipes, VaLves & Accessories | 10d | 2024-12-29 | 2025-01-08 | B7.WTP.TFS.CV.001, B7.WTP.TFS.MEC.001.03 |  |  |  | 45d |  | Mechanical Crew [320 h] | 39,467 |  | B07 | 01 | 03 | 04 | 001 |
|  | 5 | **B08-Concrete Pavement For Water Tankers** |  | 2024-12-18 | 2025-01-07 |  |  |  |  |  |  |  |  |  |  |  |  |  |  |
|  | 1 | **Civil Works** |  | 2024-12-18 | 2025-01-07 |  |  |  |  |  |  |  |  |  |  |  |  |  |  |
| B8.WTP.CP.CV.001 |  | Excavation Or Backfilling Works With Leveling And Compaction | 2d | 2024-12-18 | 2024-12-19 | B4.WTP.EQ.ARC.002 |  |  |  | 45d | 0d | Civil Crew [16 h]; Equipment [16 h] | 10,573 |  | B08 | 01 | 01 | 04 | 001 |
| B8.WTP.CP.CV.002 |  | Casting Of Concrete Pavement | 12d | 2024-12-21 | 2025-01-02 | B8.WTP.CP.CV.001 |  |  |  | 46d | 0d | Civil Crew [384 h] | 21,145 |  | B08 | 01 | 01 | 04 | 001 |
| B8.WTP.CP.CV.003 |  | Epoxy Work | 4d | 2025-01-04 | 2025-01-07 | B8.WTP.CP.CV.002 |  |  |  | 46d |  | Civil Crew [64 h] | 3,524 |  | B08 | 01 | 01 | 04 | 001 |
|  | 7 | **B10-Backup Ggenerators (WTP)** |  | 2025-01-01 | 2025-01-18 |  |  |  |  |  |  |  |  |  |  |  |  |  |  |
|  | 1 | **Electrical Work** |  | 2025-01-01 | 2025-01-18 |  |  |  |  |  |  |  |  |  |  |  |  |  |  |
| B10.WTP.GEN.ELE.001 |  | Backup Generators, ATS & MDP | 15d | 2025-01-01 | 2025-01-18 | B4.WTP.EQ.ARC.004, B10.WTP.GEN.ELE.001.03, B1.SD.WTP.ELE.001 |  |  |  | 37d |  | Electrical Crew [480 h]; Equipment [120 h] | 367,195 |  | B10 | 01 | 04 | 04 | 001 |
|  | 8 | **B11-Package Sub Station (WTP)** |  | 2024-08-01 | 2024-09-26 |  |  |  |  |  |  |  |  |  |  |  |  |  |  |
|  | 1 | **Civil Works** |  | 2024-08-01 | 2024-08-15 |  |  |  |  |  |  |  |  |  |  |  |  |  |  |
| B11.WTP.SUB.CV.001 |  | R.C Concrete Foundation | 32d | 2024-08-01 A | 2024-08-15 A | B4.WTP.EQ.CV.005 | 100% | 2024-07-10 | 2024-08-17 |  |  | Civil Crew [600 h] | 12,726 | 12,726 | B11 | 01 | 01 | 04 | 001 |
|  | 2 | **Electrical Work** |  | 2024-09-26 | 2024-09-26 |  |  |  |  |  |  |  |  |  |  |  |  |  |  |
| B11.WTP.SUB.ELE.001 |  | Install For The Package Sub Station (WTP) | 15d | 2024-09-26 A | 2024-09-26 A | B11.WTP.SUB.CV.001, B11.WTP.SUB.ELE.001.03, B1.SD.WTP.ELE.001 | 100% | 2024-09-28 | 2024-10-14 |  |  | Electrical Crew [480 h]; Equipment [120 h] | 108,171 | 108,171 | B11 | 01 | 04 | 04 | 001 |
|  | 9 | **B12-MV CABLE For RMU LOOP** |  | 2024-10-19 | 2024-11-26 |  |  |  |  |  |  |  |  |  |  |  |  |  |  |
|  | 1 | **Civil Works** |  | 2024-10-19 | 2024-11-26 |  |  |  |  |  |  |  |  |  |  |  |  |  |  |
| B12.WTP.RMU.CV.001 |  | Excavation Work Until The Required Depth Is Reached | 2d | 2024-10-19 | 2024-10-20 | B11.WTP.SUB.ELE.001 |  |  |  | 107d | 0d | Civil Crew [16 h]; Equipment [16 h] | 4,841 |  | B12 | 01 | 01 | 04 | 001 |
| B12.WTP.RMU.CV.002 |  | Leveling The Bottom Of The Excavation | 1d | 2024-10-21 | 2024-10-21 | B12.WTP.RMU.CV.001 |  |  |  | 107d | 0d | Civil Crew [16 h] | 1,452 |  | B12 | 01 | 01 | 04 | 001 |
| B12.WTP.RMU.CV.003 |  | Bottom Soil Spreading And Compaction Work Under The Cables | 2d | 2024-10-22 | 2024-10-23 | B12.WTP.RMU.CV.002 |  |  |  | 107d | 25d | Civil Crew [16 h]; Equipment [16 h] | 2,420 |  | B12 | 01 | 01 | 04 | 001 |
| B12.WTP.RMU.CV.004 |  | Backfilling Works Over Cables | 2d | 2024-11-25 | 2024-11-26 | B12.WTP.RMUELE.001 |  |  |  | 82d |  | Civil Crew [16 h]; Equipment [16 h] | 2,420 |  | B12 | 01 | 01 | 04 | 001 |

Notes:
- B7.WTP.TFS.CV.001: Expenses: (New Expense Item) 35521
- B7.WTP.TFS.MEC.001: Expenses: (New Expense Item) 39467
- B8.WTP.CP.CV.001: Expenses: (New Expense Item) 10573
- B8.WTP.CP.CV.002: Expenses: (New Expense Item) 21145
- B8.WTP.CP.CV.003: Expenses: (New Expense Item) 3524
- B10.WTP.GEN.ELE.001: Expenses: (New Expense Item) 367195
- B11.WTP.SUB.CV.001: Expenses: (New Expense Item) 12726
- B11.WTP.SUB.ELE.001: Expenses: (New Expense Item) 108171
- B12.WTP.RMU.CV.001: Expenses: (New Expense Item) 4841
- B12.WTP.RMU.CV.002: Expenses: (New Expense Item) 1452
- B12.WTP.RMU.CV.003: Expenses: (New Expense Item) 2420
- B12.WTP.RMU.CV.004: Expenses: (New Expense Item) 2420

| ID | WBS | Activity | Duration | Start | Finish | Predecessors | Total float | Free float | Resources | Cost | 01.B.O.Q Items | 02.Scope | 04.Discipline | 05.EPS | 03.System |
| --- | --- | --- | --- | --- | --- | --- | --- | --- | --- | --- | --- | --- | --- | --- | --- |
|  | 2 | **Electrical Work** |  | 2024-11-23 | 2024-11-24 |  |  |  |  |  |  |  |  |  |  |
| B12.WTP.RMUELE.001 |  | Install Cables | 2d | 2024-11-23 | 2024-11-24 | B12.WTP.RMU.CV.003, B12.WTP.RMU.ELE.001.03, B1.SD.WTP.ELE.001 | 82d | 0d | Electrical Crew [48 h] | 34,854 | B12 | 01 | 04 | 04 | 001 |
|  | 10 | **B13-LV CABLE TO ATS PANEL** |  | 2024-12-18 | 2025-02-06 |  |  |  |  |  |  |  |  |  |  |
|  | 1 | **Civil Works** |  | 2024-12-18 | 2025-02-06 |  |  |  |  |  |  |  |  |  |  |
| B13.WTP.ATS.CV.001 |  | Excavation Work Until The Required Depth Is Reached | 25d | 2024-12-18 | 2025-01-15 | B11.WTP.SUB.ELE.001, B4.WTP.EQ.ARC.002 | 20d | 0d | Civil Crew [200 h]; Equipment [200 h] | 50,655 | B13 | 01 | 01 | 04 | 001 |
| B13.WTP.ATS.CV.002 |  | Leveling The Bottom Of The Excavation | 2d | 2025-01-16 | 2025-01-18 | B13.WTP.ATS.CV.001 | 20d | 0d | Civil Crew [112 h] | 15,196 | B13 | 01 | 01 | 04 | 001 |
| B13.WTP.ATS.CV.003 |  | Bottom Soil Spreading And Compaction Work Under The Cables | 5d | 2025-01-19 | 2025-01-23 | B13.WTP.ATS.CV.002 | 20d | 0d | Civil Crew [200 h]; Equipment [40 h] | 25,327 | B13 | 01 | 01 | 04 | 001 |
| B13.WTP.ATS.CV.004 |  | Backfilling Works Over Cables | 5d | 2025-02-02 | 2025-02-06 | B13.WTP.ATS.ELE.001 | 20d |  | Civil Crew [200 h]; Equipment [40 h] | 25,327 | B13 | 01 | 01 | 04 | 001 |
|  | 2 | **Electrical Work** |  | 2025-01-25 | 2025-02-01 |  |  |  |  |  |  |  |  |  |  |
| B13.WTP.ATS.ELE.001 |  | Install Cables | 7d | 2025-01-25 | 2025-02-01 | B13.WTP.ATS.CV.003, B13.WTP.ATS.ELE.001.03, B1.SD.WTP.ELE.001 | 20d | 0d | Electrical Crew [392 h] | 364,713 | B13 | 01 | 04 | 04 | 001 |
|  | 16 | **B47-Hand Held Water Quality Instruments WTP** |  | 2024-11-13 | 2024-11-14 |  |  |  |  |  |  |  |  |  |  |
|  | 1 | **Mechanical work** |  | 2024-11-13 | 2024-11-14 |  |  |  |  |  |  |  |  |  |  |
| B47.WTP.INS.MEC.001 |  | Install For Hand Held Water Quality Instruments For Water & Sewage | 1d | 2024-11-13 | 2024-11-14 | B47.WTP.INS.MEC.001.03 | 122.75d |  | Mechanical Crew [8 h] | 30,224 | B47 | 01 | 03 | 04 | 001 |
|  | 13 | **B50-Fence Work** |  | 2024-12-18 | 2025-04-07 |  |  |  |  |  |  |  |  |  |  |
|  | 1 | **Civil Works** |  | 2024-12-18 | 2025-02-04 |  |  |  |  |  |  |  |  |  |  |
| B50.WTP.FEN.CV.001 |  | Excavation Work Until The Required Depth Is Reached | 14d | 2024-12-18 | 2025-01-02 | B4.WTP.EQ.ARC.002 | 12d | 0d | Civil Crew [160 h]; Equipment [80 h] | 18,644 | B50 | 01 | 01 | 04 | 001 |
| B50.WTP.FEN.CV.002 |  | Leveling The Bottom Of The Excavation | 2d | 2025-01-04 | 2025-01-05 | B50.WTP.FEN.CV.001 | 12d | 0d | Civil Crew [32 h] | 6,215 | B50 | 01 | 01 | 04 | 001 |
| B50.WTP.FEN.CV.003 |  | Plain Concrete Footing Works, Formwork And Casting | 6d | 2025-01-06 | 2025-01-12 | B50.WTP.FEN.CV.002 | 12d | 0d | Civil Crew [240 h] | 12,429 | B50 | 01 | 01 | 04 | 001 |
| B50.WTP.FEN.CV.004 |  | Reinforcement Concrete Footing Works, Formwork , Steel Work , And Casting | 10d | 2025-01-13 | 2025-01-23 | B50.WTP.FEN.CV.003 | 12d | 0d | Civil Crew [960 h] | 43,502 | B50 | 01 | 01 | 04 | 001 |
| B50.WTP.FEN.CV.005 |  | Reinforcement Concrete For Columns Works, Formwork , Steel Work , And Casting | 10d | 2025-01-25 | 2025-02-04 | B50.WTP.FEN.CV.004 | 12d | 0d | Civil Crew [960 h] | 43,502 | B50 | 01 | 01 | 04 | 001 |
|  | 2 | **Architectural work** |  | 2025-02-05 | 2025-04-07 |  |  |  |  |  |  |  |  |  |  |
| B50.WTP.FEN.ARC.001 |  | Block Work | 14d | 2025-02-05 | 2025-02-20 | B50.WTP.FEN.CV.005, B1.SD.WTP.ARC.001 | 12d | 0d | Architectural Crew [800 h] | 9,322 | B50 | 01 | 02 | 04 | 001 |
| B50.WTP.FEN.ARC.002 |  | Plastering Work | 14d | 2025-02-23 | 2025-03-13 | B50.WTP.FEN.ARC.001 | 12d | 0d | Architectural Crew [800 h] | 9,322 | B50 | 01 | 02 | 04 | 001 |
| B50.WTP.FEN.ARC.003 |  | Painting Work | 12d | 2025-03-13 | 2025-04-07 | B50.WTP.FEN.ARC.002 | 12d |  | Architectural Crew [800 h] | 12,429 | B50 | 01 | 02 | 04 | 001 |

Notes:
- B12.WTP.RMUELE.001: Expenses: (New Expense Item) 34854
- B13.WTP.ATS.CV.001: Expenses: (New Expense Item) 50655
- B13.WTP.ATS.CV.002: Expenses: (New Expense Item) 15196
- B13.WTP.ATS.CV.003: Expenses: (New Expense Item) 25327
- B13.WTP.ATS.CV.004: Expenses: (New Expense Item) 25327
- B13.WTP.ATS.ELE.001: Expenses: (New Expense Item) 364713
- B47.WTP.INS.MEC.001: Expenses: (New Expense Item) 30224
- B50.WTP.FEN.CV.001: Expenses: (New Expense Item) 18644
- B50.WTP.FEN.CV.002: Expenses: (New Expense Item) 6215
- B50.WTP.FEN.CV.003: Expenses: (New Expense Item) 12429
- B50.WTP.FEN.CV.004: Expenses: (New Expense Item) 43502
- B50.WTP.FEN.CV.005: Expenses: (New Expense Item) 43502
- B50.WTP.FEN.ARC.001: Expenses: (New Expense Item) 9322
- B50.WTP.FEN.ARC.002: Expenses: (New Expense Item) 9322
- B50.WTP.FEN.ARC.003: Expenses: (New Expense Item) 12429

| ID | WBS | Activity | Duration | Start | Finish | Predecessors | Complete | Planned start | Planned finish | Total float | Free float | Resources | Cost | Actual cost | 01.B.O.Q Items | 02.Scope | 04.Discipline | 05.EPS | 03.System |
| --- | --- | --- | --- | --- | --- | --- | --- | --- | --- | --- | --- | --- | --- | --- | --- | --- | --- | --- | --- |
|  | 15 | **B54-New Pumps from Row Tank** |  | 2024-12-17 | 2025-04-21 |  |  |  |  |  |  |  |  |  |  |  |  |  |  |
|  | 1 | **Mechanical work** |  | 2024-12-17 | 2025-04-06 |  |  |  |  |  |  |  |  |  |  |  |  |  |  |
| B54.WTP.ROW.MEC.001 |  | Preparing Studies | 15d | 2024-12-17 | 2025-01-02 | B54.WTP.ROW.MEC.002.01 |  |  |  | 63d | 57d | Mechanical Crew | 27,095 |  | B54 | 01 | 03 | 04 | 001 |
| B54.WTP.ROW.MEC.002 |  | Install Pump | 7d | 2025-03-16 | 2025-03-26 | B4.WTP.EQ.ARC.004, B54.WTP.ROW.MEC.001, B54.WTP.ROW.MEC.002.03 |  |  |  | 6d | 0d | Mechanical Crew [224 h] | 43,352 |  | B54 | 01 | 03 | 04 | 001 |
| B54.WTP.ROW.MEC.003 |  | Install Pipes 200Mm. | 10d | 2025-03-16 | 2025-04-06 | B54.WTP.ROW.MEC.002 SS, B54.WTP.ROW.MEC.003.03 |  |  |  | 6d |  | Mechanical Crew [384 h] | 37,933 |  | B54 | 01 | 03 | 04 | 001 |
|  | 2 | **Electrical Work** |  | 2025-04-13 | 2025-04-21 |  |  |  |  |  |  |  |  |  |  |  |  |  |  |
| B54.WTP.ROW.ELE.001 |  | Install Panel | 7d | 2025-04-13 | 2025-04-21 | B54.WTP.ROW.MEC.003, B54.WTP.ROW.ELE.001.03, B1.SD.WTP.ELE.001 |  |  |  | 0d |  | Electrical Crew [336 h] | 12,042 |  | B54 | 01 | 04 | 04 | 001 |
|  | 18 | **Evaporation Ponnd** |  | 2024-04-23 | 2024-11-21 |  |  |  |  |  |  |  |  |  |  |  |  |  |  |
|  | 6 | **B09-New Reject Water Disposal System (Evaporation Pond)** |  | 2024-04-23 | 2024-11-21 |  |  |  |  |  |  |  |  |  |  |  |  |  |  |
|  | 1 | **Civil Works** |  | 2024-04-23 | 2024-11-21 |  |  |  |  |  |  |  |  |  |  |  |  |  |  |
| B9.WTP.EVP.CV.001 |  | Excavation Works With Leveling And Compaction | 44.75d | 2024-04-23 A | 2024-06-18 A | B4.WTP.RJ.CV.001 | 100% | 2024-04-23 | 2024-06-13 |  |  | Civil Crew [358 h]; Equipment [1790 h] | 833,762 | 833,762 | B09 | 01 | 01 | 04 | 001 |
| B9.WTP.EVP.CV.004 |  | Complete Backfilling Work Until The Final Level | 4d | 2024-05-22 A | 2024-05-27 A | B9.WTP.EVP.CV.001 | 100% |  |  |  |  | Civil Crew [32 h]; Equipment [160 h] | 31,266 | 31,266 | B09 | 01 | 01 | 04 | 001 |
| B9.WTP.EVP.CV.002 |  | Install Lining Membrane Supply | 38d | 2024-06-30 A | 2024-08-12 A | B9.WTP.EVP.CV.004 | 100% | 2024-06-27 | 2024-08-11 |  |  | Civil Crew [672 h] | 416,881 | 416,881 | B09 | 01 | 01 | 04 | 001 |
| B9.WTP.EVP.CV.003 |  | Install Fence | 30d | 2024-10-19 | 2024-11-21 | B9.WTP.EVP.CV.002 |  |  |  | 86d |  | Civil Crew [1440 h] | 208,441 |  | B09 | 01 | 01 | 04 | 001 |
|  | 2 | **Mechanical work** |  | 2024-04-23 | 2024-10-20 |  |  |  |  |  |  |  |  |  |  |  |  |  |  |
| B9.WTP.EVP.MEC.001 |  | Excavation Work Until The Required Depth Is Reached | 15d | 2024-04-23 A | 2024-05-11 A | B9.WTP.EVP.CV.001 SS | 100% |  |  |  |  | Mechanical Crew [120 h]; Equipment [120 h] | 46,899 | 46,899 | B09 | 01 | 03 | 04 | 001 |
| B9.WTP.EVP.MEC.002 |  | Leveling The Bottom Of The Excavation | 3d | 2024-05-11 A | 2024-05-14 A | B9.WTP.EVP.MEC.001 | 100% |  |  |  |  | Mechanical Crew [48 h] | 9,380 | 9,380 | B09 | 01 | 03 | 04 | 001 |
| B9.WTP.EVP.MEC.003 |  | Bottom Soil Spreading And Compaction Work Under The Pipes | 5d | 2024-05-14 A | 2024-05-20 A | B9.WTP.EVP.MEC.002 | 100% |  |  |  |  | Mechanical Crew [40 h]; Equipment [40 h] | 15,633 | 15,633 | B09 | 01 | 03 | 04 | 001 |
| B9.WTP.EVP.MEC.004 |  | Install Pipes | 37.85d | 2024-05-22 A | 2024-07-13 A | B9.WTP.EVP.MEC.003, B9.WTP.EVP.MEC.004.03 | 100% |  |  |  |  | Mechanical Crew [474 h] | 178,217 | 178,217 | B09 | 01 | 03 | 04 | 001 |
| B9.WTP.EVP.MEC.005 |  | Water Pressure Test | 28.9d | 2024-07-18 A | 2024-08-15 A | B9.WTP.EVP.MEC.004 | 100% | 2024-07-23 | 2024-08-26 |  |  | Mechanical Crew [160 h] | 15,633 | 15,633 | B09 | 01 | 03 | 04 | 001 |
| B9.WTP.EVP.MEC.008 |  | Install Pumps | 2d | 2024-08-24 A | 2024-08-25 A | B4.WTP.RJ.CV.008, B9.WTP.EVP.MEC.008.03 | 100% |  |  |  |  | Mechanical Crew [64 h] | 62,532 | 62,532 | B09 | 01 | 03 | 04 | 001 |
| B9.WTP.EVP.MEC.006 |  | Install Gate VaLves & Accessories | 2d | 2024-10-19 | 2024-10-20 | B9.WTP.EVP.MEC.005, B9.WTP.EVP.MEC.006.03 |  |  |  | 114d |  | Mechanical Crew [64 h] | 15,633 |  | B09 | 01 | 03 | 04 | 001 |
| B9.WTP.EVP.MEC.007 |  | Install Pumps VaLves & Accessories | 2d | 2024-10-19 | 2024-10-20 | B9.WTP.EVP.MEC.008, B9.WTP.EVP.MEC.007.03 |  |  |  | 144d |  | Mechanical Crew [64 h] | 145,908 |  | B09 | 01 | 03 | 04 | 001 |
|  | 19 | **Deep Well** |  | 2024-03-02 | 2025-03-04 |  |  |  |  |  |  |  |  |  |  |  |  |  |  |
|  | 12 | **B49-New Deep Well** |  | 2024-03-02 | 2025-01-18 |  |  |  |  |  |  |  |  |  |  |  |  |  |  |
|  | 1 | **Well Pipeline** |  | 2024-03-02 | 2024-06-18 |  |  |  |  |  |  |  |  |  |  |  |  |  |  |
| B49.WTP.WEL.CV.001 |  | Excavation Work Until The Required Depth Is Reached | 17.5d | 2024-03-02 A | 2024-03-27 A | B1.DET.D.WTP.CV.001 | 100% | 2024-03-02 | 2024-03-26 |  |  | Civil Crew [280 h]; Equipment [140 h] | 41,578 | 41,578 | B49 | 01 | 01 | 04 | 001 |
| B49.WTP.WEL.CV.005 |  | Complete Backfilling Work Until The Final Level | 10d | 2024-05-18 A | 2024-05-29 A | B49.WTP.WEL.CV.004 | 100% |  |  |  |  | Civil Crew [160 h]; Equipment [80 h] | 27,719 | 27,719 | B49 | 01 | 01 | 04 | 001 |
| B49.WTP.WEL.CV.002 |  | Leveling The Bottom Of The Excavation | 21.75d | 2024-05-20 A | 2024-06-18 A | B49.WTP.WEL.CV.001 | 100% | 2024-05-20 | 2024-06-13 |  |  | Civil Crew [348 h] | 8,316 | 8,316 | B49 | 01 | 01 | 04 | 001 |
| B49.WTP.WEL.CV.003 |  | Bottom Soil Spreading And Compaction Work Under The Pipes | 5d | 2024-05-25 A | 2024-05-30 A | B49.WTP.WEL.CV.002 | 100% |  |  |  |  | Civil Crew [80 h]; Equipment [40 h] | 13,859 | 13,859 | B49 | 01 | 01 | 04 | 001 |
| B49.WTP.WEL.MEC.004 |  | Install Pipes | 6d | 2024-05-30 A | 2024-06-06 A | B49.WTP.WEL.CV.003, B49.WTP.WEL.MEC.004.03 | 100% |  |  |  |  | Mechanical Crew [192 h]; Equipment [48 h] | 45,736 | 45,736 | B49 | 01 | 03 | 04 | 001 |
| B49.WTP.WEL.MEC.005 |  | Water Pressure Test | 5d | 2024-06-06 A | 2024-06-12 A | B49.WTP.WEL.MEC.004 | 100% |  |  |  |  | Mechanical Crew [120 h] | 13,859 | 13,859 | B49 | 01 | 03 | 04 | 001 |
| B49.WTP.WEL.CV.004 |  | Backfilling Works Over Pipes | 1.75d | 2024-06-12 A | 2024-06-18 A | B49.WTP.WEL.MEC.005 | 100% | 2024-06-12 | 2024-06-13 |  |  | Civil Crew [28 h]; Equipment [14 h] | 13,859 | 13,859 | B49 | 01 | 01 | 04 | 001 |

Notes:
- B54.WTP.ROW.MEC.001: Expenses: (New Expense Item) 27095
- B54.WTP.ROW.MEC.002: Expenses: (New Expense Item) 43352
- B54.WTP.ROW.MEC.003: Expenses: (New Expense Item) 37933
- B54.WTP.ROW.ELE.001: Expenses: (New Expense Item) 12042
- B9.WTP.EVP.CV.001: Expenses: (New Expense Item) 833762
- B9.WTP.EVP.CV.004: Expenses: (New Expense Item) 31266
- B9.WTP.EVP.CV.002: Expenses: (New Expense Item) 416881
- B9.WTP.EVP.CV.003: Expenses: (New Expense Item) 208441
- B9.WTP.EVP.MEC.001: Expenses: (New Expense Item) 46899
- B9.WTP.EVP.MEC.002: Expenses: (New Expense Item) 9380
- B9.WTP.EVP.MEC.003: Expenses: (New Expense Item) 15633
- B9.WTP.EVP.MEC.004: Expenses: (New Expense Item) 178217
- B9.WTP.EVP.MEC.005: Expenses: (New Expense Item) 15633
- B9.WTP.EVP.MEC.008: Expenses: (New Expense Item) 62532
- B9.WTP.EVP.MEC.006: Expenses: (New Expense Item) 15633
- B9.WTP.EVP.MEC.007: Expenses: (New Expense Item) 145908
- B49.WTP.WEL.CV.001: Expenses: (New Expense Item) 41578
- B49.WTP.WEL.CV.005: Expenses: (New Expense Item) 27719
- B49.WTP.WEL.CV.002: Expenses: (New Expense Item) 8316
- B49.WTP.WEL.CV.003: Expenses: (New Expense Item) 13859
- B49.WTP.WEL.MEC.004: Expenses: (New Expense Item) 45736
- B49.WTP.WEL.MEC.005: Expenses: (New Expense Item) 13859
- B49.WTP.WEL.CV.004: Expenses: (New Expense Item) 13859

| ID | WBS | Activity | Duration | Start | Finish | Predecessors | Total float | Free float | Resources | Cost | 01.B.O.Q Items | 02.Scope | 04.Discipline | 05.EPS | 03.System |
| --- | --- | --- | --- | --- | --- | --- | --- | --- | --- | --- | --- | --- | --- | --- | --- |
|  | 4 | **Deep Well** |  | 2024-10-19 | 2025-01-18 |  |  |  |  |  |  |  |  |  |  |
|  | 2 | **Mechanical work** |  | 2024-10-19 | 2025-01-18 |  |  |  |  |  |  |  |  |  |  |
| B49.WTP.WEL.MEC.001 |  | Excavation Of Well | 30d | 2024-10-19 | 2024-11-21 | B4.WTP.EQ.CV.005 | 45d | 27d | Mechanical Crew [1120 h]; Equipment [280 h] | 532,197 | B49 | 01 | 03 | 04 | 001 |
| B49.WTP.WEL.MEC.002 |  | Install SS Pipes | 15d | 2024-12-24 | 2025-01-09 | B49.WTP.WEL.MEC.001, B49.WTP.WEL.MEC.002.03 | 18d | 10d | Mechanical Crew [480 h]; Equipment [120 h] | 121,962 | B49 | 01 | 03 | 04 | 001 |
| B49.WTP.WEL.MEC.003 |  | Install For The Pump | 5d | 2025-01-05 | 2025-01-09 | B49.WTP.WEL.MEC.002 SS, B49.WTP.WEL.MEC.003.03 | 8d | 0d | Mechanical Crew [160 h]; Equipment [40 h] | 144,137 | B49 | 01 | 03 | 04 | 001 |
| B49.WTP.WEL.MEC.006 |  | Install Pipes, VaLves, Digital Flow Meter & Accessories | 7d | 2025-01-11 | 2025-01-18 | B49.WTP.WEL.MEC.003 | 37d |  | Mechanical Crew [224 h] | 45,736 | B49 | 01 | 03 | 04 | 001 |
|  | 3 | **Electrical Work** |  | 2025-01-01 | 2025-01-12 |  |  |  |  |  |  |  |  |  |  |
| B49.WTP.WEL.ELE.001 |  | Install Pipes, Cables & Control Panel | 10d | 2025-01-01 | 2025-01-12 | B49.WTP.WEL.MEC.003 FF, B49.WTP.WEL.ELE.001.03, B1.SD.WTP.ELE.001 | 6d | 0d | Electrical Crew [480 h] | 44,350 | B49 | 01 | 04 | 04 | 001 |
|  | 14 | **B53-New Well Pump WTP** |  | 2024-12-25 | 2025-03-04 |  |  |  |  |  |  |  |  |  |  |
|  | 1 | **Mechanical work** |  | 2024-12-25 | 2025-02-10 |  |  |  |  |  |  |  |  |  |  |
| B53.WTP.NWP.MEC.001 |  | Removal Of The Turbo Pump Form The Existing Well With Its Full Contents | 5d | 2024-12-25 | 2024-12-30 | B53.WTP.NWP.MEC.002.03 | 24d | 0d | Mechanical Crew [240 h]; Equipment [40 h] | 311,008 | B53 | 01 | 03 | 04 | 001 |
| B53.WTP.NWP.MEC.002 |  | Install SS Pipes | 15d | 2024-12-31 | 2025-01-16 | B53.WTP.NWP.MEC.001, B53.WTP.NWP.MEC.002.03 | 24d | 8d | Mechanical Crew [720 h]; Equipment [120 h] | 222,149 | B53 | 01 | 03 | 04 | 001 |
| B53.WTP.NWP.MEC.004 |  | Install Pump And VaLves | 4d | 2025-01-09 | 2025-01-13 | B53.WTP.NWP.MEC.002 SS, B53.WTP.NWP.MEC.004.03 | 16d |  | Mechanical Crew [192 h] | 222,149 | B53 | 01 | 03 | 04 | 001 |
| B53.WTP.NWP.MEC.003 |  | Install Fans | 4d | 2025-02-06 | 2025-02-10 | B53.WTP.NWP.MEC.004, B53.WTP.NWP.MEC.003.03 | 17d |  | Mechanical Crew [64 h] | 133,289 | B53 | 01 | 03 | 04 | 001 |
|  | 2 | **Electrical Work** |  | 2025-02-02 | 2025-03-04 |  |  |  |  |  |  |  |  |  |  |
| B53.WTP.NWP.ELE.001 |  | Install Cables | 20d | 2025-02-02 | 2025-02-25 | B53.WTP.NWP.MEC.004, B53.WTP.NWP.ELE.001.03, B1.SD.WTP.ELE.001 | 0d |  | Electrical Crew [1200 h] | 101,927 | B53 | 01 | 04 | 04 | 001 |
| B53.WTP.NWP.ELE.002 |  | Install Panel | 5d | 2025-02-26 | 2025-03-04 | B53.WTP.NWP.ELE.001, B53.WTP.NWP.ELE.002.03, B1.SD.WTP.ELE.001 | 0d |  | Electrical Crew [200 h] | 54,884 | B53 | 01 | 04 | 04 | 001 |
|  | 1 | **Water Network** |  | 2024-10-19 | 2024-12-03 |  |  |  |  |  |  |  |  |  |  |
|  | 11 | **B20-House Connections** |  | 2024-10-19 | 2024-12-03 |  |  |  |  |  |  |  |  |  |  |
|  | 1 | **Civil Works** |  | 2024-10-19 | 2024-12-03 |  |  |  |  |  |  |  |  |  |  |
| B20.WTP.HC.CV.001 |  | Excavation Work Until The Required Depth Is Reached | 15d | 2024-10-19 | 2024-11-04 | B25.STP.EQ.CV.006 FS+60d | 57d | 0d | Civil Crew [720 h]; Equipment [120 h] | 29,045 | B20 | 01 | 01 | 04 | 001 |
| B20.WTP.HC.CV.002 |  | Leveling The Bottom Of The Excavation | 5d | 2024-10-28 | 2024-11-02 | B20.WTP.HC.CV.001 SS+8d | 57d | 0d | Civil Crew [120 h] | 5,809 | B20 | 01 | 01 | 04 | 001 |
| B20.WTP.HC.CV.003 |  | Bottom Soil Spreading And Compaction Work Under The Pipes | 5d | 2024-10-30 | 2024-11-04 | B20.WTP.HC.CV.002 SS+2d | 57d | 0d | Civil Crew [240 h]; Equipment | 9,682 | B20 | 01 | 01 | 04 | 001 |
| B20.WTP.HC.CV.004 |  | Backfilling Works Over Pipes | 5d | 2024-11-28 | 2024-12-03 | B20.WTP.HC.MEC.002 | 76d |  | Civil Crew [240 h]; Equipment [40 h] | 19,364 | B20 | 01 | 01 | 04 | 001 |

Notes:
- B49.WTP.WEL.MEC.001: Expenses: (New Expense Item) 532197
- B49.WTP.WEL.MEC.002: Expenses: (New Expense Item) 121962
- B49.WTP.WEL.MEC.003: Expenses: (New Expense Item) 144137
- B49.WTP.WEL.MEC.006: Expenses: (New Expense Item) 45736
- B49.WTP.WEL.ELE.001: Expenses: (New Expense Item) 44350
- B53.WTP.NWP.MEC.001: Expenses: (New Expense Item) 311008
- B53.WTP.NWP.MEC.002: Expenses: (New Expense Item) 222149
- B53.WTP.NWP.MEC.004: Expenses: (New Expense Item) 222149
- B53.WTP.NWP.MEC.003: Expenses: (New Expense Item) 133289
- B53.WTP.NWP.ELE.001: Expenses: (New Expense Item) 101927
- B53.WTP.NWP.ELE.002: Expenses: (New Expense Item) 54884
- B20.WTP.HC.CV.001: Expenses: (New Expense Item) 29045
- B20.WTP.HC.CV.002: Expenses: (New Expense Item) 5809
- B20.WTP.HC.CV.003: Expenses: (New Expense Item) 9682
- B20.WTP.HC.CV.004: Expenses: (New Expense Item) 19364

| ID | WBS | Activity | Duration | Start | Finish | Predecessors | Complete | Planned start | Planned finish | Total float | Free float | Resources | Cost | Actual cost | 01.B.O.Q Items | 02.Scope | 04.Discipline | 05.EPS | 03.System |
| --- | --- | --- | --- | --- | --- | --- | --- | --- | --- | --- | --- | --- | --- | --- | --- | --- | --- | --- | --- |
|  | 2 | **Mechanical work** |  | 2024-11-05 | 2024-11-27 |  |  |  |  |  |  |  |  |  |  |  |  |  |  |
| B20.WTP.HC.MEC.001 |  | Install Pipes, Valve & Valve Chamber | 12d | 2024-11-05 | 2024-11-18 | B20.WTP.HC.CV.003, B20.WTP.HC.MEC.001.03 |  |  |  | 57d | 0d | Mechanical Crew [288 h] | 110,372 |  | B20 | 01 | 03 | 04 | 001 |
| B20.WTP.HC.MEC.002 |  | Water Pressure Test | 10d | 2024-11-17 | 2024-11-27 | B20.WTP.HC.MEC.001 SS+10d |  |  |  | 57d | 0d | Mechanical Crew [240 h] | 9,682 |  | B20 | 01 | 03 | 04 | 001 |
|  | 16 | **STP** |  | 2023-03-23 | 2025-02-27 |  |  |  |  |  |  |  |  |  |  |  |  |  |  |
|  | 1 | **B25-Build New Sewage Treatment Plant** |  | 2023-03-23 | 2025-02-27 |  |  |  |  |  |  |  |  |  |  |  |  |  |  |
|  | 1 | **Equipment Building** |  | 2024-05-05 | 2025-02-27 |  |  |  |  |  |  |  |  |  |  |  |  |  |  |
|  | 1 | **Civil Works** |  | 2024-05-05 | 2024-12-21 |  |  |  |  |  |  |  |  |  |  |  |  |  |  |
| B25.STP.EQ.CV.001 |  | Excavation Work Until The Required Depth Is Reached | 10d | 2024-05-05 A | 2024-05-16 A | B1.DET.D.STP.CV.001, B1.SD.STP.CV.001 SS+80d | 100% |  |  |  |  | Civil Crew [80 h]; Equipment [80 h] | 65,476 | 65,476 | B25 | 01 | 01 | 04 | 002 |
| B25.STP.EQ.CV.002 |  | Plain Concrete Footing Works, Formwork And Casting | 3d | 2024-05-16 A | 2024-05-20 A | B25.STP.EQ.CV.001 | 100% |  |  |  |  | Civil Crew [144 h] | 90,029 | 90,029 | B25 | 01 | 01 | 04 | 002 |
| B25.STP.EQ.CV.003 |  | Reinforcement Concrete Footing Works, Formwork , Steel Work , And Casting | 18d | 2024-05-20 A | 2024-06-10 A | B25.STP.EQ.CV.002 | 100% |  |  |  |  | Civil Crew [1152 h] | 145,847 | 145,847 | B25 | 01 | 01 | 04 | 002 |
| B25.STP.EQ.CV.009 |  | Bitumen Isolation Work | 8.75d | 2024-06-10 A | 2024-06-26 A | B25.STP.EQ.CV.003 | 100% |  |  |  |  | Civil Crew [280 h] | 20,461 | 20,461 | B25 | 01 | 01 | 04 | 002 |
| B25.STP.EQ.CV.004 |  | Reinforcement Concrete For Grade Beam And Trench Works, Formwork , Steel Work , And Casting | 0.75d | 2024-06-13 A | 2024-06-18 A | B25.STP.EQ.CV.009 SS | 100% | 2024-06-13 | 2024-06-13 |  |  | Civil Crew [60 h] | 221,799 | 221,799 | B25 | 01 | 01 | 04 | 002 |
| B25.STP.EQ.CV.008 |  | Backfilling Work | 14d | 2024-06-18 A | 2024-07-07 A | B25.STP.EQ.CV.004 | 100% | 2024-06-22 | 2024-07-07 |  |  | Civil Crew [80 h]; Equipment [80 h] | 20,461 | 20,461 | B25 | 01 | 01 | 04 | 002 |
| B25.STP.EQ.CV.006 |  | Reinforcement Concrete For S.O.G. | 5d | 2024-07-09 A | 2024-07-14 A | B25.STP.EQ.CV.004 | 100% |  |  |  |  | Civil Crew [384 h] | 163,689 | 163,689 | B25 | 01 | 01 | 04 | 002 |
| B25.STP.EQ.CV.005 |  | Reinforcement Concrete For Columns Works, Formwork , Steel Work , And Casting | 7d | 2024-08-01 A | 2024-08-08 A | B25.STP.EQ.CV.006 | 100% |  |  |  |  | Civil Crew [448 h] | 115,401 | 115,401 | B25 | 01 | 01 | 04 | 002 |
| B25.STP.EQ.CV.007 |  | Reinforcement Concrete For Roof Slab Works, Formwork , Steel Work , And Casting | 30d | 2024-09-07 A | 2024-10-17 A | B25.STP.EQ.CV.005 FS+7d | 100% | 2024-09-07 | 2024-10-12 |  |  | Civil Crew [2000 h] | 245,534 | 245,534 | B25 | 01 | 01 | 04 | 002 |
| B25.STP.EQ.CV.010 |  | Reinforcement Concrete Pavement For Treatment Water Tanker | 21d | 2024-11-27 | 2024-12-21 | B25.STP.EQ.ARC.001 |  |  |  | 91d |  | Civil Crew [360 h] | 16,205 |  | B25 | 01 | 01 | 04 | 002 |
|  | 3 | **Architectural work** |  | 2024-11-11 | 2025-02-27 |  |  |  |  |  |  |  |  |  |  |  |  |  |  |
| B25.STP.EQ.ARC.001 |  | Block Work | 14d | 2024-11-11 | 2024-11-26 | B25.STP.EQ.CV.007, B25.STP.EQ.CV.008, B1.SD.STP.ARC.001, B1.SD.STP.ARC.001.1 |  |  |  | 3d | 0d | Architectural Crew [640 h] | 11,827 |  | B25 | 01 | 02 | 04 | 002 |
| B25.STP.EQ.ARC.002 |  | Plastering Work | 14d | 2024-11-27 | 2024-12-12 | B25.STP.EQ.ARC.001 |  |  |  | 3d | 0d | Architectural Crew [640 h] | 18,480 |  | B25 | 01 | 02 | 04 | 002 |
| B25.STP.EQ.ARC.005 |  | Water Proofing | 10d | 2024-11-27 | 2024-12-08 | B25.STP.EQ.ARC.002 SS |  |  |  | 66d | 0d | Architectural Crew [480 h] | 11,088 |  | B25 | 01 | 02 | 04 | 002 |
| B25.STP.EQ.ARC.006 |  | Heat Insulation | 8d | 2024-12-09 | 2024-12-17 | B25.STP.EQ.ARC.005 |  |  |  | 66d | 0d | Architectural Crew [192 h] | 11,088 |  | B25 | 01 | 02 | 04 | 002 |
| B25.STP.EQ.ARC.003 |  | Painting First Coat | 10d | 2024-12-14 | 2024-12-24 | B25.STP.EQ.ARC.002 |  |  |  | 3d | 0d | Architectural Crew [512 h] | 9,240 |  | B25 | 01 | 02 | 04 | 002 |
| B25.STP.EQ.ARC.004 |  | Ground Finishing Epoxy First Coat | 11d | 2024-12-14 | 2024-12-25 | B25.STP.EQ.ARC.003 SS |  |  |  | 3d | 0d | Architectural Crew [240 h] | 3,696 |  | B25 | 01 | 02 | 04 | 002 |
| B25.STP.EQ.ARC.007 |  | Roof Foam Concrete | 10d | 2024-12-18 | 2024-12-29 | B25.STP.EQ.ARC.006 |  |  |  | 66d | 0d | Architectural Crew [480 h] | 11,088 |  | B25 | 01 | 02 | 04 | 002 |
| B25.STP.EQ.ARC.008 |  | Cement Tiles | 8d | 2024-12-30 | 2025-01-07 | B25.STP.EQ.ARC.007 |  |  |  | 66d | 0d | Architectural Crew [160 h] | 11,827 |  | B25 | 01 | 02 | 04 | 002 |
| B25.STP.EQ.ARC.009 |  | Install Windows | 10d | 2025-01-08 | 2025-01-19 | B25.STP.EQ.ARC.008 |  |  |  | 66d | 0d | Architectural Crew [144 h] | 37,699 |  | B25 | 01 | 02 | 04 | 002 |
| B25.STP.EQ.ARC.010 |  | Install The Doors | 10d | 2025-01-08 | 2025-01-19 | B25.STP.EQ.ARC.009 SS |  |  |  | 66d |  | Architectural Crew [144 h] | 45,830 |  | B25 | 01 | 02 | 04 | 002 |
| B25.STP.EQ.ARC.011 |  | Painting Second Coat | 12d | 2025-02-13 | 2025-02-27 | B25.STP.EQ.MEC.005, B25.STP.EQ.MEC.009, B25.STP.EQ.MEC.010, B25.STP.EQ.MEC.012, B25.STP.EQ.MEC.001, B25.STP.EQ.MEC.011, B25.STP.EQ.MEC.004, B25.STP.EQ.MEC.013, B25.STP.EQ.MEC.008, B25.STP.EQ.ELE.002 |  |  |  | 3d | 0d | Architectural Crew [256 h] | 9,240 |  | B25 | 01 | 02 | 04 | 002 |
| B25.STP.EQ.ARC.012 |  | Ground Finishing Epoxy Second Coat | 12d | 2025-02-13 | 2025-02-27 | B25.STP.EQ.MEC.007, B25.STP.EQ.MEC.002, B25.STP.EQ.MEC.003, B25.STP.EQ.ELE.002 |  |  |  | 33d |  | Architectural Crew [128 h] | 3,696 |  | B25 | 01 | 02 | 04 | 002 |

Notes:
- B20.WTP.HC.MEC.001: Expenses: (New Expense Item) 110372
- B20.WTP.HC.MEC.002: Expenses: (New Expense Item) 9682
- B25.STP.EQ.CV.001: Expenses: (New Expense Item) 65476
- B25.STP.EQ.CV.002: Expenses: (New Expense Item) 90029
- B25.STP.EQ.CV.003: Expenses: (New Expense Item) 145847
- B25.STP.EQ.CV.009: Expenses: (New Expense Item) 20461
- B25.STP.EQ.CV.004: Expenses: (New Expense Item) 221799
- B25.STP.EQ.CV.008: Expenses: (New Expense Item) 20461
- B25.STP.EQ.CV.006: Expenses: (New Expense Item) 163689
- B25.STP.EQ.CV.005: Expenses: (New Expense Item) 115401
- B25.STP.EQ.CV.007: Expenses: (New Expense Item) 245534
- B25.STP.EQ.CV.010: Expenses: (New Expense Item) 16205
- B25.STP.EQ.ARC.001: Expenses: (New Expense Item) 11827
- B25.STP.EQ.ARC.002: Expenses: (New Expense Item) 18480
- B25.STP.EQ.ARC.005: Expenses: (New Expense Item) 11088
- B25.STP.EQ.ARC.006: Expenses: (New Expense Item) 11088
- B25.STP.EQ.ARC.003: Expenses: (New Expense Item) 9240
- B25.STP.EQ.ARC.004: Expenses: (New Expense Item) 3696
- B25.STP.EQ.ARC.007: Expenses: (New Expense Item) 11088
- B25.STP.EQ.ARC.008: Expenses: (New Expense Item) 11827
- B25.STP.EQ.ARC.009: Expenses: (New Expense Item) 37699
- B25.STP.EQ.ARC.010: Expenses: (New Expense Item) 45830
- B25.STP.EQ.ARC.011: Expenses: (New Expense Item) 9240
- B25.STP.EQ.ARC.012: Expenses: (New Expense Item) 3696

| ID | WBS | Activity | Duration | Start | Finish | Predecessors | Complete | Total float | Free float | Resources | Cost | Actual cost | 01.B.O.Q Items | 02.Scope | 04.Discipline | 05.EPS | 03.System |
| --- | --- | --- | --- | --- | --- | --- | --- | --- | --- | --- | --- | --- | --- | --- | --- | --- | --- |
|  | 2 | **Mechanical work** |  | 2024-07-07 | 2025-01-29 |  |  |  |  |  |  |  |  |  |  |  |  |
| B25.STP.EQ.MEC.006 |  | Sanitary Fixtures & Manholes-First Fix | 1d | 2024-07-07 A | 2024-07-07 A | B25.STP.EQ.CV.008 | 100% |  |  | Mechanical Crew [64 h] | 11,157 | 11,157 | B25 | 01 | 03 | 04 | 002 |
| B25.STP.EQ.MEC.014 |  | Sanitary Fixtures & Manholes-Second Fix | 7d | 2024-12-09 | 2024-12-16 | B25.STP.EQ.ARC.001, B25.STP.EQ.ARC.005, B25.STP.EQ.MEC.006, B25.STP.EQ.MEC.006.03 |  | 88d | 7d | Mechanical Crew [96 h] | 11,157 |  | B25 | 01 | 03 | 04 | 002 |
| B25.STP.EQ.MEC.010 |  | Install Exhaust Fan | 12d | 2024-12-25 | 2025-01-07 | B25.STP.EQ.ARC.003, B25.STP.EQ.MEC.010.03 |  | 34d | 31d | Mechanical Crew [224 h] | 5,355 |  | B25 | 01 | 03 | 04 | 002 |
| B25.STP.EQ.MEC.011 |  | Install A.C | 10d | 2024-12-25 | 2025-01-05 | B25.STP.EQ.ARC.003, B25.STP.EQ.MEC.011.03 |  | 36d | 33d | Mechanical Crew [320 h] | 7,364 |  | B25 | 01 | 03 | 04 | 002 |
| B25.STP.EQ.MEC.012 |  | Install Crane | 15d | 2024-12-25 | 2025-01-11 | B25.STP.EQ.MEC.012.03, B25.STP.EQ.ARC.003 |  | 31d | 28d | Mechanical Crew [480 h]; Equipment [120 h] | 149,950 |  | B25 | 01 | 03 | 04 | 002 |
| B25.STP.EQ.MEC.015 |  | Sanitary Fixtures & Manholes-Third Fix | 7d | 2024-12-25 | 2025-01-01 | B25.STP.EQ.MEC.014, B25.STP.EQ.ARC.003, B25.STP.EQ.MEC.006.03, B25.STP.EQ.MEC.006.4 |  | 81d |  | Mechanical Crew [64 h] | 11,157 |  | B25 | 01 | 03 | 04 | 002 |
| B25.STP.EQ.MEC.001 |  | Install Blower STP | 12d | 2024-12-26 | 2025-01-08 | B25.STP.EQ.ARC.004, B25.STP.EQ.MEC.001.03 |  | 21d | 18d | Mechanical Crew [480 h]; Equipment [120 h] | 169,364 |  | B25 | 01 | 03 | 04 | 002 |
| B25.STP.EQ.MEC.002 |  | Install Filter Feed / Backwash Pumps | 7d | 2024-12-26 | 2025-01-02 | B25.STP.EQ.ARC.004, B25.STP.EQ.MEC.002.03 |  | 26d | 23d | Mechanical Crew [224 h]; Equipment [56 h] | 10,041 |  | B25 | 01 | 03 | 04 | 002 |
| B25.STP.EQ.MEC.003 |  | Install Tanker Filling Pumps | 15d | 2024-12-26 | 2025-01-12 | B25.STP.EQ.ARC.004, B25.STP.EQ.MEC.003.03 |  | 18d | 15d | Mechanical Crew [480 h]; Equipment [120 h] | 21,421 |  | B25 | 01 | 03 | 04 | 002 |
| B25.STP.EQ.MEC.004 |  | Install Sand Filter & Filter Media & Motorized Butterfly VaLves | 20d | 2024-12-26 | 2025-01-18 | B25.STP.EQ.ARC.004, B25.STP.EQ.MEC.004.03 |  | 13d | 10d | Mechanical Crew [640 h]; Equipment [160 h] | 117,149 |  | B25 | 01 | 03 | 04 | 002 |
| B25.STP.EQ.MEC.005 |  | Install Chemical Tank | 3d | 2024-12-26 | 2024-12-29 | B25.STP.EQ.ARC.004, B25.STP.EQ.MEC.005.03 |  | 30d | 27d | Mechanical Crew [48 h]; Equipment [24 h] | 14,727 |  | B25 | 01 | 03 | 04 | 002 |
| B25.STP.EQ.MEC.007 |  | Install Chemical Dosing Pumps | 5d | 2024-12-26 | 2024-12-31 | B25.STP.EQ.ARC.004, B25.STP.EQ.ARC.004 FF, B25.STP.EQ.MEC.007.03 |  | 28d | 25d | Mechanical Crew [32 h] | 6,025 |  | B25 | 01 | 03 | 04 | 002 |
| B25.STP.EQ.MEC.008 |  | Install Sludge Dewatering Unit (Medium Belt Press) | 30d | 2024-12-26 | 2025-01-29 | B25.STP.EQ.ARC.004, B25.STP.EQ.MEC.008.03 |  | 3d | 0d | Mechanical Crew [960 h]; Equipment [240 h] | 483,322 |  | B25 | 01 | 03 | 04 | 002 |
| B25.STP.EQ.MEC.009 |  | Install Polyelectrolyte Unit (Polymer Mixing ) | 10d | 2024-12-26 | 2025-01-06 | B25.STP.EQ.ARC.004, B25.STP.EQ.MEC.009.03 |  | 23d | 20d | Mechanical Crew [224 h]; Equipment [56 h] | 181,413 |  | B25 | 01 | 03 | 04 | 002 |
| B25.STP.EQ.MEC.013 |  | Install Fire Fighting System & Units | 15d | 2024-12-28 | 2025-01-13 | B25.STP.EQ.ARC.003, B25.STP.EQ.MEC.013.03, B1.SD.STP.MEC.001, B1.SD.STP.MEC.001.1 |  | 17d | 14d | Mechanical Crew [480 h] | 72,297 |  | B25 | 01 | 03 | 04 | 002 |
|  | 4 | **Electrical Work** |  | 2024-06-01 | 2025-02-12 |  |  |  |  |  |  |  |  |  |  |  |  |
| B25.STP.EQ.ELE.009 |  | Earthing And Lighting-First Fix | 5d | 2024-06-01 A | 2024-06-06 A | B25.STP.EQ.CV.004, B25.STP.EQ.ELE.009.03, B1.DET.D.STP.ELE.001, B1.SD.STP.ELE.001 | 100% |  |  | Electrical Crew [240 h] | 7,392 | 7,392 | B25 | 01 | 04 | 04 | 002 |
| B25.STP.EQ.ELE.014 |  | Earthing And Lighting-Second Fix | 1d | 2024-08-24 A | 2024-08-24 A | B25.STP.EQ.ELE.009, B25.STP.EQ.CV.005, B1.DET.D.STP.ELE.001, B1.SD.STP.ELE.001 | 100% |  |  | Electrical Crew [128 h] | 7,392 | 7,392 | B25 | 01 | 04 | 04 | 002 |
| B25.STP.EQ.ELE.012 |  | Emt Pipes Boles And Fittings | 15d | 2024-10-19 | 2024-11-04 | B25.STP.EQ.ELE.012.03, B1.DET.D.STP.ELE.001, B1.SD.STP.ELE.001 |  | 131d |  | Electrical Crew [240 h] | 7,392 |  | B25 | 01 | 04 | 04 | 002 |
| B25.STP.EQ.ELE.015 |  | Earthing And Lighting-Third Fix | 15d | 2024-10-19 | 2024-11-04 | B25.STP.EQ.ELE.014, B25.STP.EQ.CV.007, B1.DET.D.STP.ELE.001, B1.SD.STP.ELE.001 |  | 24d | 0d | Electrical Crew [192 h] | 7,392 |  | B25 | 01 | 04 | 04 | 002 |
| B25.STP.EQ.ELE.013 |  | Fire Alarm System | 15d | 2024-11-17 | 2024-12-03 | B25.STP.EQ.ELE.013.03, B1.DET.D.STP.ELE.001, B1.SD.STP.ELE.001 |  | 106d |  | Electrical Crew [160 h] | 59,135 |  | B25 | 01 | 04 | 04 | 002 |
| B25.STP.EQ.ELE.011 |  | Building Wires | 15d | 2024-11-23 | 2024-12-09 | B25.STP.EQ.ELE.011.03, B1.DET.D.STP.ELE.001, B1.SD.STP.ELE.001 |  | 101d |  | Electrical Crew [240 h] | 14,784 |  | B25 | 01 | 04 | 04 | 002 |
| B25.STP.EQ.ELE.010 |  | Cable Tray And Fittings | 8d | 2024-12-16 | 2024-12-24 | B25.STP.EQ.ELE.010.03, B1.DET.D.STP.ELE.001, B1.SD.STP.ELE.001 |  | 88d |  | Electrical Crew [240 h] | 103,487 |  | B25 | 01 | 04 | 04 | 002 |
| B25.STP.EQ.ELE.001 |  | PLC Scada | 15d | 2024-12-25 | 2025-01-11 | B25.STP.EQ.ARC.003, B25.STP.EQ.ELE.001.03, B1.DET.D.STP.ELE.001, B1.SD.STP.ELE.001 |  | 73d |  | Electrical Crew [160 h] | 162,622 |  | B25 | 01 | 04 | 04 | 002 |
| B25.STP.EQ.ELE.003 |  | Internal Lighting | 15d | 2024-12-25 | 2025-01-11 | B25.STP.EQ.ARC.003, B25.STP.EQ.ELE.003.03, B1.DET.D.STP.ELE.001, B1.SD.STP.ELE.001 |  | 73d |  | Electrical Crew [160 h] | 7,392 |  | B25 | 01 | 04 | 04 | 002 |
| B25.STP.EQ.ELE.004 |  | External Lighting | 15d | 2024-12-25 | 2025-01-11 | B25.STP.EQ.ARC.003, B25.STP.EQ.ELE.004.03, B1.DET.D.STP.ELE.001, B1.SD.STP.ELE.001 |  | 73d |  | Electrical Crew [160 h] | 7,392 |  | B25 | 01 | 04 | 04 | 002 |
| B25.STP.EQ.ELE.005 |  | Wiring Devices | 15d | 2024-12-25 | 2025-01-11 | B25.STP.EQ.ARC.003, B25.STP.EQ.ELE.005.03, B1.DET.D.STP.ELE.001, B1.SD.STP.ELE.001 |  | 73d |  | Electrical Crew [160 h] | 7,392 |  | B25 | 01 | 04 | 04 | 002 |
| B25.STP.EQ.ELE.006 |  | Low Voltage Cables | 20d | 2024-12-25 | 2025-01-16 | B25.STP.EQ.ARC.003, B25.STP.EQ.ELE.006.03, B1.DET.D.STP.ELE.001, B1.SD.STP.ELE.001 |  | 68d |  | Electrical Crew [400 h] | 88,703 |  | B25 | 01 | 04 | 04 | 002 |
| B25.STP.EQ.ELE.008 |  | UPS | 2d | 2024-12-25 | 2024-12-26 | B25.STP.EQ.ARC.003, B25.STP.EQ.ELE.008.03, B1.DET.D.STP.ELE.001, B1.SD.STP.ELE.001 |  | 86d |  | Electrical Crew [80 h] | 73,919 |  | B25 | 01 | 04 | 04 | 002 |
| B25.STP.EQ.ELE.007 |  | EMCC , MDB , ATS , PFC | 10d | 2025-01-06 | 2025-01-16 | B25.STP.EQ.ARC.003, B25.STP.EQ.ELE.007.03, B1.DET.D.STP.ELE.001, B1.SD.STP.ELE.001 |  | 68d |  | Electrical Crew [360 h] | 177,406 |  | B25 | 01 | 04 | 04 | 002 |
| B25.STP.EQ.ELE.002 |  | Instruments | 12d | 2025-01-30 | 2025-02-12 | B25.STP.EQ.MEC.001, B25.STP.EQ.MEC.002, B25.STP.EQ.MEC.003, B25.STP.EQ.MEC.004, B25.STP.EQ.MEC.005, B25.STP.EQ.MEC.007, B25.STP.EQ.MEC.008, B25.STP.EQ.MEC.009, B25.STP.EQ.MEC.013, B25.STP.EQ.ELE.002.03, B1.DET.D.STP.ELE.001, B1.SD.STP.ELE.001 |  | 3d | 0d | Electrical Crew [160 h] | 7,392 |  | B25 | 01 | 04 | 04 | 002 |

Notes:
- B25.STP.EQ.MEC.006: Expenses: (New Expense Item) 11157
- B25.STP.EQ.MEC.014: Expenses: (New Expense Item) 11157
- B25.STP.EQ.MEC.010: Expenses: (New Expense Item) 5355
- B25.STP.EQ.MEC.011: Expenses: (New Expense Item) 7364
- B25.STP.EQ.MEC.012: Expenses: (New Expense Item) 149950
- B25.STP.EQ.MEC.015: Expenses: (New Expense Item) 11157
- B25.STP.EQ.MEC.001: Expenses: (New Expense Item) 169364
- B25.STP.EQ.MEC.002: Expenses: (New Expense Item) 10041
- B25.STP.EQ.MEC.003: Expenses: (New Expense Item) 21421
- B25.STP.EQ.MEC.004: Expenses: (New Expense Item) 117149
- B25.STP.EQ.MEC.005: Expenses: (New Expense Item) 14727
- B25.STP.EQ.MEC.007: Expenses: (New Expense Item) 6025
- B25.STP.EQ.MEC.008: Expenses: (New Expense Item) 483322
- B25.STP.EQ.MEC.009: Expenses: (New Expense Item) 181413
- B25.STP.EQ.MEC.013: Expenses: (New Expense Item) 72297
- B25.STP.EQ.ELE.009: Expenses: (New Expense Item) 7392
- B25.STP.EQ.ELE.014: Expenses: (New Expense Item) 7392
- B25.STP.EQ.ELE.012: Expenses: (New Expense Item) 7392
- B25.STP.EQ.ELE.015: Expenses: (New Expense Item) 7392
- B25.STP.EQ.ELE.013: Expenses: (New Expense Item) 59135
- B25.STP.EQ.ELE.011: Expenses: (New Expense Item) 14784
- B25.STP.EQ.ELE.010: Expenses: (New Expense Item) 103487
- B25.STP.EQ.ELE.001: Expenses: (New Expense Item) 162622
- B25.STP.EQ.ELE.003: Expenses: (New Expense Item) 7392
- B25.STP.EQ.ELE.004: Expenses: (New Expense Item) 7392
- B25.STP.EQ.ELE.005: Expenses: (New Expense Item) 7392
- B25.STP.EQ.ELE.006: Expenses: (New Expense Item) 88703
- B25.STP.EQ.ELE.008: Expenses: (New Expense Item) 73919
- B25.STP.EQ.ELE.007: Expenses: (New Expense Item) 177406
- B25.STP.EQ.ELE.002: Expenses: (New Expense Item) 7392

| ID | WBS | Activity | Duration | Start | Finish | Predecessors | Complete | Planned start | Planned finish | Total float | Free float | Resources | Cost | Actual cost | 01.B.O.Q Items | 02.Scope | 04.Discipline | 05.EPS | 03.System |
| --- | --- | --- | --- | --- | --- | --- | --- | --- | --- | --- | --- | --- | --- | --- | --- | --- | --- | --- | --- |
|  | 5 | **Aeration Tank** |  | 2024-08-01 | 2025-01-07 |  |  |  |  |  |  |  |  |  |  |  |  |  |  |
|  | 1 | **Civil Works** |  | 2024-08-01 | 2024-10-23 |  |  |  |  |  |  |  |  |  |  |  |  |  |  |
| B25.STP.AR.CV.001 |  | Excavation Work Until The Required Depth Is Reached | 1d | 2024-08-01 A | 2024-08-01 A | B25.STP.SLG.CV.006 | 100% |  |  |  |  | Civil Crew [24 h]; Equipment [24 h] | 21,806 | 21,806 | B25 | 01 | 01 | 04 | 002 |
| B25.STP.AR.CV.002 |  | Plain Concrete Footing Works, Formwork And Casting | 2d | 2024-08-07 A | 2024-08-08 A | B25.STP.AR.CV.001 | 100% |  |  |  |  | Civil Crew [96 h] | 30,307 | 30,307 | B25 | 01 | 01 | 04 | 002 |
| B25.STP.AR.CV.003 |  | Reinforcement Concrete Footing Works, Formwork , Steel Work , And Casting | 7d | 2024-08-13 A | 2024-08-17 A | B25.STP.AR.CV.002 FS+3d | 100% | 2024-08-13 | 2024-08-20 |  |  | Civil Crew [336 h] | 45,460 | 45,460 | B25 | 01 | 01 | 04 | 002 |
| B25.STP.AR.CV.005 |  | Bitumen Isolation Work | 2d | 2024-08-24 A | 2024-08-25 A | B25.STP.AR.CV.003 | 100% |  |  |  |  | Civil Crew [48 h] | 4,435 | 4,435 | B25 | 01 | 01 | 04 | 002 |
| B25.STP.AR.CV.004 |  | Backfilling Work | 2d | 2024-08-26 A | 2024-08-27 A | B25.STP.AR.CV.005 | 100% |  |  |  |  | Civil Crew [16 h]; Equipment [16 h] | 4,435 | 4,435 | B25 | 01 | 01 | 04 | 002 |
| B25.STP.AR.CV.006 |  | Epoxy Work | 5d | 2024-10-19 | 2024-10-23 | B25.STP.AR.MEC.001 |  |  |  | 111d | 0d | Civil Crew [160 h] | 4,435 |  | B25 | 01 | 01 | 04 | 002 |
|  | 2 | **Mechanical work** |  | 2024-08-28 | 2025-01-07 |  |  |  |  |  |  |  |  |  |  |  |  |  |  |
| B25.STP.AR.MEC.001 |  | Install GLS Wall Sheets | 10d | 2024-08-28 A | 2024-09-12 A | B25.STP.AR.CV.004, B25.STP.AR.MEC.001.03 | 100% | 2024-08-28 | 2024-09-08 |  |  | Mechanical Crew [400 h]; Equipment [160 h] | 221,757 | 221,757 | B25 | 01 | 03 | 04 | 002 |
| B25.STP.AR.MEC.002 |  | Air Diffusers - Aeration Tank | 7d | 2024-10-24 | 2024-10-31 | B25.STP.AR.CV.006, B25.STP.AR.MEC.002.03 |  |  |  | 127d | 50.25d | Mechanical Crew [280 h] | 18,480 |  | B25 | 01 | 03 | 04 | 002 |
| B25.STP.AR.MEC.003 |  | Fine Screen / Grit Removal | 7d | 2024-12-30 | 2025-01-07 | B25.STP.AR.MEC.002, B25.STP.AR.MEC.003.03 |  |  |  | 76.75d | 73.75d | Mechanical Crew [280 h] | 18,480 |  | B25 | 01 | 03 | 04 | 002 |
|  | 3 | **Claifier Tank (Settling Tank)** |  | 2024-09-01 | 2024-11-24 |  |  |  |  |  |  |  |  |  |  |  |  |  |  |
|  | 1 | **Civil Works** |  | 2024-09-01 | 2024-10-26 |  |  |  |  |  |  |  |  |  |  |  |  |  |  |
| B25.STP.CLA.CV.001 |  | Excavation Work Until The Required Depth Is Reached | 3d | 2024-09-01 A | 2024-09-05 A | B25.STP.SLG.CV.006 | 100% | 2024-09-07 | 2024-09-09 |  |  | Civil Crew [24 h]; Equipment [24 h] | 15,153 | 15,153 | B25 | 01 | 01 | 04 | 002 |
| B25.STP.CLA.CV.002 |  | Plain Concrete Footing Works, Formwork And Casting | 2d | 2024-09-14 A | 2024-09-22 A | B25.STP.CLA.CV.001, B25.STP.CLA.CV.001 FF | 100% | 2024-09-14 | 2024-09-15 |  |  | Civil Crew [64 h] | 14,414 | 14,414 | B25 | 01 | 01 | 04 | 002 |
| B25.STP.CLA.CV.003 |  | Reinforcement Concrete Footing Works, Formwork , Steel Work , And Casting | 10d | 2024-09-24 A | 2024-10-03 A | B25.STP.CLA.CV.002, B25.STP.CLA.CV.002 FF | 100% | 2024-09-24 | 2024-10-05 |  |  | Civil Crew [480 h] | 35,481 | 35,481 | B25 | 01 | 01 | 04 | 002 |
| B25.STP.CLA.CV.004 |  | Backfilling Work | 2d | 2024-10-07 A | 2024-10-08 A | B25.STP.CLA.CV.005, B25.STP.CLA.CV.005 FF | 100% |  |  |  |  | Civil Crew [16 h]; Equipment [16 h] | 2,957 | 2,957 | B25 | 01 | 01 | 04 | 002 |
| B25.STP.CLA.CV.005 |  | Bitumen Isolation Work | 2d | 2024-10-09 A | 2024-10-09 A | B25.STP.CLA.CV.003, B25.STP.CLA.CV.003 FF | 100% | 2024-10-12 | 2024-10-13 |  |  | Civil Crew [48 h] | 2,957 | 2,957 | B25 | 01 | 01 | 04 | 002 |
| B25.STP.CLA.CV.006 |  | Epoxy Work | 7d | 2024-10-19 | 2024-10-26 | B25.STP.CLA.CV.004, B25.STP.CLA.MEC.001 |  |  |  | 109d | 5d | Civil Crew [280 h] | 2,957 |  | B25 | 01 | 01 | 04 | 002 |
|  | 2 | **Mechanical work** |  | 2024-10-08 | 2024-11-24 |  |  |  |  |  |  |  |  |  |  |  |  |  |  |
| B25.STP.CLA.MEC.001 |  | Install GLS Wall Sheets | 10d | 2024-10-08 A | 2024-10-17 A | B25.STP.CLA.CV.004, B25.STP.CLA.MEC.001.03 | 100% | 2024-10-16 | 2024-10-27 |  |  | Mechanical Crew [400 h]; Equipment [160 h] | 129,728 | 129,728 | B25 | 01 | 03 | 04 | 002 |
| B25.STP.CLA.MEC.002 |  | Clarifier | 20d | 2024-11-02 | 2024-11-24 | B25.STP.CLA.CV.006, B25.STP.CLA.MEC.002.03 |  |  |  | 127d | 11d | Mechanical Crew [800 h] | 18,480 |  | B25 | 01 | 03 | 04 | 002 |
| B25.STP.CLA.MEC.003 |  | Telescopic Valve | 7d | 2024-11-14 | 2024-11-21 | B25.STP.CLA.MEC.002 SS, B25.STP.CLA.MEC.003.03 |  |  |  | 116d |  | Mechanical Crew [280 h] | 18,480 |  | B25 | 01 | 03 | 04 | 002 |

Notes:
- B25.STP.AR.CV.001: Expenses: (New Expense Item) 21806
- B25.STP.AR.CV.002: Expenses: (New Expense Item) 30307
- B25.STP.AR.CV.003: Expenses: (New Expense Item) 45460
- B25.STP.AR.CV.005: Expenses: (New Expense Item) 4435
- B25.STP.AR.CV.004: Expenses: (New Expense Item) 4435
- B25.STP.AR.CV.006: Expenses: (New Expense Item) 4435
- B25.STP.AR.MEC.001: Expenses: (New Expense Item) 221757
- B25.STP.AR.MEC.002: Expenses: (New Expense Item) 18480
- B25.STP.AR.MEC.003: Expenses: (New Expense Item) 18480
- B25.STP.CLA.CV.001: Expenses: (New Expense Item) 15153
- B25.STP.CLA.CV.002: Expenses: (New Expense Item) 14414
- B25.STP.CLA.CV.003: Expenses: (New Expense Item) 35481
- B25.STP.CLA.CV.004: Expenses: (New Expense Item) 2957
- B25.STP.CLA.CV.005: Expenses: (New Expense Item) 2957
- B25.STP.CLA.CV.006: Expenses: (New Expense Item) 2957
- B25.STP.CLA.MEC.001: Expenses: (New Expense Item) 129728
- B25.STP.CLA.MEC.002: Expenses: (New Expense Item) 18480
- B25.STP.CLA.MEC.003: Expenses: (New Expense Item) 18480

| ID | WBS | Activity | Duration | Start | Finish | Predecessors | Complete | Planned start | Planned finish | Total float | Free float | Resources | Cost | Actual cost | 01.B.O.Q Items | 02.Scope | 04.Discipline | 05.EPS | 03.System |
| --- | --- | --- | --- | --- | --- | --- | --- | --- | --- | --- | --- | --- | --- | --- | --- | --- | --- | --- | --- |
|  | 2 | **Return Sludge Tank** |  | 2023-03-23 | 2024-10-23 |  |  |  |  |  |  |  |  |  |  |  |  |  |  |
|  | 1 | **Civil Works** |  | 2023-03-23 | 2024-09-19 |  |  |  |  |  |  |  |  |  |  |  |  |  |  |
| B25.STP.SLG.CV.003 |  | Reinforcement Concrete Footing Works, Formwork , Steel Work , And Casting | 12d | 2023-03-23 A | 2023-04-10 A | B25.STP.SLG.CV.002, B25.STP.SLG.CV.002 FF | 100% |  |  |  |  | Civil Crew [960 h] | 176,666 | 176,666 | B25 | 01 | 01 | 04 | 002 |
| B25.STP.SLG.CV.004 |  | Reinforcement Concrete For Walls Works, Formwork , Steel Work , And Casting | 12d | 2023-04-04 A | 2023-04-29 A | B25.STP.SLG.CV.003, B25.STP.SLG.CV.003 FF | 100% |  |  |  |  | Civil Crew [960 h] | 91,660 | 91,660 | B25 | 01 | 01 | 04 | 002 |
| B25.STP.SLG.CV.005 |  | Reinforcement Concrete For The Slab Works, Formwork , Steel Work , And Casting | 7d | 2023-04-17 A | 2023-05-02 A | B25.STP.SLG.CV.004, B25.STP.SLG.CV.004 FF | 100% |  |  |  |  | Civil Crew [560 h] | 62,092 | 62,092 | B25 | 01 | 01 | 04 | 002 |
| B25.STP.SLG.CV.001 |  | Excavation Work Until The Required Depth Is Reached | 9d | 2023-04-29 A | 2023-05-08 A | B1.DET.D.STP.CV.001, B1.SD.STP.CV.001 SS+75d | 100% |  |  |  |  | Civil Crew [64 h]; Equipment [64 h] | 78,354 | 78,354 | B25 | 01 | 01 | 04 | 002 |
| B25.STP.SLG.CV.002 |  | Plain Concrete Footing Works, Formwork And Casting | 4d | 2023-05-08 A | 2023-05-11 A | B25.STP.SLG.CV.001, B25.STP.SLG.CV.001 FF | 100% |  |  |  |  | Civil Crew [192 h] | 96,095 | 96,095 | B25 | 01 | 01 | 04 | 002 |
| B25.STP.SLG.CV.007 |  | Membrane Isolation Work | 5d | 2023-05-23 A | 2023-05-28 A | B25.STP.SLG.CV.005, B25.STP.SLG.CV.005 FF | 100% |  |  |  |  | Civil Crew [240 h] | 16,262 | 16,262 | B25 | 01 | 01 | 04 | 002 |
| B25.STP.SLG.CV.006 |  | Backfilling Work | 51d | 2024-05-28 A | 2024-08-01 A | B25.STP.SLG.CV.007, B25.STP.SLG.CV.007 FF | 100% |  |  |  |  | Civil Crew [160 h]; Equipment [160 h] | 16,262 | 16,262 | B25 | 01 | 01 | 04 | 002 |
| B25.STP.SLG.CV.008 |  | Epoxy Work | 8d | 2024-08-08 A | 2024-09-19 A | B25.STP.SLG.CV.006, B25.STP.SLG.CV.006 FF | 100% | 2024-08-07 | 2024-08-15 |  |  | Civil Crew [448 h] | 15,523 | 15,523 | B25 | 01 | 01 | 04 | 002 |
|  | 2 | **Mechanical work** |  | 2024-10-19 | 2024-10-23 |  |  |  |  |  |  |  |  |  |  |  |  |  |  |
| B25.STP.SLG.MEC.001 |  | Install Return Sludge Pumps | 5d | 2024-10-19 | 2024-10-23 | B25.STP.SLG.CV.008, B25.STP.SLG.MEC.001.03 |  |  |  | 89d | 10d | Mechanical Crew [240 h] | 28,828 |  | B25 | 01 | 03 | 04 | 002 |
|  | 4 | **Chlorine Contact Tank** |  | 2024-05-15 | 2024-09-04 |  |  |  |  |  |  |  |  |  |  |  |  |  |  |
|  | 1 | **Civil Works** |  | 2024-05-15 | 2024-09-04 |  |  |  |  |  |  |  |  |  |  |  |  |  |  |
| B25.STP.CHL.CV.001 |  | Excavation Work Until The Required Depth Is Reached | 3d | 2024-05-15 A | 2024-05-18 A | B1.DET.D.STP.CV.001 | 100% |  |  |  |  | Civil Crew [24 h]; Equipment [24 h] | 20,697 | 20,697 | B25 | 01 | 01 | 04 | 002 |
| B25.STP.CHL.CV.002 |  | Plain Concrete Footing Works, Formwork And Casting | 2d | 2024-05-20 A | 2024-05-21 A | B25.STP.CHL.CV.001, B25.STP.CHL.CV.001 FF | 100% |  |  |  |  | Civil Crew [48 h] | 26,611 | 26,611 | B25 | 01 | 01 | 04 | 002 |
| B25.STP.CHL.CV.003 |  | Reinforcement Concrete Footing Works, Formwork , Steel Work , And Casting | 5d | 2024-05-22 A | 2024-05-27 A | B25.STP.CHL.CV.002, B25.STP.CHL.CV.002 FF | 100% |  |  |  |  | Civil Crew [240 h] | 36,960 | 36,960 | B25 | 01 | 01 | 04 | 002 |
| B25.STP.CHL.CV.004 |  | Bitumen Isolation Work | 1d | 2024-05-29 A | 2024-05-29 A | B25.STP.CHL.CV.003, B25.STP.CHL.CV.003 FF | 100% |  |  |  |  | Civil Crew [16 h] | 5,914 | 5,914 | B25 | 01 | 01 | 04 | 002 |
| B25.STP.CHL.CV.005 |  | Epoxy Work | 5d | 2024-09-04 A | 2024-09-04 A | B25.STP.CHL.CV.004, B25.STP.CHL.MEC.001 | 100% | 2024-08-31 | 2024-09-04 |  |  | Civil Crew [160 h] | 5,914 | 5,914 | B25 | 01 | 01 | 04 | 002 |
|  | 2 | **Mechanical work** |  | 2024-06-30 | 2024-08-06 |  |  |  |  |  |  |  |  |  |  |  |  |  |  |
| B25.STP.CHL.MEC.001 |  | Install GLS Wall Sheets | 33d | 2024-06-30 A | 2024-08-06 A | B25.STP.CHL.CV.004, B25.STP.CHL.MEC.001.03 | 100% |  |  |  |  | Mechanical Crew [240 h]; Equipment [160 h] | 203,786 | 203,786 | B25 | 01 | 03 | 04 | 002 |
|  | 6 | **Fence Work** |  | 2024-11-11 | 2025-01-22 |  |  |  |  |  |  |  |  |  |  |  |  |  |  |
|  | 1 | **Civil Works** |  | 2024-11-11 | 2024-12-25 |  |  |  |  |  |  |  |  |  |  |  |  |  |  |
| B25.STP.FEN.CV.001 |  | Excavation Work Until The Required Depth Is Reached | 10d | 2024-11-11 | 2024-11-21 | B25.STP.EQ.ARC.001 SS |  |  |  | 63d | 0d | Civil Crew [160 h]; Equipment [80 h] | 17,001 |  | B25 | 01 | 01 | 04 | 002 |
| B25.STP.FEN.CV.002 |  | Leveling The Bottom Of The Excavation | 2d | 2024-11-23 | 2024-11-24 | B25.STP.FEN.CV.001, B25.STP.FEN.CV.001 FF |  |  |  | 63d | 0d | Civil Crew [32 h] | 11,827 |  | B25 | 01 | 01 | 04 | 002 |
| B25.STP.FEN.CV.003 |  | Plain Concrete Footing Works, Formwork And Casting | 5d | 2024-11-25 | 2024-11-30 | B25.STP.FEN.CV.002, B25.STP.FEN.CV.002 FF |  |  |  | 63d | 0d | Civil Crew [280 h] | 7,392 |  | B25 | 01 | 01 | 04 | 002 |
| B25.STP.FEN.CV.004 |  | Reinforcement Concrete Footing Works, Formwork , Steel Work , And Casting | 12d | 2024-12-01 | 2024-12-14 | B25.STP.FEN.CV.003, B25.STP.FEN.CV.003 FF |  |  |  | 63d | 0d | Civil Crew [896 h] | 22,915 |  | B25 | 01 | 01 | 04 | 002 |
| B25.STP.FEN.CV.005 |  | Reinforcement Concrete For Columns Works, Formwork , Steel Work , And Casting | 10d | 2024-12-15 | 2024-12-25 | B25.STP.FEN.CV.004, B25.STP.FEN.CV.004 FF |  |  |  | 63d | 0d | Civil Crew [768 h] | 14,784 |  | B25 | 01 | 01 | 04 | 002 |

Notes:
- B25.STP.SLG.CV.003: Expenses: (New Expense Item) 176666
- B25.STP.SLG.CV.004: Expenses: (New Expense Item) 91660
- B25.STP.SLG.CV.005: Expenses: (New Expense Item) 62092
- B25.STP.SLG.CV.001: Expenses: (New Expense Item) 78354
- B25.STP.SLG.CV.002: Expenses: (New Expense Item) 96095
- B25.STP.SLG.CV.007: Expenses: (New Expense Item) 16262
- B25.STP.SLG.CV.006: Expenses: (New Expense Item) 16262
- B25.STP.SLG.CV.008: Expenses: (New Expense Item) 15523
- B25.STP.SLG.MEC.001: Expenses: (New Expense Item) 28828
- B25.STP.CHL.CV.001: Expenses: (New Expense Item) 20697
- B25.STP.CHL.CV.002: Expenses: (New Expense Item) 26611
- B25.STP.CHL.CV.003: Expenses: (New Expense Item) 36960
- B25.STP.CHL.CV.004: Expenses: (New Expense Item) 5914
- B25.STP.CHL.CV.005: Expenses: (New Expense Item) 5914
- B25.STP.CHL.MEC.001: Expenses: (New Expense Item) 203786
- B25.STP.FEN.CV.001: Expenses: (New Expense Item) 17001
- B25.STP.FEN.CV.002: Expenses: (New Expense Item) 11827
- B25.STP.FEN.CV.003: Expenses: (New Expense Item) 7392
- B25.STP.FEN.CV.004: Expenses: (New Expense Item) 22915
- B25.STP.FEN.CV.005: Expenses: (New Expense Item) 14784

| ID | WBS | Activity | Duration | Start | Finish | Predecessors | Complete | Remaining | Planned start | Planned finish | Total float | Free float | Resources | Cost | Actual cost | 01.B.O.Q Items | 02.Scope | 04.Discipline | 05.EPS | 03.System |
| --- | --- | --- | --- | --- | --- | --- | --- | --- | --- | --- | --- | --- | --- | --- | --- | --- | --- | --- | --- | --- |
|  | 2 | **Architectural work** |  | 2024-12-26 | 2025-01-22 |  |  |  |  |  |  |  |  |  |  |  |  |  |  |  |
| B25.STP.FEN.ARC.001 |  | Block Work | 7d | 2024-12-26 | 2025-01-02 | B25.STP.FEN.CV.005, B25.STP.FEN.CV.005 FF, B1.SD.STP.ARC.001 |  |  |  |  | 63d | 0d | Architectural Crew [560 h] | 13,305 |  | B25 | 01 | 02 | 04 | 002 |
| B25.STP.FEN.ARC.002 |  | Plastering Work | 7d | 2025-01-04 | 2025-01-11 | B25.STP.FEN.ARC.001, B25.STP.FEN.ARC.001 FF |  |  |  |  | 63d | 0d | Architectural Crew [560 h] | 11,827 |  | B25 | 01 | 02 | 04 | 002 |
| B25.STP.FEN.ARC.003 |  | Painting Work | 10d | 2025-01-12 | 2025-01-22 | B25.STP.FEN.ARC.002, B25.STP.FEN.ARC.002 FF |  |  |  |  | 63d | 60d | Architectural Crew [800 h] | 11,088 |  | B25 | 01 | 02 | 04 | 002 |
|  | 7 | **Lifting (Raw Sewage) TANK** |  | 2024-10-19 | 2024-11-04 |  |  |  |  |  |  |  |  |  |  |  |  |  |  |  |
|  | 1 | **Mechanical work** |  | 2024-10-19 | 2024-11-04 |  |  |  |  |  |  |  |  |  |  |  |  |  |  |  |
| B25.STP.LRS.MEC.001 |  | Install Raw Sewage Lifting Pumps | 15d | 2024-10-19 | 2024-11-04 | B25.STP.LRS.MEC.001.03 |  |  |  |  | 101d | 98d | Mechanical Crew [360 h] | 49,667 |  | B25 | 01 | 03 | 04 | 002 |
|  | 9 | **Internal Pipes** |  | 2024-10-14 | 2024-12-01 |  |  |  |  |  |  |  |  |  |  |  |  |  |  |  |
| B25.STP.IP.CV.001 |  | Excavation Work Until The Required Depth Is Reached | 15d | 2024-10-14 A | 2024-11-04 | B25.STP.CLA.MEC.001 | 10% | 15d | 2025-01-04 | 2025-01-20 | 83d | 0d | Civil Crew [200 h]; Equipment [200 h] | 2,957 | 295.7 | B25 | 01 | 01 | 04 | 002 |
| B25.STP.IP.CV.002 |  | Leveling The Bottom Of The Excavation | 8d | 2024-10-15 A | 2024-11-09 | B25.STP.IP.CV.001 SS+15d | 10% | 8d | 2025-01-21 | 2025-01-29 | 83d | 0d | Civil Crew [160 h] | 2,957 | 295.7 | B25 | 01 | 01 | 04 | 002 |
| B25.STP.IP.CV.003 |  | Sand Backfilling | 4d | 2024-10-16 A | 2024-11-04 | B25.STP.IP.CV.002 SS | 10% | 4d | 2025-01-21 | 2025-01-25 | 83d | 0d | Civil Crew [32 h]; Equipment [32 h] | 3,696 | 369.6 | B25 | 01 | 01 | 04 | 002 |
| B25.STP.IP.CV.004 |  | Install For Pipes | 10d | 2024-10-17 A | 2024-11-14 | B25.STP.IP.CV.003 SS+5d | 10% | 10d | 2025-01-27 | 2025-02-06 | 83d | 0d | Mechanical Crew [960 h] | 23,654 | 2,365.4 | B25 | 01 | 03 | 04 | 002 |
| B25.STP.IP.CV.005 |  | Water Pressure Test | 10d | 2024-11-14 | 2024-11-25 | B25.STP.IP.CV.004 SS+10d |  |  |  |  | 83d | 0d | Mechanical Crew [480 h] | 2,218 |  | B25 | 01 | 03 | 04 | 002 |
| B25.STP.IP.CV.006 |  | Backfilling Work Until The Final Level | 10d | 2024-11-20 | 2024-12-01 | B25.STP.IP.CV.005 SS+5d |  |  |  |  | 108d |  | Civil Crew [80 h]; Equipment [80 h] | 1,478 |  | B25 | 01 | 01 | 04 | 002 |
|  | 8 | **B26-Backup Ggenerators (STP)** |  | 2024-12-26 | 2025-01-12 |  |  |  |  |  |  |  |  |  |  |  |  |  |  |  |
|  | 2 | **Electrical Work** |  | 2024-12-26 | 2025-01-12 |  |  |  |  |  |  |  |  |  |  |  |  |  |  |  |
| B26.STP.GEN.ELE.001 |  | Install For The Backup Generators (STP) | 15d | 2024-12-26 | 2025-01-12 | B25.STP.EQ.ARC.004, B26.STP.GEN.ELE.001.03, B1.DET.D.STP.ELE.001, B1.SD.STP.ELE.001 |  |  |  |  | 42d | 39d | Electrical Crew [720 h] | 363,324 |  | B26 | 01 | 04 | 04 | 002 |
|  | 3 | **B27-Package Sub Station (STP)** |  | 2024-09-26 | 2024-09-26 |  |  |  |  |  |  |  |  |  |  |  |  |  |  |  |
|  | 2 | **Electrical Work** |  | 2024-09-26 | 2024-09-26 |  |  |  |  |  |  |  |  |  |  |  |  |  |  |  |
| B27.STP.SUB.ELE.001 |  | Install For The Transformer (STP) | 15d | 2024-09-26 A | 2024-09-26 A | B27.STP.SUB.ELE.001.03, B1.DET.D.STP.ELE.001, B1.SD.STP.ELE.001 | 100% |  | 2024-12-05 | 2024-12-22 |  |  | Electrical Crew [720 h] | 120,897 | 120,897 | B27 | 01 | 04 | 04 | 002 |
|  | 2 | **B28-MV CABLE For RMU LOOP** |  | 2024-10-19 | 2024-11-20 |  |  |  |  |  |  |  |  |  |  |  |  |  |  |  |
|  | 1 | **Civil Works** |  | 2024-10-19 | 2024-11-20 |  |  |  |  |  |  |  |  |  |  |  |  |  |  |  |
| B28.STP.RMU.CV.001 |  | Excavation Work Until The Required Depth Is Reached | 3d | 2024-10-19 | 2024-10-21 | B27.STP.SUB.ELE.001 |  |  |  |  | 104d | 0d | Civil Crew [24 h]; Equipment [24 h] | 12,071 |  | B28 | 01 | 01 | 04 | 002 |
| B28.STP.RMU.CV.002 |  | Leveling The Bottom Of The Excavation | 1d | 2024-10-22 | 2024-10-22 | B28.STP.RMU.CV.001 |  |  |  |  | 104d | 0d | Civil Crew [16 h] | 2,414 |  | B28 | 01 | 01 | 04 | 002 |
| B28.STP.RMU.CV.003 |  | Bottom Soil Spreading And Compaction Work Under The Cables | 2d | 2024-10-23 | 2024-10-24 | B28.STP.RMU.CV.002 |  |  |  |  | 104d | 17d | Civil Crew [16 h]; Equipment [16 h] | 4,024 |  | B28 | 01 | 01 | 04 | 002 |
| B28.STP.RMU.CV.004 |  | Backfilling Works Over Cables | 3d | 2024-11-18 | 2024-11-20 | B28.STP.RMU.ELE.001 |  |  |  |  | 87d | 84d | Civil Crew [24 h]; Equipment [24 h] | 12,071 |  | B28 | 01 | 01 | 04 | 002 |

Notes:
- B25.STP.FEN.ARC.001: Expenses: (New Expense Item) 13305
- B25.STP.FEN.ARC.002: Expenses: (New Expense Item) 11827
- B25.STP.FEN.ARC.003: Expenses: (New Expense Item) 11088
- B25.STP.LRS.MEC.001: Expenses: (New Expense Item) 49667
- B25.STP.IP.CV.001: Expenses: (New Expense Item) 2957
- B25.STP.IP.CV.002: Expenses: (New Expense Item) 2957
- B25.STP.IP.CV.003: Expenses: (New Expense Item) 3696
- B25.STP.IP.CV.004: Expenses: (New Expense Item) 23654
- B25.STP.IP.CV.005: Expenses: (New Expense Item) 2218
- B25.STP.IP.CV.006: Expenses: (New Expense Item) 1478
- B26.STP.GEN.ELE.001: Expenses: (New Expense Item) 363324
- B27.STP.SUB.ELE.001: Expenses: (New Expense Item) 120897
- B28.STP.RMU.CV.001: Expenses: (New Expense Item) 12071
- B28.STP.RMU.CV.002: Expenses: (New Expense Item) 2414
- B28.STP.RMU.CV.003: Expenses: (New Expense Item) 4024
- B28.STP.RMU.CV.004: Expenses: (New Expense Item) 12071

| ID | WBS | Activity | Duration | Start | Finish | Predecessors | Complete | Planned start | Planned finish | Total float | Free float | Resources | Cost | Actual cost | 01.B.O.Q Items | 02.Scope | 04.Discipline | 05.EPS | 03.System |
| --- | --- | --- | --- | --- | --- | --- | --- | --- | --- | --- | --- | --- | --- | --- | --- | --- | --- | --- | --- |
|  | 2 | **Electrical Work** |  | 2024-11-14 | 2024-11-17 |  |  |  |  |  |  |  |  |  |  |  |  |  |  |
| B28.STP.RMU.ELE.001 |  | Install Cables | 3d | 2024-11-14 | 2024-11-17 | B28.STP.RMU.CV.003, B28.STP.RMU.ELE.001.03, B1.DET.D.STP.ELE.001, B1.SD.STP.ELE.001 |  |  |  | 87d | 0d | Electrical Crew [72 h] | 45,870 |  | B28 | 01 | 04 | 04 | 002 |
|  | 4 | **B29-LV CABLE TO ATS PANEL** |  | 2024-10-19 | 2024-11-25 |  |  |  |  |  |  |  |  |  |  |  |  |  |  |
|  | 1 | **Civil Works** |  | 2024-10-19 | 2024-11-25 |  |  |  |  |  |  |  |  |  |  |  |  |  |  |
| B29.STP.ATS.CV.001 |  | Excavation Work Until The Required Depth Is Reached | 3d | 2024-10-19 | 2024-10-21 | B27.STP.SUB.ELE.001 |  |  |  | 103d | 0d | Civil Crew [24 h]; Equipment [24 h] | 6,513 |  | B29 | 01 | 01 | 04 | 002 |
| B29.STP.ATS.CV.002 |  | Leveling The Bottom Of The Excavation | 1d | 2024-10-22 | 2024-10-22 | B29.STP.ATS.CV.001 |  |  |  | 103d | 0d | Civil Crew [56 h] | 1,303 |  | B29 | 01 | 01 | 04 | 002 |
| B29.STP.ATS.CV.003 |  | Bottom Soil Spreading And Compaction Work Under The Cables | 1d | 2024-10-23 | 2024-10-23 | B29.STP.ATS.CV.002 |  |  |  | 103d | 20d | Civil Crew [40 h]; Equipment [8 h] | 2,171 |  | B29 | 01 | 01 | 04 | 002 |
| B29.STP.ATS.CV.004 |  | Backfilling Works Over Cables | 1d | 2024-11-25 | 2024-11-25 | B29.STP.ATS.ELE.001 |  |  |  | 83d | 80d | Civil Crew [40 h]; Equipment [8 h] | 6,513 |  | B29 | 01 | 01 | 04 | 002 |
|  | 2 | **Electrical Work** |  | 2024-11-17 | 2024-11-24 |  |  |  |  |  |  |  |  |  |  |  |  |  |  |
| B29.STP.ATS.ELE.001 |  | Install Cables | 7d | 2024-11-17 | 2024-11-24 | B29.STP.ATS.CV.003, B29.STP.ATS.ELE.001.03, B1.DET.D.STP.ELE.001, B1.SD.STP.ELE.001 |  |  |  | 83d | 0d | Electrical Crew [392 h] | 24,748 |  | B29 | 01 | 04 | 04 | 002 |
|  | 5 | **B30-Build Access Road to STP** |  | 2024-05-28 | 2024-11-09 |  |  |  |  |  |  |  |  |  |  |  |  |  |  |
|  | 2 | **Civil Works** |  | 2024-05-28 | 2024-11-09 |  |  |  |  |  |  |  |  |  |  |  |  |  |  |
| B30.STP.ROD.CV.001 |  | Excavation Or Backfilling Work To Reach The Foundation Level With Leveling And Compaction | 10d | 2024-05-28 A | 2024-06-09 A | B1.SD.STP.CV.001 SS+100d | 100% |  |  |  |  | Civil Crew [320 h]; Equipment [160 h] | 54,996 | 54,996 | B30 | 01 | 01 | 04 | 002 |
| B30.STP.ROD.CV.002 |  | Subgrade Base Thickness 300 Mm | 4.75d | 2024-06-09 A | 2024-06-18 A | B30.STP.ROD.CV.001 | 100% | 2024-06-09 | 2024-06-13 |  |  | Civil Crew [152 h]; Equipment [76 h] | 82,495 | 82,495 | B30 | 01 | 01 | 04 | 002 |
| B30.STP.ROD.CV.003 |  | Aggregate Base Course200Mm Thickness | 30d | 2024-06-19 A | 2024-07-25 A | B30.STP.ROD.CV.002 | 100% | 2024-06-22 | 2024-07-25 |  |  | Civil Crew [320 h]; Equipment [160 h] | 82,495 | 82,495 | B30 | 01 | 01 | 04 | 002 |
| B30.STP.ROD.CV.004 |  | Asphalt Layer Of 70Mm Thick Including Prime Coat | 10d | 2024-09-07 A | 2024-09-22 A | B30.STP.ROD.CV.003 | 100% | 2024-09-07 | 2024-09-17 |  |  | Civil Crew [320 h]; Equipment [160 h] | 192,487 | 192,487 | B30 | 01 | 01 | 04 | 002 |
| B30.STP.ROD.CV.005 |  | Asphalt Wearing Layer Thickness 50 Mm Including Tack Coat | 10d | 2024-10-29 | 2024-11-09 | B30.STP.ROD.CV.004 FS+30d |  |  |  | 97d | 94d | Civil Crew [160 h]; Equipment [160 h] | 137,491 |  | B30 | 01 | 01 | 04 | 002 |
|  | 7 | **B47-Hand Held Water Quality Instruments STP** |  | 2024-11-13 | 2024-11-14 |  |  |  |  |  |  |  |  |  |  |  |  |  |  |
|  | 1 | **Mechanical work** |  | 2024-11-13 | 2024-11-14 |  |  |  |  |  |  |  |  |  |  |  |  |  |  |
| B47.STP.INS.MEC.001 |  | Install For Hand Held Water Quality Instruments For Water & Sewage | 1d | 2024-11-13 | 2024-11-14 | B47.STP.INS.MEC.001.03 |  |  |  | 122.75d | 119.75d | Mechanical Crew [8 h] | 30,224 |  | B47 | 01 | 03 | 04 | 002 |
|  | 6 | **B52-New Residential city Gate** |  | 2024-10-19 | 2025-02-09 |  |  |  |  |  |  |  |  |  |  |  |  |  |  |
|  | 1 | **Civil Works** |  | 2024-10-19 | 2025-02-09 |  |  |  |  |  |  |  |  |  |  |  |  |  |  |
| B52.STP.GAT.CV.001 |  | Excavation | 5d | 2024-10-19 | 2024-10-23 | B30.STP.ROD.CV.002 FS+60d |  |  |  | 103d | 0d | Civil Crew [40 h]; Equipment [40 h] | 13,038 |  | B52 | 01 | 01 | 04 | 002 |
| B52.STP.GAT.CV.002 |  | PC | 2d | 2024-10-24 | 2024-10-26 | B52.STP.GAT.CV.001 |  |  |  | 103d | 0d | Civil Crew [64 h] | 8,692 |  | B52 | 01 | 01 | 04 | 002 |
| B52.STP.GAT.CV.003 |  | RC Footing | 3d | 2024-10-27 | 2024-10-29 | B52.STP.GAT.CV.002 |  |  |  | 103d | 85d | Civil Crew [96 h] | 30,422 |  | B52 | 01 | 01 | 04 | 002 |
| B52.STP.GAT.MEC.001 |  | Install Gates | 3d | 2025-02-06 | 2025-02-09 | B52.STP.GAT.CV.003, B52.STP.GAT.MEC.001.03 |  |  |  | 18d | 15d | Civil Crew [96 h]; Equipment [48 h] | 34,768 |  | B52 | 01 | 01 | 04 | 002 |

Notes:
- B28.STP.RMU.ELE.001: Expenses: (New Expense Item) 45870
- B29.STP.ATS.CV.001: Expenses: (New Expense Item) 6513
- B29.STP.ATS.CV.002: Expenses: (New Expense Item) 1303
- B29.STP.ATS.CV.003: Expenses: (New Expense Item) 2171
- B29.STP.ATS.CV.004: Expenses: (New Expense Item) 6513
- B29.STP.ATS.ELE.001: Expenses: (New Expense Item) 24748
- B30.STP.ROD.CV.001: Expenses: (New Expense Item) 54996
- B30.STP.ROD.CV.002: Expenses: (New Expense Item) 82495
- B30.STP.ROD.CV.003: Expenses: (New Expense Item) 82495
- B30.STP.ROD.CV.004: Expenses: (New Expense Item) 192487
- B30.STP.ROD.CV.005: Expenses: (New Expense Item) 137491
- B47.STP.INS.MEC.001: Expenses: (New Expense Item) 30224
- B52.STP.GAT.CV.001: Expenses: (New Expense Item) 13038
- B52.STP.GAT.CV.002: Expenses: (New Expense Item) 8692
- B52.STP.GAT.CV.003: Expenses: (New Expense Item) 30422
- B52.STP.GAT.MEC.001: Expenses: (New Expense Item) 34768

| ID | WBS | Activity | Duration | Start | Finish | Predecessors | Complete | Planned start | Planned finish | Total float | Free float | Resources | Cost | Actual cost | 01.B.O.Q Items | 02.Scope | 04.Discipline | 05.EPS | 03.System |
| --- | --- | --- | --- | --- | --- | --- | --- | --- | --- | --- | --- | --- | --- | --- | --- | --- | --- | --- | --- |
|  | 7 | **Irrigation Networks** |  | 2024-02-03 | 2025-01-14 |  |  |  |  |  |  |  |  |  |  |  |  |  |  |
|  | 1 | **B38-Pipeline Dia. 200mm** |  | 2024-02-03 | 2024-10-03 |  |  |  |  |  |  |  |  |  |  |  |  |  |  |
|  | 1 | **Civil Works** |  | 2024-02-03 | 2024-10-03 |  |  |  |  |  |  |  |  |  |  |  |  |  |  |
| B38.IRR.200.CV.001 |  | Excavation Work Until The Required Depth Is Reached-90% | 128.85d | 2024-02-03 A | 2024-07-25 A | B1.SD.IRR.MEC.001 FF, B1.SD.IRR.MEC.001 | 100% |  |  |  |  | Civil Crew [2394 h]; Equipment [798 h] | 60,977.7 | 60,977.7 | B38 | 01 | 01 | 04 | 003 |
| B38.IRR.200.CV.002 |  | Leveling The Bottom Of The Excavation-90% | 118.85d | 2024-02-14 A | 2024-07-25 A | B38.IRR.200.CV.001 SS+10d | 100% |  |  |  |  | Civil Crew [2154 h] | 12,195.9 | 12,195.9 | B38 | 01 | 01 | 04 | 003 |
| B38.IRR.200.CV.003 |  | Bottom Soil Spreading And Compaction Work Under The Pipes-90% | 109.75d | 2024-02-27 A | 2024-07-25 A | B38.IRR.200.CV.002 SS | 100% |  |  |  |  | Civil Crew [2154 h]; Equipment [718 h] | 20,325.6 | 20,325.6 | B38 | 01 | 01 | 04 | 003 |
| B38.IRR.200.CV.004 |  | Backfilling Works Over Pipes-90% | 79.75d | 2024-04-17 A | 2024-07-25 A | B38.IRR.200.MEC.02 SS | 100% |  |  |  |  | Civil Crew [1554 h]; Equipment [518 h] | 40,652.1 | 40,652.1 | B38 | 01 | 01 | 04 | 003 |
| B38.IRR.200.CV.001.1 |  | Excavation Work Until The Required Depth Is Reached-10% | 8d | 2024-09-01 A | 2024-09-05 A | B38.IRR.200.CV.001 FS+20d | 100% | 2024-08-31 | 2024-09-08 |  |  | Civil Crew [2394 h]; Equipment [798 h] | 6,775.3 | 6,775.3 | B38 | 01 | 01 | 04 | 003 |
| B38.IRR.200.CV.002.1 |  | Leveling The Bottom Of The Excavation-10% | 2d | 2024-10-01 A | 2024-10-01 A | B38.IRR.200.CV.001.1 | 100% | 2024-10-05 | 2024-10-06 |  |  | Civil Crew [2154 h] | 1,355.1 | 1,355.1 | B38 | 01 | 01 | 04 | 003 |
| B38.IRR.200.CV.003.1 |  | Bottom Soil Spreading And Compaction Work Under The Pipes-10% | 3d | 2024-10-02 A | 2024-10-02 A | B38.IRR.200.CV.002.1 | 100% | 2024-10-07 | 2024-10-09 |  |  | Civil Crew [2154 h]; Equipment [718 h] | 2,258.4 | 2,258.4 | B38 | 01 | 01 | 04 | 003 |
| B38.IRR.200.CV.004.1 |  | Backfilling Works Over Pipes-10% | 5d | 2024-10-03 A | 2024-10-03 A | B38.IRR.200.MEC.02.1 | 100% | 2024-10-19 | 2024-10-23 |  |  | Civil Crew [1554 h]; Equipment [518 h] | 4,516.9 | 4,516.9 | B38 | 01 | 01 | 04 | 003 |
|  | 2 | **Mechanical work** |  | 2024-03-17 | 2024-10-03 |  |  |  |  |  |  |  |  |  |  |  |  |  |  |
| B38.IRR.200.MEC.01 |  | Install Pipes-90% | 94.75d | 2024-03-17 A | 2024-07-25 A | B38.IRR.200.CV.003 FF, B38.IRR.200.MEC.001.03 | 100% |  |  |  |  | Mechanical Crew [2392 h]; Equipment | 231,716.7 | 231,716.7 | B38 | 01 | 03 | 04 | 003 |
| B38.IRR.200.MEC.02 |  | Water Pressure Test-90% | 84.75d | 2024-04-04 A | 2024-07-25 A | B38.IRR.200.MEC.01 FF | 100% |  |  |  |  | Mechanical Crew [2072 h] | 20,325.6 | 20,325.6 | B38 | 01 | 03 | 04 | 003 |
| B38.IRR.200.MEC.01.1 |  | Install Pipes-10% | 3d | 2024-10-03 A | 2024-10-03 A | B38.IRR.200.CV.003.1 | 100% | 2024-10-10 | 2024-10-13 |  |  | Mechanical Crew [2392 h]; Equipment | 25,746.3 | 25,746.3 | B38 | 01 | 03 | 04 | 003 |
| B38.IRR.200.MEC.02.1 |  | Water Pressure Test-10% | 4d | 2024-10-03 A | 2024-10-03 A | B38.IRR.200.MEC.01.1 | 100% | 2024-10-14 | 2024-10-17 |  |  | Mechanical Crew [2072 h] | 2,258.4 | 2,258.4 | B38 | 01 | 03 | 04 | 003 |
|  | 3 | **B39-Pipeline Dia. 160mm** |  | 2024-07-15 | 2024-11-23 |  |  |  |  |  |  |  |  |  |  |  |  |  |  |
|  | 1 | **Civil Works** |  | 2024-07-15 | 2024-11-23 |  |  |  |  |  |  |  |  |  |  |  |  |  |  |
| B39.IRR.160.CV.001 |  | Excavation Work Until The Required Depth Is Reached | 10d | 2024-07-15 A | 2024-07-25 A | B1.SD.IRR.MEC.001 | 100% |  |  |  |  | Civil Crew [600 h]; Equipment [200 h] | 47,511 | 47,511 | B39 | 01 | 01 | 04 | 003 |
| B39.IRR.160.CV.002 |  | Leveling The Bottom Of The Excavation-25% | 4d | 2024-07-22 A | 2024-07-25 A | B39.IRR.160.CV.001 SS+10d | 100% |  |  |  |  | Civil Crew [240 h] | 4,751 | 4,751 | B39 | 01 | 01 | 04 | 003 |
| B39.IRR.160.CV.003 |  | Bottom Soil Spreading And Compaction Work Under The Pipes-25% | 1d | 2024-08-07 A | 2024-08-07 A | B39.IRR.160.CV.002 | 100% |  |  |  |  | Civil Crew [240 h]; Equipment [80 h] | 3,959.25 | 3,959.25 | B39 | 01 | 01 | 04 | 003 |
| B39.IRR.160.CV.004 |  | Backfilling Works Over Pipes-25% | 2d | 2024-08-31 A | 2024-10-03 A | B39.IRR.160.MEC.02 | 100% | 2024-08-31 | 2024-09-01 |  |  | Civil Crew [240 h]; Equipment [80 h] | 7,918.5 | 7,918.5 | B39 | 01 | 01 | 04 | 003 |
| B39.IRR.160.CV.002.1 |  | Leveling The Bottom Of The Excavation-75% | 15d | 2024-10-22 | 2024-11-07 | B42.IRR.50.MEC.001.1 |  |  |  | 85d | 0d | Civil Crew [240 h] | 4,751 |  | B39 | 01 | 01 | 04 | 003 |
| B39.IRR.160.CV.003.1 |  | Bottom Soil Spreading And Compaction Work Under The Pipes-75% | 2d | 2024-11-09 | 2024-11-10 | B39.IRR.160.CV.002.1 |  |  |  | 85d | 0d | Civil Crew [240 h]; Equipment [80 h] | 11,877.75 |  | B39 | 01 | 01 | 04 | 003 |
| B39.IRR.160.CV.004.1 |  | Backfilling Works Over Pipes-75% | 3d | 2024-11-20 | 2024-11-23 | B39.IRR.160.MEC.02.1 |  |  |  | 85d | 45d | Civil Crew [240 h]; Equipment [80 h] | 23,755.5 |  | B39 | 01 | 01 | 04 | 003 |

Notes:
- B38.IRR.200.CV.001: Expenses: (New Expense Item) 60977.7
- B38.IRR.200.CV.002: Expenses: (New Expense Item) 12195.9
- B38.IRR.200.CV.003: Expenses: (New Expense Item) 20325.6
- B38.IRR.200.CV.004: Expenses: (New Expense Item) 40652.1
- B38.IRR.200.CV.001.1: Expenses: (New Expense Item) 6775.3
- B38.IRR.200.CV.002.1: Expenses: (New Expense Item) 1355.1
- B38.IRR.200.CV.003.1: Expenses: (New Expense Item) 2258.4
- B38.IRR.200.CV.004.1: Expenses: (New Expense Item) 4516.9
- B38.IRR.200.MEC.01: Expenses: (New Expense Item) 231717
- B38.IRR.200.MEC.02: Expenses: (New Expense Item) 20325.6
- B38.IRR.200.MEC.01.1: Expenses: (New Expense Item) 25746.3
- B38.IRR.200.MEC.02.1: Expenses: (New Expense Item) 2258.4
- B39.IRR.160.CV.001: Expenses: (New Expense Item) 47511
- B39.IRR.160.CV.002: Expenses: (New Expense Item) 4751
- B39.IRR.160.CV.003: Expenses: (New Expense Item) 3959.25
- B39.IRR.160.CV.004: Expenses: (New Expense Item) 7918.5
- B39.IRR.160.CV.002.1: Expenses: (New Expense Item) 4751
- B39.IRR.160.CV.003.1: Expenses: (New Expense Item) 11877.8
- B39.IRR.160.CV.004.1: Expenses: (New Expense Item) 23755.5

| ID | WBS | Activity | Duration | Start | Finish | Predecessors | Complete | Remaining | Planned start | Planned finish | Total float | Free float | Resources | Cost | Actual cost | 01.B.O.Q Items | 02.Scope | 04.Discipline | 05.EPS | 03.System |
| --- | --- | --- | --- | --- | --- | --- | --- | --- | --- | --- | --- | --- | --- | --- | --- | --- | --- | --- | --- | --- |
|  | 2 | **Mechanical work** |  | 2024-08-08 | 2024-11-19 |  |  |  |  |  |  |  |  |  |  |  |  |  |  |  |
| B39.IRR.160.MEC.01 |  | Install Pipes-25% | 3d | 2024-08-08 A | 2024-08-25 A | B39.IRR.160.CV.003, B39.IRR.160.MEC.001.03 | 100% |  | 2024-08-06 | 2024-08-10 |  |  | Mechanical Crew [640 h]; Equipment | 45,136 | 45,136 | B39 | 01 | 03 | 04 | 003 |
| B39.IRR.160.MEC.02 |  | Water Pressure Test-25% | 3d | 2024-08-26 A | 2024-08-28 A | B39.IRR.160.MEC.01 | 100% |  |  |  |  |  | Mechanical Crew [320 h] | 3,959.25 | 3,959.25 | B39 | 01 | 03 | 04 | 003 |
| B39.IRR.160.MEC.01.1 |  | Install Pipes-75% | 4d | 2024-11-11 | 2024-11-14 | B39.IRR.160.CV.003.1 |  |  |  |  | 85d | 0d | Mechanical Crew [640 h]; Equipment | 135,408 |  | B39 | 01 | 03 | 04 | 003 |
| B39.IRR.160.MEC.02.1 |  | Water Pressure Test-75% | 4d | 2024-11-16 | 2024-11-19 | B39.IRR.160.MEC.01.1 |  |  |  |  | 85d | 0d | Mechanical Crew [320 h] | 11,877.75 |  | B39 | 01 | 03 | 04 | 003 |
|  | 2 | **B40-Pipeline Dia. 110mm** |  | 2024-08-15 | 2025-01-14 |  |  |  |  |  |  |  |  |  |  |  |  |  |  |  |
|  | 1 | **Civil Works** |  | 2024-08-15 | 2025-01-14 |  |  |  |  |  |  |  |  |  |  |  |  |  |  |  |
| B40.IRR.110.CV.001 |  | Excavation Work Until The Required Depth Is Reached-50% | 30d | 2024-08-15 A | 2024-10-03 A | B1.SD.IRR.MEC.001 | 100% |  | 2024-08-18 | 2024-09-21 |  |  | Civil Crew [600 h]; Equipment [200 h] | 21,372.5 | 21,372.5 | B40 | 01 | 01 | 04 | 003 |
| B40.IRR.110.CV.002 |  | Leveling The Bottom Of The Excavation-50% | 10d | 2024-08-15 A | 2024-10-03 A | B40.IRR.110.CV.001 SS+10d | 100% |  | 2024-08-29 | 2024-09-09 |  |  | Civil Crew [240 h] | 4,274.5 | 4,274.5 | B40 | 01 | 01 | 04 | 003 |
| B40.IRR.110.CV.003 |  | Bottom Soil Spreading And Compaction Work Under The Pipes-50% | 10d | 2024-08-15 A | 2024-10-03 A | B40.IRR.110.CV.002 SS+10d | 100% |  | 2024-09-10 | 2024-09-21 |  |  | Civil Crew [240 h]; Equipment [80 h] | 7,124 | 7,124 | B40 | 01 | 01 | 04 | 003 |
| B40.IRR.110.CV.004 |  | Backfilling Works Over Pipes-50% | 7d | 2024-09-26 A | 2024-10-03 A | B40.IRR.110.MEC.02 FF | 100% |  | 2024-10-20 | 2024-10-27 |  |  | Civil Crew [240 h]; Equipment [80 h] | 14,248.5 | 14,248.5 | B40 | 01 | 01 | 04 | 003 |
| B40.IRR.110.CV.001.1 |  | Excavation Work Until The Required Depth Is Reached-50% | 15d | 2024-10-19 | 2024-11-04 | B40.IRR.110.CV.001 SS+20d |  |  |  |  | 40d | 0d | Civil Crew [600 h]; Equipment [200 h] | 21,372.5 |  | B40 | 01 | 01 | 04 | 003 |
| B40.IRR.110.CV.002.1 |  | Leveling The Bottom Of The Excavation-50% | 5d | 2024-11-17 | 2024-11-21 | B40.IRR.110.CV.001.1 FS+10d |  |  |  |  | 40d | 0d | Civil Crew [240 h] | 4,274.5 |  | B40 | 01 | 01 | 04 | 003 |
| B40.IRR.110.CV.003.1 |  | Bottom Soil Spreading And Compaction Work Under The Pipes-50% | 10d | 2024-11-28 | 2024-12-09 | B40.IRR.110.CV.002.1 SS+10d |  |  |  |  | 40d | 0d | Civil Crew [240 h]; Equipment [80 h] | 7,124 |  | B40 | 01 | 01 | 04 | 003 |
| B40.IRR.110.CV.004.1 |  | Backfilling Works Over Pipes-50% | 7d | 2025-01-07 | 2025-01-14 | B40.IRR.110.MEC.02.1 |  |  |  |  | 40d | 0d | Civil Crew [240 h]; Equipment [80 h] | 14,248.5 |  | B40 | 01 | 01 | 04 | 003 |
|  | 2 | **Mechanical work** |  | 2024-08-15 | 2025-01-06 |  |  |  |  |  |  |  |  |  |  |  |  |  |  |  |
| B40.IRR.110.MEC.01 |  | Install Pipes-50% | 14d | 2024-08-15 A | 2024-10-03 A | B40.IRR.110.CV.003 FF, B40.IRR.110.MEC.001.03 | 100% |  | 2024-09-22 | 2024-10-08 |  |  | Mechanical Crew [800 h]; Equipment | 81,216 | 81,216 | B40 | 01 | 03 | 04 | 003 |
| B40.IRR.110.MEC.02 |  | Water Pressure Test-50% | 10d | 2024-09-26 A | 2024-10-03 A | B40.IRR.110.MEC.01 FF | 100% |  | 2024-10-08 | 2024-10-19 |  |  | Mechanical Crew [224 h] | 7,124 | 7,124 | B40 | 01 | 03 | 04 | 003 |
| B40.IRR.110.MEC.01.1 |  | Install Pipes-50% | 14d | 2024-12-10 | 2024-12-25 | B40.IRR.110.CV.003.1 |  |  |  |  | 40d | 0d | Mechanical Crew [800 h]; Equipment | 81,216 |  | B40 | 01 | 03 | 04 | 003 |
| B40.IRR.110.MEC.02.1 |  | Water Pressure Test-50% | 10d | 2024-12-26 | 2025-01-06 | B40.IRR.110.MEC.01.1 |  |  |  |  | 40d | 0d | Mechanical Crew [224 h] | 7,124 |  | B40 | 01 | 03 | 04 | 003 |
|  | 4 | **B41-Pipeline Dia. 90mm** |  | 2024-08-17 | 2024-11-21 |  |  |  |  |  |  |  |  |  |  |  |  |  |  |  |
|  | 1 | **Civil Works** |  | 2024-08-17 | 2024-11-21 |  |  |  |  |  |  |  |  |  |  |  |  |  |  |  |
| B41.IRR.90.CV.001 |  | Excavation Work Until The Required Depth Is Reached | 30d | 2024-08-17 A | 2024-11-21 | B39.IRR.160.CV.001, B40.IRR.110.CV.001 SS, B1.SD.IRR.MEC.001 | 50% | 30d | 2024-08-17 | 2024-09-19 | 108d | 0d | Civil Crew [600 h]; Equipment [200 h] | 22,645 | 11,322.5 | B41 | 01 | 01 | 04 | 003 |
| B41.IRR.90.CV.002 |  | Leveling The Bottom Of The Excavation | 10d | 2024-08-20 A | 2024-10-27 | B41.IRR.90.CV.001 SS+10d | 50% | 8d | 2024-08-28 | 2024-09-08 | 108d | 2d | Civil Crew [240 h] | 4,529 | 2,264.5 | B41 | 01 | 01 | 04 | 003 |
| B41.IRR.90.CV.003 |  | Bottom Soil Spreading And Compaction Work Under The Pipes | 10d | 2024-08-20 A | 2024-10-29 | B41.IRR.90.CV.002 FF | 50% | 10d | 2024-09-09 | 2024-09-19 | 106d | 15d | Civil Crew [240 h]; Equipment [80 h] | 7,548 | 3,774 | B41 | 01 | 01 | 04 | 003 |
| B41.IRR.90.CV.004 |  | Backfilling Works Over Pipes | 10d | 2024-10-10 A | 2024-11-16 | B41.IRR.90.MEC.002 FF | 50% | 10d | 2024-11-10 | 2024-11-20 | 91d | 51d | Civil Crew [240 h]; Equipment [80 h] | 15,097 | 7,548.5 | B41 | 01 | 01 | 04 | 003 |

Notes:
- B39.IRR.160.MEC.01: Expenses: (New Expense Item) 45136
- B39.IRR.160.MEC.02: Expenses: (New Expense Item) 3959.25
- B39.IRR.160.MEC.01.1: Expenses: (New Expense Item) 135408
- B39.IRR.160.MEC.02.1: Expenses: (New Expense Item) 11877.8
- B40.IRR.110.CV.001: Expenses: (New Expense Item) 21372.5
- B40.IRR.110.CV.002: Expenses: (New Expense Item) 4274.5
- B40.IRR.110.CV.003: Expenses: (New Expense Item) 7124
- B40.IRR.110.CV.004: Expenses: (New Expense Item) 14248.5
- B40.IRR.110.CV.001.1: Expenses: (New Expense Item) 21372.5
- B40.IRR.110.CV.002.1: Expenses: (New Expense Item) 4274.5
- B40.IRR.110.CV.003.1: Expenses: (New Expense Item) 7124
- B40.IRR.110.CV.004.1: Expenses: (New Expense Item) 14248.5
- B40.IRR.110.MEC.01: Expenses: (New Expense Item) 81216
- B40.IRR.110.MEC.02: Expenses: (New Expense Item) 7124
- B40.IRR.110.MEC.01.1: Expenses: (New Expense Item) 81216
- B40.IRR.110.MEC.02.1: Expenses: (New Expense Item) 7124
- B41.IRR.90.CV.001: Expenses: (New Expense Item) 22645
- B41.IRR.90.CV.002: Expenses: (New Expense Item) 4529
- B41.IRR.90.CV.003: Expenses: (New Expense Item) 7548
- B41.IRR.90.CV.004: Expenses: (New Expense Item) 15097

| ID | WBS | Activity | Duration | Start | Finish | Predecessors | Complete | Remaining | Planned start | Planned finish | Total float | Free float | Resources | Cost | Actual cost | 01.B.O.Q Items | 02.Scope | 04.Discipline | 05.EPS | 03.System |
| --- | --- | --- | --- | --- | --- | --- | --- | --- | --- | --- | --- | --- | --- | --- | --- | --- | --- | --- | --- | --- |
|  | 2 | **Mechanical work** |  | 2024-08-21 | 2024-11-16 |  |  |  |  |  |  |  |  |  |  |  |  |  |  |  |
| B41.IRR.90.MEC.001 |  | Install Pipes | 25d | 2024-08-21 A | 2024-11-16 | B41.IRR.90.CV.003 FF, B41.IRR.90.MEC.001.03 | 50% | 25d | 2024-09-21 | 2024-10-20 | 91d | 0d | Mechanical Crew [800 h]; Equipment | 86,050 | 43,025 | B41 | 01 | 03 | 04 | 003 |
| B41.IRR.90.MEC.002 |  | Water Pressure Test | 15d | 2024-10-03 A | 2024-11-16 | B41.IRR.90.MEC.001 FF | 50% | 15d | 2024-11-03 | 2024-11-19 | 91d | 0d | Mechanical Crew [480 h] | 7,548 | 3,774 | B41 | 01 | 03 | 04 | 003 |
|  | 5 | **B42-Pipeline Dia. 50mm** |  | 2024-03-17 | 2024-11-10 |  |  |  |  |  |  |  |  |  |  |  |  |  |  |  |
|  | 1 | **Civil Works** |  | 2024-03-17 | 2024-10-21 |  |  |  |  |  |  |  |  |  |  |  |  |  |  |  |
| B42.IRR.50.CV.001 |  | Excavation Work Until The Required Depth Is Reached-90% | 100.75d | 2024-03-17 A | 2024-08-01 A | B38.IRR.200.MEC.001.03, B1.SD.IRR.MEC.001 | 100% |  |  |  |  |  | Civil Crew [5508 h] | 25,009.2 | 25,009.2 | B42 | 01 | 01 | 04 | 003 |
| B42.IRR.50.CV.002 |  | Leveling The Bottom Of The Excavation-90% | 85.75d | 2024-04-17 A | 2024-08-01 A | B42.IRR.50.CV.001 SS+15d | 100% |  |  |  |  |  | Civil Crew [2034 h] | 5,002.2 | 5,002.2 | B42 | 01 | 01 | 04 | 003 |
| B42.IRR.50.CV.003 |  | Bottom Soil Spreading And Compaction Work Under The Pipes-90% | 85.75d | 2024-04-17 A | 2024-08-01 A | B42.IRR.50.CV.002 SS | 100% |  |  |  |  |  | Civil Crew [4068 h] | 8,336.7 | 8,336.7 | B42 | 01 | 01 | 04 | 003 |
| B42.IRR.50.CV.004 |  | Backfilling Works Over Pipes-90% | 45.75d | 2024-06-03 A | 2024-08-01 A | B42.IRR.50.MEC.003 FF | 100% |  |  |  |  |  | Civil Crew [2148 h] | 16,672.5 | 16,672.5 | B42 | 01 | 01 | 04 | 003 |
| B42.IRR.50.CV.001.01 |  | Excavation Work Until The Required Depth Is Reached-10% | 8d | 2024-09-12 A | 2024-09-22 A | B42.IRR.50.CV.004 | 100% |  | 2024-10-09 | 2024-10-17 |  |  | Civil Crew [5508 h] | 2,778.8 | 2,778.8 | B42 | 01 | 01 | 04 | 003 |
| B42.IRR.50.CV.002.01 |  | Leveling The Bottom Of The Excavation-10% | 2d | 2024-09-12 A | 2024-09-22 A | B42.IRR.50.CV.001.01 FF | 100% |  | 2024-10-19 | 2024-10-20 |  |  | Civil Crew [2034 h] | 555.8 | 555.8 | B42 | 01 | 01 | 04 | 003 |
| B42.IRR.50.CV.004.01 |  | Backfilling Works Over Pipes-10% | 2d | 2024-10-07 A | 2024-10-21 | B42.IRR.50.MEC.003.1 FF | 25% | 2d | 2024-10-21 | 2024-10-22 | 113d | 73d | Civil Crew [2148 h] | 1,852.5 | 463.12 | B42 | 01 | 01 | 04 | 003 |
| B42.IRR.50.CV.003.01 |  | Bottom Soil Spreading And Compaction Work Under The Pipes-10% | 2d | 2024-10-10 A | 2024-10-20 | B42.IRR.50.CV.002.01 | 25% | 2d | 2024-10-12 | 2024-10-13 | 86d | 1d | Civil Crew [4068 h] | 926.3 | 231.57 | B42 | 01 | 01 | 04 | 003 |
|  | 2 | **Mechanical work** |  | 2024-05-22 | 2024-11-10 |  |  |  |  |  |  |  |  |  |  |  |  |  |  |  |
| B42.IRR.50.MEC.003 |  | Pressure Water Test Work-90% | 55.75d | 2024-05-22 A | 2024-08-01 A | B42.IRR.50.MEC.001 FF | 100% |  |  |  |  |  | Mechanical Crew [1752 h] | 8,336.7 | 8,336.7 | B42 | 01 | 03 | 04 | 003 |
| B42.IRR.50.MEC.001 |  | Install Pipes, VaLves & Valve Chamber & Accessories-90% | 50.75d | 2024-05-28 A | 2024-08-01 A | B42.IRR.50.CV.003 FF, B42.IRR.50.MEC.001.03 FF | 100% |  |  |  |  |  | Mechanical Crew [1592 h] | 83,362.5 | 83,362.5 | B42 | 01 | 03 | 04 | 003 |
| B42.IRR.50.MEC.001.1 |  | Install Pipes, VaLves & VaLVe Chamber & Accessories-10% | 3d | 2024-10-07 A | 2024-10-21 | B42.IRR.50.CV.003.01 FF | 25% | 3d | 2024-10-14 | 2024-10-16 | 85d | 0d | Mechanical Crew [1592 h] | 9,262.5 | 2,315.62 | B42 | 01 | 03 | 04 | 003 |
| B42.IRR.50.MEC.003.1 |  | Pressure Water Test Work-10% | 3d | 2024-10-10 A | 2024-10-21 | B42.IRR.50.MEC.001.1 FF | 25% | 3d | 2024-10-17 | 2024-10-20 | 113d | 0d | Mechanical Crew [1752 h] | 926.3 | 231.57 | B42 | 01 | 03 | 04 | 003 |
| B42.IRR.50.MEC.002 |  | Install Bubblers, Drippers, Quick Coupling & Sprinklers-90% | 10d | 2024-10-19 | 2024-10-29 | B42.IRR.50.MEC.002.03 |  |  |  |  | 96d | 0d | Mechanical Crew [480 h] | 11,671.2 |  | B42 | 01 | 03 | 04 | 003 |
| B42.IRR.50.MEC.002.1 |  | Install Bubblers, Drippers, Quick Coupling & Sprinklers-10% | 10d | 2024-10-30 | 2024-11-10 | B42.IRR.50.MEC.002 |  |  |  |  | 96d | 0d | Mechanical Crew [480 h] | 1,296.8 |  | B42 | 01 | 03 | 04 | 003 |
|  | 6 | **B43-Pipeline Dia. 32mm** |  | 2024-03-17 | 2024-11-10 |  |  |  |  |  |  |  |  |  |  |  |  |  |  |  |
|  | 1 | **Civil Works** |  | 2024-03-17 | 2024-10-21 |  |  |  |  |  |  |  |  |  |  |  |  |  |  |  |
| B43.IRR.32.CV.001 |  | Excavation Work Until The Required Depth Is Reached-90% | 100.75d | 2024-03-17 A | 2024-08-01 A | B42.IRR.50.CV.001 SS, B1.SD.IRR.MEC.001 | 100% |  |  |  |  |  | Civil Crew [5508 h] | 97,397.1 | 97,397.1 | B43 | 01 | 01 | 04 | 003 |
| B43.IRR.32.CV.002 |  | Leveling The Bottom Of The Excavation-90% | 85.75d | 2024-04-17 A | 2024-08-01 A | B43.IRR.32.CV.001 SS+15d | 100% |  |  |  |  |  | Civil Crew [2034 h] | 19,479.6 | 19,479.6 | B43 | 01 | 01 | 04 | 003 |
| B43.IRR.32.CV.003 |  | Bottom Soil Spreading And Compaction Work Under The Pipes-90% | 85.75d | 2024-04-17 A | 2024-08-01 A | B43.IRR.32.CV.002 SS | 100% |  |  |  |  |  | Civil Crew [4068 h] | 32,465.7 | 32,465.7 | B43 | 01 | 01 | 04 | 003 |
| B43.IRR.32.CV.004 |  | Backfilling Works Over Pipes-90% | 45.75d | 2024-06-03 A | 2024-08-01 A | B43.IRR.32.MEC.003 FF | 100% |  |  |  |  |  | Civil Crew [2148 h] | 64,931.4 | 64,931.4 | B43 | 01 | 01 | 04 | 003 |
| B43.IRR.32.CV.001.01 |  | Excavation Work Until The Required Depth Is Reached-10% | 8d | 2024-09-12 A | 2024-09-22 A | B42.IRR.50.CV.001.01 SS | 100% |  | 2024-10-09 | 2024-10-17 |  |  | Civil Crew [5508 h] | 10,821.9 | 10,821.9 | B43 | 01 | 01 | 04 | 003 |
| B43.IRR.32.CV.002.01 |  | Leveling The Bottom Of The Excavation-10% | 2d | 2024-09-12 A | 2024-09-22 A | B43.IRR.32.CV.001.01 FF | 100% |  | 2024-10-19 | 2024-10-20 |  |  | Civil Crew [2034 h] | 2,164.4 | 2,164.4 | B43 | 01 | 01 | 04 | 003 |
| B43.IRR.32.CV.004.01 |  | Backfilling Works Over Pipes-10% | 2d | 2024-10-07 A | 2024-10-21 | B43.IRR.32.MEC.003.1 FF | 25% | 2d | 2024-10-21 | 2024-10-22 | 113d | 73d | Civil Crew [2148 h] | 7,214.6 | 1,803.65 | B43 | 01 | 01 | 04 | 003 |
| B43.IRR.32.CV.003.01 |  | Bottom Soil Spreading And Compaction Work Under The Pipes-10% | 2d | 2024-10-10 A | 2024-10-20 | B43.IRR.32.CV.002.01 | 25% | 2d | 2024-10-12 | 2024-10-13 | 114d | 1d | Civil Crew [4068 h] | 3,607.3 | 901.83 | B43 | 01 | 01 | 04 | 003 |

Notes:
- B41.IRR.90.MEC.001: Expenses: (New Expense Item) 86050
- B41.IRR.90.MEC.002: Expenses: (New Expense Item) 7548
- B42.IRR.50.CV.001: Expenses: (New Expense Item) 25009.2
- B42.IRR.50.CV.002: Expenses: (New Expense Item) 5002.2
- B42.IRR.50.CV.003: Expenses: (New Expense Item) 8336.7
- B42.IRR.50.CV.004: Expenses: (New Expense Item) 16672.5
- B42.IRR.50.CV.001.01: Expenses: (New Expense Item) 2778.8
- B42.IRR.50.CV.002.01: Expenses: (New Expense Item) 555.8
- B42.IRR.50.CV.004.01: Expenses: (New Expense Item) 1852.5
- B42.IRR.50.CV.003.01: Expenses: (New Expense Item) 926.3
- B42.IRR.50.MEC.003: Expenses: (New Expense Item) 8336.7
- B42.IRR.50.MEC.001: Expenses: (New Expense Item) 83362.5
- B42.IRR.50.MEC.001.1: Expenses: (New Expense Item) 9262.5
- B42.IRR.50.MEC.003.1: Expenses: (New Expense Item) 926.3
- B42.IRR.50.MEC.002: Expenses: (New Expense Item) 11671.2
- B42.IRR.50.MEC.002.1: Expenses: (New Expense Item) 1296.8
- B43.IRR.32.CV.001: Expenses: (New Expense Item) 97397.1
- B43.IRR.32.CV.002: Expenses: (New Expense Item) 19479.6
- B43.IRR.32.CV.003: Expenses: (New Expense Item) 32465.7
- B43.IRR.32.CV.004: Expenses: (New Expense Item) 64931.4
- B43.IRR.32.CV.001.01: Expenses: (New Expense Item) 10821.9
- B43.IRR.32.CV.002.01: Expenses: (New Expense Item) 2164.4
- B43.IRR.32.CV.004.01: Expenses: (New Expense Item) 7214.6
- B43.IRR.32.CV.003.01: Expenses: (New Expense Item) 3607.3

| ID | WBS | Activity | Duration | Start | Finish | Predecessors | Complete | Remaining | Planned start | Planned finish | Total float | Free float | Resources | Cost | Actual cost | 01.B.O.Q Items | 02.Scope | 04.Discipline | 05.EPS | 03.System |
| --- | --- | --- | --- | --- | --- | --- | --- | --- | --- | --- | --- | --- | --- | --- | --- | --- | --- | --- | --- | --- |
|  | 2 | **Mechanical work** |  | 2024-05-22 | 2024-11-10 |  |  |  |  |  |  |  |  |  |  |  |  |  |  |  |
| B43.IRR.32.MEC.003 |  | Pressure Water Test Work-90% | 55.75d | 2024-05-22 A | 2024-08-01 A | B43.IRR.32.MEC.001 FF | 100% |  |  |  |  |  | Mechanical Crew [1752 h] | 32,465.7 | 32,465.7 | B43 | 01 | 03 | 04 | 003 |
| B43.IRR.32.MEC.001 |  | Install Pipes, VaLves & Valve Chamber & Accessories-90% | 50.75d | 2024-05-28 A | 2024-08-01 A | B43.IRR.32.CV.003 FF, B43.IRR.32.MEC.001.03 FF | 100% |  |  |  |  |  | Mechanical Crew [1592 h] | 324,656.1 | 324,656.1 | B43 | 01 | 03 | 04 | 003 |
| B43.IRR.32.MEC.001.1 |  | Install Pipes, VaLves & VaLVe Chamber & Accessories-10% | 3d | 2024-10-07 A | 2024-10-21 | B43.IRR.32.CV.003.01 FF | 25% | 3d | 2024-10-14 | 2024-10-16 | 113d | 0d | Mechanical Crew [1592 h] | 36,072.9 | 9,018.23 | B43 | 01 | 03 | 04 | 003 |
| B43.IRR.32.MEC.003.1 |  | Pressure Water Test Work-10% | 3d | 2024-10-10 A | 2024-10-21 | B43.IRR.32.MEC.001.1 FF | 25% | 3d | 2024-10-17 | 2024-10-20 | 113d | 0d | Mechanical Crew [1752 h] | 3,607.3 | 901.83 | B43 | 01 | 03 | 04 | 003 |
| B43.IRR.32.MEC.002 |  | Install Bubblers, Drippers, Quick Coupling & Sprinklers-90% | 10d | 2024-10-30 | 2024-11-10 | B43.IRR.32.MEC.002.03, B42.IRR.50.MEC.002.1 SS |  |  |  |  | 96d | 0d | Mechanical Crew [480 h] | 45,451.8 |  | B43 | 01 | 03 | 04 | 003 |
| B43.IRR.32.MEC.002.1 |  | Install Bubblers, Drippers, Quick Coupling & Sprinklers-10% | 10d | 2024-10-30 | 2024-11-10 | B43.IRR.32.MEC.002 SS |  |  |  |  | 96d | 0d | Mechanical Crew [480 h] | 5,050.2 |  | B43 | 01 | 03 | 04 | 003 |
|  | 7 | **B44-Pipeline Dia. 32-16mm** |  | 2024-03-17 | 2024-11-10 |  |  |  |  |  |  |  |  |  |  |  |  |  |  |  |
|  | 1 | **Civil Works** |  | 2024-03-17 | 2024-10-21 |  |  |  |  |  |  |  |  |  |  |  |  |  |  |  |
| B44.IRR.16.CV.001 |  | Excavation Work Until The Required Depth Is Reached-90% | 100.75d | 2024-03-17 A | 2024-08-01 A | B43.IRR.32.CV.001 SS, B1.SD.IRR.MEC.001 | 100% |  |  |  |  |  | Civil Crew [5508 h] | 60,725.7 | 60,725.7 | B44 | 01 | 01 | 04 | 003 |
| B44.IRR.16.CV.002 |  | Leveling The Bottom Of The Excavation-90% | 85.75d | 2024-04-17 A | 2024-08-01 A | B44.IRR.16.CV.001 SS+15d | 100% |  |  |  |  |  | Civil Crew [2034 h] | 12,145.5 | 12,145.5 | B44 | 01 | 01 | 04 | 003 |
| B44.IRR.16.CV.003 |  | Bottom Soil Spreading And Compaction Work Under The Pipes-90% | 85.75d | 2024-04-17 A | 2024-08-01 A | B44.IRR.16.CV.002 SS | 100% |  |  |  |  |  | Civil Crew [4068 h] | 20,241.9 | 20,241.9 | B44 | 01 | 01 | 04 | 003 |
| B44.IRR.16.CV.004 |  | Backfilling Works Over Pipes-90% | 45.75d | 2024-06-03 A | 2024-08-01 A | B44.IRR.16.MEC.003 FF | 100% |  |  |  |  |  | Civil Crew [3348 h] | 40,483.8 | 40,483.8 | B44 | 01 | 01 | 04 | 003 |
| B44.IRR.16.CV.001.1 |  | Excavation Work Until The Required Depth Is Reached-10% | 8d | 2024-09-12 A | 2024-09-22 A | B43.IRR.32.CV.001.01 SS | 100% |  | 2024-10-09 | 2024-10-17 |  |  | Civil Crew [5508 h] | 6,747.3 | 6,747.3 | B44 | 01 | 01 | 04 | 003 |
| B44.IRR.16.CV.002.1 |  | Leveling The Bottom Of The Excavation-10% | 2d | 2024-09-12 A | 2024-09-22 A | B44.IRR.16.CV.001.1 FF | 100% |  | 2024-10-19 | 2024-10-20 |  |  | Civil Crew [2034 h] | 1,349.5 | 1,349.5 | B44 | 01 | 01 | 04 | 003 |
| B44.IRR.16.CV.004.1 |  | Backfilling Works Over Pipes-10% | 2d | 2024-10-07 A | 2024-10-21 | B44.IRR.16.MEC.003.1 FF | 25% | 2d | 2024-10-21 | 2024-10-22 | 113d | 73d | Civil Crew [3348 h] | 4,498.2 | 1,124.55 | B44 | 01 | 01 | 04 | 003 |
| B44.IRR.16.CV.003.1 |  | Bottom Soil Spreading And Compaction Work Under The Pipes-10% | 2d | 2024-10-10 A | 2024-10-20 | B44.IRR.16.CV.002.1 | 25% | 2d | 2024-10-12 | 2024-10-13 | 114d | 1d | Civil Crew [4068 h] | 2,249.1 | 562.27 | B44 | 01 | 01 | 04 | 003 |
|  | 2 | **Mechanical work** |  | 2024-05-22 | 2024-11-10 |  |  |  |  |  |  |  |  |  |  |  |  |  |  |  |
| B44.IRR.16.MEC.003 |  | Pressure Water Test Work-90% | 55.75d | 2024-05-22 A | 2024-08-01 A | B44.IRR.16.MEC.001 FF | 100% |  |  |  |  |  | Mechanical Crew [2552 h] | 20,241.9 | 20,241.9 | B44 | 01 | 03 | 04 | 003 |
| B44.IRR.16.MEC.001 |  | Install Pipes, VaLves & Valve Chamber & Accessories-90% | 50.75d | 2024-05-28 A | 2024-08-01 A | B44.IRR.16.CV.003 FF, B44.IRR.16.MEC.001.03 FF | 100% |  |  |  |  |  | Mechanical Crew [2392 h] | 202,418.1 | 202,418.1 | B44 | 01 | 03 | 04 | 003 |
| B44.IRR.16.MEC.001.1 |  | Install Pipes, VaLves & VaLVe Chamber & Accessories-10% | 3d | 2024-10-07 A | 2024-10-21 | B44.IRR.16.CV.002.1, B44.IRR.16.CV.003.1 FF | 25% | 3d | 2024-10-14 | 2024-10-16 | 113d | 0d | Mechanical Crew [2392 h] | 22,490.9 | 5,622.73 | B44 | 01 | 03 | 04 | 003 |
| B44.IRR.16.MEC.003.1 |  | Pressure Water Test Work-10% | 3d | 2024-10-10 A | 2024-10-21 | B44.IRR.16.MEC.001.1 FF | 25% | 3d | 2024-10-17 | 2024-10-20 | 113d | 0d | Mechanical Crew [2552 h] | 2,249.1 | 562.27 | B44 | 01 | 03 | 04 | 003 |
| B44.IRR.16.MEC.002 |  | Install Bubblers, Drippers, Quick Coupling & Sprinklers-90% | 10d | 2024-10-30 | 2024-11-10 | B44.IRR.16.MEC.002.03, B43.IRR.32.MEC.002.1 SS, B44.IRR.16.MEC.002.4 |  |  |  |  | 96d | 0d | Mechanical Crew [480 h] | 28,338.3 |  | B44 | 01 | 03 | 04 | 003 |
| B44.IRR.16.MEC.002.1 |  | Install Bubblers, Drippers, Quick Coupling & Sprinklers-10% | 10d | 2024-10-30 | 2024-11-10 | B44.IRR.16.MEC.002 SS, B44.IRR.16.MEC.002.4 |  |  |  |  | 96d | 56d | Mechanical Crew [480 h] | 3,148.7 |  | B44 | 01 | 03 | 04 | 003 |

Notes:
- B43.IRR.32.MEC.003: Expenses: (New Expense Item) 32465.7
- B43.IRR.32.MEC.001: Expenses: (New Expense Item) 324656
- B43.IRR.32.MEC.001.1: Expenses: (New Expense Item) 36072.9
- B43.IRR.32.MEC.003.1: Expenses: (New Expense Item) 3607.3
- B43.IRR.32.MEC.002: Expenses: (New Expense Item) 45451.8
- B43.IRR.32.MEC.002.1: Expenses: (New Expense Item) 5050.2
- B44.IRR.16.CV.001: Expenses: (New Expense Item) 60725.7
- B44.IRR.16.CV.002: Expenses: (New Expense Item) 12145.5
- B44.IRR.16.CV.003: Expenses: (New Expense Item) 20241.9
- B44.IRR.16.CV.004: Expenses: (New Expense Item) 40483.8
- B44.IRR.16.CV.001.1: Expenses: (New Expense Item) 6747.3
- B44.IRR.16.CV.002.1: Expenses: (New Expense Item) 1349.5
- B44.IRR.16.CV.004.1: Expenses: (New Expense Item) 4498.2
- B44.IRR.16.CV.003.1: Expenses: (New Expense Item) 2249.1
- B44.IRR.16.MEC.003: Expenses: (New Expense Item) 20241.9
- B44.IRR.16.MEC.001: Expenses: (New Expense Item) 202418
- B44.IRR.16.MEC.001.1: Expenses: (New Expense Item) 22490.9
- B44.IRR.16.MEC.003.1: Expenses: (New Expense Item) 2249.1
- B44.IRR.16.MEC.002: Expenses: (New Expense Item) 28338.3
- B44.IRR.16.MEC.002.1: Expenses: (New Expense Item) 3148.7

| ID | WBS | Activity | Duration | Start | Finish | Predecessors | Total float | Free float | Resources | Cost | 01.B.O.Q Items | 02.Scope | 04.Discipline | 05.EPS | 03.System |
| --- | --- | --- | --- | --- | --- | --- | --- | --- | --- | --- | --- | --- | --- | --- | --- |
|  | 8 | **B45-Irrigation Controller System** |  | 2024-10-19 | 2024-10-29 |  |  |  |  |  |  |  |  |  |  |
|  | 2 | **Electrical Work** |  | 2024-10-19 | 2024-10-29 |  |  |  |  |  |  |  |  |  |  |
| B45.IRR.COS.MEC.001 |  | Install For Irrigation Controller System | 7d | 2024-10-19 | 2024-10-26 | B45.IRR.COS.MEC.001.03, B1.SD.IRR.ELE.001 | 136d | 0d | Electrical Crew [224 h] | 20,614 | B45 | 01 | 04 | 04 | 003 |
| B45.IRR.COS.MEC.002 |  | Install Irrigation Network Cables, Decoder, Solenoid Valve,&Accessories | 10d | 2024-10-19 | 2024-10-29 | B45.IRR.COS.MEC.001 SS, B45.IRR.COS.MEC.002.03, B1.SD.IRR.ELE.001 | 136d | 96d | Electrical Crew [320 h] | 3,865 | B45 | 01 | 04 | 04 | 003 |
|  | 9 | **B46-Irrigation Pumps** |  | 2024-11-24 | 2024-12-10 |  |  |  |  |  |  |  |  |  |  |
|  | 2 | **Mechanical work** |  | 2024-11-24 | 2024-12-10 |  |  |  |  |  |  |  |  |  |  |
| B46.IRR.PUM.MEC.001 |  | Install Pump, VaLves, Digital Flow Meter, Disk Filter & Accessories | 15d | 2024-11-24 | 2024-12-10 | B44.IRR.16.MEC.003, B43.IRR.32.MEC.003, B42.IRR.50.MEC.003, B41.IRR.90.MEC.002, B40.IRR.110.MEC.02, B39.IRR.160.MEC.02, B38.IRR.200.MEC.02, B46.IRR.PUM.MEC.001.03, B38.IRR.200.CV.004.1 | 100d | 60d | Mechanical Crew [360 h] | 142,232 | B46 | 01 | 03 | 04 | 003 |
|  | 2 | **Refurbishment** |  | 2024-05-22 | 2025-02-24 |  |  |  |  |  |  |  |  |  |  |
|  | 1 | **WTP** |  | 2024-11-05 | 2025-02-24 |  |  |  |  |  |  |  |  |  |  |
|  | 1 | **B02-Existing Water Deep Well** |  | 2025-01-13 | 2025-02-24 |  |  |  |  |  |  |  |  |  |  |
|  | 1 | **Mechanical work** |  | 2025-01-13 | 2025-02-24 |  |  |  |  |  |  |  |  |  |  |
| B2.REF.WTP.WEL.MEC.001 |  | Lifting The Pipes And Pumps From The Well | 10d | 2025-01-13 | 2025-01-23 | B49.WTP.WEL.ELE.001 | 6d | 0d | Mechanical Crew [160 h] | 122,299 | B02 | 02 | 03 | 04 | 001 |
| B2.REF.WTP.WEL.MEC.002 |  | Inspection Of Pipes And Pump And Man Tine The Nassery | 7d | 2025-01-25 | 2025-02-01 | B2.REF.WTP.WEL.MEC.001 | 6d | 0d | Mechanical Crew [112 h] | 34,942 | B02 | 02 | 03 | 04 | 001 |
| B2.REF.WTP.WEL.MEC.003 |  | Re-Install The Pipes And Pumps | 10d | 2025-02-02 | 2025-02-12 | B2.REF.WTP.WEL.MEC.002 | 6d | 0d | Mechanical Crew [80 h] | 139,770 | B02 | 02 | 03 | 04 | 001 |
| B2.REF.WTP.WEL.MEC.004 |  | Refurbishment The Gate Valve | 7d | 2025-02-13 | 2025-02-20 | B2.REF.WTP.WEL.MEC.003 | 6d | 0d | Mechanical Crew [112 h] | 17,471 | B02 | 02 | 03 | 04 | 001 |
| B2.REF.WTP.WEL.MEC.005 |  | Change The Flow Meter | 2d | 2025-02-23 | 2025-02-24 | B2.REF.WTP.WEL.MEC.004 | 6d |  | Mechanical Crew [32 h] | 17,471 | B02 | 02 | 03 | 04 | 001 |
|  | 2 | **B03-Existing Water Treatment Plant** |  | 2024-11-05 | 2024-12-15 |  |  |  |  |  |  |  |  |  |  |
|  | 1 | **Architectural work** |  | 2024-11-05 | 2024-11-27 |  |  |  |  |  |  |  |  |  |  |
| B3.REF.WTP.PLA.ARC.001 |  | Painting Work | 20d | 2024-11-05 | 2024-11-27 | B4.WTP.EQ.ELE.015 | 66d | 0d | Architectural Crew [640 h] | 6,441 | B03 | 02 | 02 | 04 | 001 |
| B3.REF.WTP.PLA.ARC.002 |  | Ground Finishing Epoxy | 20d | 2024-11-05 | 2024-11-27 | B3.REF.WTP.PLA.ARC.001 SS | 66d | 0d | Architectural Crew [640 h] | 12,882 | B03 | 02 | 02 | 04 | 001 |
|  | 2 | **Mechanical work** |  | 2024-11-28 | 2024-12-15 |  |  |  |  |  |  |  |  |  |  |
| B3.REF.WTP.PLA.MEC.002 |  | Install R.O Membrane | 15d | 2024-11-28 | 2024-12-15 | B3.REF.WTP.PLA.ARC.002 | 66d |  | Mechanical Crew [480 h] | 51,530 | B03 | 02 | 03 | 04 | 001 |
| B3.REF.WTP.PLA.MEC.004 |  | Install Malte Media For Sand Filter | 7d | 2024-11-28 | 2024-12-05 | B3.REF.WTP.PLA.ARC.002 | 74d |  | Mechanical Crew [224 h] | 16,103 | B03 | 02 | 03 | 04 | 001 |
| B3.REF.WTP.PLA.MEC.006 |  | Install Dosing Pump | 5d | 2024-11-28 | 2024-12-03 | B3.REF.WTP.PLA.ARC.002 | 76d |  | Mechanical Crew [160 h] | 51,530 | B03 | 02 | 03 | 04 | 001 |
| B3.REF.WTP.PLA.MEC.008 |  | Install Chemical Dosing Tanks | 2d | 2024-11-28 | 2024-11-30 | B3.REF.WTP.PLA.ARC.002 | 79d |  | Mechanical Crew [64 h] | 51,530 | B03 | 02 | 03 | 04 | 001 |
| B3.REF.WTP.PLA.MEC.010 |  | Install Cartridge Filter | 2d | 2024-11-28 | 2024-11-30 | B3.REF.WTP.PLA.ARC.002 | 79d |  | Mechanical Crew [64 h] | 51,530 | B03 | 02 | 03 | 04 | 001 |

Notes:
- B45.IRR.COS.MEC.001: Expenses: (New Expense Item) 20614
- B45.IRR.COS.MEC.002: Expenses: (New Expense Item) 3865
- B46.IRR.PUM.MEC.001: Expenses: (New Expense Item) 142232
- B2.REF.WTP.WEL.MEC.001: Expenses: (New Expense Item) 122299
- B2.REF.WTP.WEL.MEC.002: Expenses: (New Expense Item) 34942
- B2.REF.WTP.WEL.MEC.003: Expenses: (New Expense Item) 139770
- B2.REF.WTP.WEL.MEC.004: Expenses: (New Expense Item) 17471
- B2.REF.WTP.WEL.MEC.005: Expenses: (New Expense Item) 17471
- B3.REF.WTP.PLA.ARC.001: Expenses: (New Expense Item) 6441
- B3.REF.WTP.PLA.ARC.002: Expenses: (New Expense Item) 12882
- B3.REF.WTP.PLA.MEC.002: Expenses: (New Expense Item) 51530
- B3.REF.WTP.PLA.MEC.004: Expenses: (New Expense Item) 16103
- B3.REF.WTP.PLA.MEC.006: Expenses: (New Expense Item) 51530
- B3.REF.WTP.PLA.MEC.008: Expenses: (New Expense Item) 51530
- B3.REF.WTP.PLA.MEC.010: Expenses: (New Expense Item) 51530

| ID | WBS | Activity | Duration | Start | Finish | Predecessors | Total float | Free float | Resources | Cost | 01.B.O.Q Items | 02.Scope | 04.Discipline | 05.EPS | 03.System |
| --- | --- | --- | --- | --- | --- | --- | --- | --- | --- | --- | --- | --- | --- | --- | --- |
|  | 3 | **Electrical Work** |  | 2024-11-28 | 2024-12-09 |  |  |  |  |  |  |  |  |  |  |
| B3.REF.WTP.PLA.ELE.001 |  | Internal Lighting | 10d | 2024-11-28 | 2024-12-09 | B3.REF.WTP.PLA.ARC.001 | 71d |  | Electrical Crew [320 h] | 6,441 | B03 | 02 | 04 | 04 | 001 |
| B3.REF.WTP.PLA.ELE.002 |  | External Lighting | 10d | 2024-11-28 | 2024-12-09 | B3.REF.WTP.PLA.ARC.001 | 71d |  | Electrical Crew [320 h] | 6,441 | B03 | 02 | 04 | 04 | 001 |
| B3.REF.WTP.PLA.ELE.003 |  | Wiring Devices | 10d | 2024-11-28 | 2024-12-09 | B3.REF.WTP.PLA.ARC.001 | 71d |  | Electrical Crew [320 h] | 3,221 | B03 | 02 | 04 | 04 | 001 |
| B3.REF.WTP.PLA.ELE.004 |  | Low Voltage Cables | 10d | 2024-11-28 | 2024-12-09 | B3.REF.WTP.PLA.ARC.001 | 71d |  | Electrical Crew [320 h] | 16,103 | B03 | 02 | 04 | 04 | 001 |
| B3.REF.WTP.PLA.ELE.005 |  | EMCC , MDB , ATS , PFC | 4d | 2024-11-28 | 2024-12-02 | B3.REF.WTP.PLA.ARC.001 | 77d |  | Electrical Crew [128 h] | 16,103 | B03 | 02 | 04 | 04 | 001 |
| B3.REF.WTP.PLA.ELE.006 |  | Earthing And Lighting | 10d | 2024-11-28 | 2024-12-09 | B3.REF.WTP.PLA.ARC.001 | 71d |  | Electrical Crew [320 h] | 3,221 | B03 | 02 | 04 | 04 | 001 |
| B3.REF.WTP.PLA.ELE.007 |  | Cable Tray And Fittings | 2d | 2024-11-28 | 2024-11-30 | B3.REF.WTP.PLA.ARC.001 | 79d |  | Electrical Crew [64 h] | 3,221 | B03 | 02 | 04 | 04 | 001 |
| B3.REF.WTP.PLA.ELE.008 |  | Building Wires | 10d | 2024-11-28 | 2024-12-09 | B3.REF.WTP.PLA.ARC.001 | 71d |  | Electrical Crew [320 h] | 3,221 | B03 | 02 | 04 | 04 | 001 |
| B3.REF.WTP.PLA.ELE.009 |  | Emt Pipes Boles And Fittings | 10d | 2024-11-28 | 2024-12-09 | B3.REF.WTP.PLA.ARC.001 | 71d |  | Electrical Crew [320 h] | 6,441 | B03 | 02 | 04 | 04 | 001 |
|  | 3 | **B51-Gate Valve Maintennce** |  | 2024-11-28 | 2024-12-25 |  |  |  |  |  |  |  |  |  |  |
|  | 1 | **Civil Work** |  | 2024-11-28 | 2024-12-25 |  |  |  |  |  |  |  |  |  |  |
| B51.REF.WTP.GVM.CV.001 |  | Excavation Work Until The Required Depth Is Reached | 3d | 2024-11-28 | 2024-12-01 | B20.WTP.HC.MEC.002 | 57d | 0d | Civil Crew [72 h]; Equipment [24 h] | 4,182 | B51 | 02 | 01 | 04 | 001 |
| B51.REF.WTP.GVM.CV.002 |  | Backfilling Works Over Pipes | 1d | 2024-12-25 | 2024-12-25 | B51.REF.WTP.GVM.MEC.001, B51.REF.WTP.GVM.MEC.001 FF | 57d |  | Civil Crew [24 h]; Equipment [8 h] | 4,182 | B51 | 02 | 01 | 04 | 001 |
|  | 2 | **Mechanical work** |  | 2024-12-02 | 2024-12-24 |  |  |  |  |  |  |  |  |  |  |
| B51.REF.WTP.GVM.MEC.001 |  | Install Pipes, Valve & Accessories | 20d | 2024-12-02 | 2024-12-24 | B51.REF.WTP.GVM.CV.001, B51.REF.WTP.GVM.CV.001 FF | 57d | 0d | Mechanical Crew [480 h] | 12,545 | B51 | 02 | 03 | 04 | 001 |
|  | 4 | **Water Supply Network** |  | 2024-11-07 | 2025-02-02 |  |  |  |  |  |  |  |  |  |  |
|  | 1 | **B14-Refurbishment Of Existing Water Supply Network Pipeline Dia 200mm** |  | 2024-11-07 | 2024-12-28 |  |  |  |  |  |  |  |  |  |  |
|  | 1 | **Civil Works** |  | 2024-11-07 | 2024-12-28 |  |  |  |  |  |  |  |  |  |  |
| B14.REF.WTP.NET.200.CV.001 |  | Excavation Work Until The Required Depth Is Reached | 10d | 2024-11-07 | 2024-11-18 | B31.REF.STP.NET.250.CV.001 SS | 24d | 0d | Civil Crew [240 h]; Equipment [80 h] | 6,176 | B14 | 02 | 01 | 04 | 001 |
| B14.REF.WTP.NET.200.CV.002 |  | Leveling The Bottom Of The Excavation | 5d | 2024-11-19 | 2024-11-24 | B14.REF.WTP.NET.200.CV.001 | 55d | 0d | Civil Crew [80 h] | 1,235 | B14 | 02 | 01 | 04 | 001 |
| B14.REF.WTP.NET.200.CV.003 |  | Bottom Soil Spreading And Compaction Work Under The Pipes | 7d | 2024-11-25 | 2024-12-02 | B14.REF.WTP.NET.200.CV.002 | 55d | 0d | Civil Crew [168 h]; Equipment | 2,059 | B14 | 02 | 01 | 04 | 001 |
| B14.REF.WTP.NET.200.CV.004 |  | Backfilling Works Over Pipes | 9d | 2024-12-18 | 2024-12-28 | B14.REF.WTP.NET.200.MEC.002 | 55d |  | Civil Crew [216 h]; Equipment [72 h] | 4,117 | B14 | 02 | 01 | 04 | 001 |
|  | 2 | **Mechanical work** |  | 2024-12-03 | 2024-12-17 |  |  |  |  |  |  |  |  |  |  |
| B14.REF.WTP.NET.200.MEC.001 |  | Install Pipes, Valve & Accessories | 10d | 2024-12-03 | 2024-12-14 | B14.REF.WTP.NET.200.CV.003, REF.WTP.NET.MEC.003 | 55d | 0d | Mechanical Crew [320 h] | 23,468 | B14 | 02 | 03 | 04 | 001 |
| B14.REF.WTP.NET.200.MEC.002 |  | Water Pressure Test | 3d | 2024-12-15 | 2024-12-17 | B14.REF.WTP.NET.200.MEC.001 | 55d | 0d | Mechanical Crew [96 h] | 2,059 | B14 | 02 | 03 | 04 | 001 |

Notes:
- B3.REF.WTP.PLA.ELE.001: Expenses: (New Expense Item) 6441
- B3.REF.WTP.PLA.ELE.002: Expenses: (New Expense Item) 6441
- B3.REF.WTP.PLA.ELE.003: Expenses: (New Expense Item) 3221
- B3.REF.WTP.PLA.ELE.004: Expenses: (New Expense Item) 16103
- B3.REF.WTP.PLA.ELE.005: Expenses: (New Expense Item) 16103
- B3.REF.WTP.PLA.ELE.006: Expenses: (New Expense Item) 3221
- B3.REF.WTP.PLA.ELE.007: Expenses: (New Expense Item) 3221
- B3.REF.WTP.PLA.ELE.008: Expenses: (New Expense Item) 3221
- B3.REF.WTP.PLA.ELE.009: Expenses: (New Expense Item) 6441
- B51.REF.WTP.GVM.CV.001: Expenses: (New Expense Item) 4182
- B51.REF.WTP.GVM.CV.002: Expenses: (New Expense Item) 4182
- B51.REF.WTP.GVM.MEC.001: Expenses: (New Expense Item) 12545
- B14.REF.WTP.NET.200.CV.001: Expenses: (New Expense Item) 6176
- B14.REF.WTP.NET.200.CV.002: Expenses: (New Expense Item) 1235
- B14.REF.WTP.NET.200.CV.003: Expenses: (New Expense Item) 2059
- B14.REF.WTP.NET.200.CV.004: Expenses: (New Expense Item) 4117
- B14.REF.WTP.NET.200.MEC.001: Expenses: (New Expense Item) 23468
- B14.REF.WTP.NET.200.MEC.002: Expenses: (New Expense Item) 2059

| ID | WBS | Activity | Duration | Start | Finish | Predecessors | Total float | Free float | Resources | Cost | 01.B.O.Q Items | 02.Scope | 04.Discipline | 05.EPS | 03.System |
| --- | --- | --- | --- | --- | --- | --- | --- | --- | --- | --- | --- | --- | --- | --- | --- |
|  | 3 | **B15-Refurbishment Of Existing Water Supply Network Pipeline Dia 110mm** |  | 2024-11-07 | 2025-02-02 |  |  |  |  |  |  |  |  |  |  |
|  | 1 | **Civil Works** |  | 2024-11-07 | 2025-02-02 |  |  |  |  |  |  |  |  |  |  |
| B15.REF.WTP.NET.110.CV.001 |  | Excavation Work Until The Required Depth Is Reached | 10d | 2024-11-07 | 2024-11-18 | B14.REF.WTP.NET.200.CV.001 SS | 24d | 0d | Civil Crew [240 h]; Equipment [80 h] | 20,212 | B15 | 02 | 01 | 04 | 001 |
| B15.REF.WTP.NET.110.CV.002 |  | Leveling The Bottom Of The Excavation | 5d | 2024-11-19 | 2024-11-24 | B15.REF.WTP.NET.110.CV.001 | 24d | 0d | Civil Crew [80 h] | 4,042 | B15 | 02 | 01 | 04 | 001 |
| B15.REF.WTP.NET.110.CV.003 |  | Bottom Soil Spreading And Compaction Work Under The Pipes | 7d | 2024-11-25 | 2024-12-02 | B15.REF.WTP.NET.110.CV.002 | 24d | 0d | Civil Crew [168 h]; Equipment | 6,737 | B15 | 02 | 01 | 04 | 001 |
| B15.REF.WTP.NET.110.CV.004 |  | Backfilling Works Over Pipes | 8d | 2025-01-25 | 2025-02-02 | B15.REF.WTP.NET.110.MEC.002 | 24d |  | Civil Crew [192 h]; Equipment [64 h] | 13,475 | B15 | 02 | 01 | 04 | 001 |
|  | 2 | **Mechanical work** |  | 2024-12-03 | 2025-01-23 |  |  |  |  |  |  |  |  |  |  |
| B15.REF.WTP.NET.110.MEC.001 |  | Install Pipes, Valve & Accessories | 25d | 2024-12-03 | 2024-12-31 | B15.REF.WTP.NET.110.CV.003, REF.WTP.NET.MEC.003 | 24d | 0d | Mechanical Crew [800 h] | 76,805 | B15 | 02 | 03 | 04 | 001 |
| B15.REF.WTP.NET.110.MEC.002 |  | Water Pressure Test | 15d | 2025-01-07 | 2025-01-23 | B15.REF.WTP.NET.110.MEC.001 FS+5d | 24d | 0d | Mechanical Crew [480 h] | 6,737 | B15 | 02 | 03 | 04 | 001 |
|  | 2 | **B16-Refurbishment Of Existing Water Supply Network Pipeline Dia 90 mm** |  | 2024-11-07 | 2024-12-28 |  |  |  |  |  |  |  |  |  |  |
|  | 1 | **Civil Works** |  | 2024-11-07 | 2024-12-28 |  |  |  |  |  |  |  |  |  |  |
| B16.REF.WTP.NET.90.CV.001 |  | Excavation Work Until The Required Depth Is Reached | 10d | 2024-11-07 | 2024-11-18 | B15.REF.WTP.NET.110.CV.001 SS | 53d | 0d | Civil Crew [240 h]; Equipment [80 h] | 7,673 | B16 | 02 | 01 | 04 | 001 |
| B16.REF.WTP.NET.90.CV.002 |  | Leveling The Bottom Of The Excavation | 5d | 2024-11-19 | 2024-11-24 | B16.REF.WTP.NET.90.CV.001 | 55d | 0d | Civil Crew [80 h] | 1,535 | B16 | 02 | 01 | 04 | 001 |
| B16.REF.WTP.NET.90.CV.003 |  | Bottom Soil Spreading And Compaction Work Under The Pipes | 7d | 2024-11-25 | 2024-12-02 | B16.REF.WTP.NET.90.CV.002 | 55d | 0d | Civil Crew [168 h]; Equipment | 2,558 | B16 | 02 | 01 | 04 | 001 |
| B16.REF.WTP.NET.90.CV.004 |  | Backfilling Works Over Pipes | 9d | 2024-12-18 | 2024-12-28 | B16.REF.WTP.NET.90.MEC.002 | 55d |  | Civil Crew [216 h]; Equipment [72 h] | 5,115 | B16 | 02 | 01 | 04 | 001 |
|  | 2 | **Mechanical work** |  | 2024-12-03 | 2024-12-17 |  |  |  |  |  |  |  |  |  |  |
| B16.REF.WTP.NET.90.MEC.001 |  | Install Pipes, Valve & Accessories | 10d | 2024-12-03 | 2024-12-14 | B16.REF.WTP.NET.90.CV.003, REF.WTP.NET.MEC.003 | 55d | 0d | Mechanical Crew [320 h] | 29,158 | B16 | 02 | 03 | 04 | 001 |
| B16.REF.WTP.NET.90.MEC.002 |  | Water Pressure Test | 3d | 2024-12-15 | 2024-12-17 | B16.REF.WTP.NET.90.MEC.001 | 55d | 0d | Mechanical Crew [96 h] | 2,558 | B16 | 02 | 03 | 04 | 001 |
|  | 4 | **B17-Refurbishment Of Existing Water Supply Network Pipeline Dia 75mm** |  | 2024-11-07 | 2024-12-29 |  |  |  |  |  |  |  |  |  |  |
|  | 1 | **Civil Works** |  | 2024-11-07 | 2024-12-29 |  |  |  |  |  |  |  |  |  |  |
| B17.REF.WTP.NET.75.CV.001 |  | Excavation Work Until The Required Depth Is Reached | 10d | 2024-11-07 | 2024-11-18 | B16.REF.WTP.NET.90.CV.001 SS | 53d | 0d | Civil Crew [240 h] | 6,176 | B17 | 02 | 01 | 04 | 001 |
| B17.REF.WTP.NET.75.CV.002 |  | Leveling The Bottom Of The Excavation | 5d | 2024-11-19 | 2024-11-24 | B17.REF.WTP.NET.75.CV.001 | 54d | 0d | Civil Crew [80 h] | 1,235 | B17 | 02 | 01 | 04 | 001 |
| B17.REF.WTP.NET.75.CV.003 |  | Bottom Soil Spreading And Compaction Work Under The Pipes | 7d | 2024-11-25 | 2024-12-02 | B17.REF.WTP.NET.75.CV.002 | 54d | 0d | Civil Crew [168 h] | 2,059 | B17 | 02 | 01 | 04 | 001 |
| B17.REF.WTP.NET.75.CV.004 |  | Backfilling Works Over Pipes | 10d | 2024-12-18 | 2024-12-29 | B17.REF.WTP.NET.75.MEC.002 | 54d |  | Civil Crew [240 h] | 4,117 | B17 | 02 | 01 | 04 | 001 |

Notes:
- B15.REF.WTP.NET.110.CV.001: Expenses: (New Expense Item) 20212
- B15.REF.WTP.NET.110.CV.002: Expenses: (New Expense Item) 4042
- B15.REF.WTP.NET.110.CV.003: Expenses: (New Expense Item) 6737
- B15.REF.WTP.NET.110.CV.004: Expenses: (New Expense Item) 13475
- B15.REF.WTP.NET.110.MEC.001: Expenses: (New Expense Item) 76805
- B15.REF.WTP.NET.110.MEC.002: Expenses: (New Expense Item) 6737
- B16.REF.WTP.NET.90.CV.001: Expenses: (New Expense Item) 7673
- B16.REF.WTP.NET.90.CV.002: Expenses: (New Expense Item) 1535
- B16.REF.WTP.NET.90.CV.003: Expenses: (New Expense Item) 2558
- B16.REF.WTP.NET.90.CV.004: Expenses: (New Expense Item) 5115
- B16.REF.WTP.NET.90.MEC.001: Expenses: (New Expense Item) 29158
- B16.REF.WTP.NET.90.MEC.002: Expenses: (New Expense Item) 2558
- B17.REF.WTP.NET.75.CV.001: Expenses: (New Expense Item) 6176
- B17.REF.WTP.NET.75.CV.002: Expenses: (New Expense Item) 1235
- B17.REF.WTP.NET.75.CV.003: Expenses: (New Expense Item) 2059
- B17.REF.WTP.NET.75.CV.004: Expenses: (New Expense Item) 4117

| ID | WBS | Activity | Duration | Start | Finish | Predecessors | Total float | Free float | Resources | Cost | 01.B.O.Q Items | 02.Scope | 04.Discipline | 05.EPS | 03.System |
| --- | --- | --- | --- | --- | --- | --- | --- | --- | --- | --- | --- | --- | --- | --- | --- |
|  | 2 | **Mechanical work** |  | 2024-12-03 | 2024-12-17 |  |  |  |  |  |  |  |  |  |  |
| B17.REF.WTP.NET.75.MEC.001 |  | Install Pipes, Valve & Accessories | 10d | 2024-12-03 | 2024-12-14 | B17.REF.WTP.NET.75.CV.003, REF.WTP.NET.MEC.003 | 54d | 0d | Mechanical Crew [320 h] | 23,468 | B17 | 02 | 03 | 04 | 001 |
| B17.REF.WTP.NET.75.MEC.002 |  | Water Pressure Test | 3d | 2024-12-15 | 2024-12-17 | B17.REF.WTP.NET.75.MEC.001 | 54d | 0d | Mechanical Crew [96 h] | 2,059 | B17 | 02 | 03 | 04 | 001 |
|  | 5 | **B18-Refurbishment Of Existing Water Supply Network Pipeline Dia 50mm** |  | 2024-11-07 | 2024-12-30 |  |  |  |  |  |  |  |  |  |  |
|  | 1 | **Civil Works** |  | 2024-11-07 | 2024-12-30 |  |  |  |  |  |  |  |  |  |  |
| B18.REF.WTP.NET.50.CV.001 |  | Excavation Work Until The Required Depth Is Reached | 10d | 2024-11-07 | 2024-11-18 | B17.REF.WTP.NET.75.CV.001 SS | 53d | 0d | Civil Crew [240 h] | 8,141 | B18 | 02 | 01 | 04 | 001 |
| B18.REF.WTP.NET.50.CV.002 |  | Leveling The Bottom Of The Excavation | 5d | 2024-11-19 | 2024-11-24 | B18.REF.WTP.NET.50.CV.001 | 53d | 0d | Civil Crew [80 h] | 1,628 | B18 | 02 | 01 | 04 | 001 |
| B18.REF.WTP.NET.50.CV.003 |  | Bottom Soil Spreading And Compaction Work Under The Pipes | 7d | 2024-11-25 | 2024-12-02 | B18.REF.WTP.NET.50.CV.002 | 53d | 0d | Civil Crew [168 h] | 2,714 | B18 | 02 | 01 | 04 | 001 |
| B18.REF.WTP.NET.50.CV.004 |  | Backfilling Works Over Pipes | 10d | 2024-12-19 | 2024-12-30 | B18.REF.WTP.NET.50.MEC.002 | 53d |  | Civil Crew [240 h] | 5,427 | B18 | 02 | 01 | 04 | 001 |
|  | 2 | **Mechanical work** |  | 2024-12-03 | 2024-12-18 |  |  |  |  |  |  |  |  |  |  |
| B18.REF.WTP.NET.50.MEC.001 |  | Install Pipes, Valve & Accessories | 10d | 2024-12-03 | 2024-12-14 | B18.REF.WTP.NET.50.CV.003, REF.WTP.NET.MEC.003 | 53d | 0d | Mechanical Crew [320 h] | 30,935 | B18 | 02 | 03 | 04 | 001 |
| B18.REF.WTP.NET.50.MEC.002 |  | Water Pressure Test | 4d | 2024-12-15 | 2024-12-18 | B18.REF.WTP.NET.50.MEC.001 | 53d | 0d | Mechanical Crew [128 h] | 2,714 | B18 | 02 | 03 | 04 | 001 |
|  | 6 | **B19-Refurbishment Of Existing Water Supply Network Pipeline Dia 25-32mm** |  | 2024-11-07 | 2024-12-26 |  |  |  |  |  |  |  |  |  |  |
|  | 1 | **Civil Works** |  | 2024-11-07 | 2024-12-26 |  |  |  |  |  |  |  |  |  |  |
| B19.REF.WTP.NET.32.CV.001 |  | Excavation Work Until The Required Depth Is Reached | 10d | 2024-11-07 | 2024-11-18 | B18.REF.WTP.NET.50.CV.001 SS | 56d | 0d | Civil Crew [240 h] | 9,407 | B19 | 02 | 01 | 04 | 001 |
| B19.REF.WTP.NET.32.CV.002 |  | Leveling The Bottom Of The Excavation | 5d | 2024-11-19 | 2024-11-24 | B19.REF.WTP.NET.32.CV.001 | 56d | 0d | Civil Crew [80 h] | 1,881 | B19 | 02 | 01 | 04 | 001 |
| B19.REF.WTP.NET.32.CV.003 |  | Bottom Soil Spreading And Compaction Work Under The Pipes | 7d | 2024-11-25 | 2024-12-02 | B19.REF.WTP.NET.32.CV.002 | 56d | 0d | Civil Crew [168 h] | 3,136 | B19 | 02 | 01 | 04 | 001 |
| B19.REF.WTP.NET.32.CV.004 |  | Backfilling Works Over Pipes | 10d | 2024-12-16 | 2024-12-26 | B19.REF.WTP.NET.32.MEC.002 | 56d |  | Civil Crew [240 h] | 6,272 | B19 | 02 | 01 | 04 | 001 |
|  | 2 | **Mechanical work** |  | 2024-12-03 | 2024-12-15 |  |  |  |  |  |  |  |  |  |  |
| B19.REF.WTP.NET.32.MEC.001 |  | Install Pipes, Valve & Accessories | 7d | 2024-12-03 | 2024-12-10 | B19.REF.WTP.NET.32.CV.003, REF.WTP.NET.MEC.003 | 56d | 0d | Mechanical Crew [224 h] | 35,748 | B19 | 02 | 03 | 04 | 001 |
| B19.REF.WTP.NET.32.MEC.002 |  | Water Pressure Test | 4d | 2024-12-11 | 2024-12-15 | B19.REF.WTP.NET.32.MEC.001 | 56d | 0d | Mechanical Crew [128 h] | 3,136 | B19 | 02 | 03 | 04 | 001 |
|  | 2 | **STP** |  | 2024-05-22 | 2024-12-11 |  |  |  |  |  |  |  |  |  |  |
|  | 1 | **B21-Refurbishment Of Existing Sewage Treatment Plant Return Activated Sludge (RAS) Pumps** |  | 2024-11-05 | 2024-11-30 |  |  |  |  |  |  |  |  |  |  |
|  | 1 | **Mechanical work** |  | 2024-11-05 | 2024-11-30 |  |  |  |  |  |  |  |  |  |  |
| B21.REF.STP.SLG.MEC.001 |  | Install 2 Pumps | 15d | 2024-11-05 | 2024-11-21 | B25.STP.SLG.MEC.001, B25.STP.EQ.ELE.015 | 79d | 0d | Mechanical Crew [360 h] | 30,942 | B21 | 02 | 03 | 04 | 002 |
| B21.REF.STP.SLG.MEC.002 |  | Install VaLves & Accessories | 7d | 2024-11-23 | 2024-11-30 | B21.REF.STP.SLG.MEC.001 | 79d | 76d | Mechanical Crew [168 h] | 18,049 | B21 | 02 | 03 | 04 | 002 |

Notes:
- B17.REF.WTP.NET.75.MEC.001: Expenses: (New Expense Item) 23468
- B17.REF.WTP.NET.75.MEC.002: Expenses: (New Expense Item) 2059
- B18.REF.WTP.NET.50.CV.001: Expenses: (New Expense Item) 8141
- B18.REF.WTP.NET.50.CV.002: Expenses: (New Expense Item) 1628
- B18.REF.WTP.NET.50.CV.003: Expenses: (New Expense Item) 2714
- B18.REF.WTP.NET.50.CV.004: Expenses: (New Expense Item) 5427
- B18.REF.WTP.NET.50.MEC.001: Expenses: (New Expense Item) 30935
- B18.REF.WTP.NET.50.MEC.002: Expenses: (New Expense Item) 2714
- B19.REF.WTP.NET.32.CV.001: Expenses: (New Expense Item) 9407
- B19.REF.WTP.NET.32.CV.002: Expenses: (New Expense Item) 1881
- B19.REF.WTP.NET.32.CV.003: Expenses: (New Expense Item) 3136
- B19.REF.WTP.NET.32.CV.004: Expenses: (New Expense Item) 6272
- B19.REF.WTP.NET.32.MEC.001: Expenses: (New Expense Item) 35748
- B19.REF.WTP.NET.32.MEC.002: Expenses: (New Expense Item) 3136
- B21.REF.STP.SLG.MEC.001: Expenses: (New Expense Item) 30942
- B21.REF.STP.SLG.MEC.002: Expenses: (New Expense Item) 18049

| ID | WBS | Activity | Duration | Start | Finish | Predecessors | Total float | Free float | Resources | Cost | 01.B.O.Q Items | 02.Scope | 04.Discipline | 05.EPS | 03.System |
| --- | --- | --- | --- | --- | --- | --- | --- | --- | --- | --- | --- | --- | --- | --- | --- |
|  | 2 | **B22-Refurbishment Of Existing Sewage Treatment Plant Fire Extinguisher (Dry Powder)** |  | 2024-11-05 | 2024-11-06 |  |  |  |  |  |  |  |  |  |  |
|  | 1 | **Mechanical work** |  | 2024-11-05 | 2024-11-06 |  |  |  |  |  |  |  |  |  |  |
| B22.REF.STP.DP.MEC.001 |  | Install Fire Extinguisher (Dry Powder) | 2d | 2024-11-05 | 2024-11-06 | B25.STP.EQ.ELE.015 | 24d | 0d | Mechanical Crew [16 h] | 3,003 | B22 | 02 | 03 | 04 | 002 |
|  | 3 | **B23-Refurbishment Of Existing Sewage Treatment Plant Flow Meter** |  | 2024-11-05 | 2024-11-06 |  |  |  |  |  |  |  |  |  |  |
|  | 1 | **Mechanical work** |  | 2024-11-05 | 2024-11-06 |  |  |  |  |  |  |  |  |  |  |
| B23.REF.STP.FLM.MEC.001 |  | Install Flow Meter & Accessories | 2d | 2024-11-05 | 2024-11-06 | B25.STP.EQ.ELE.015 | 99d | 96d | Mechanical Crew [16 h] | 64,162 | B23 | 02 | 03 | 04 | 002 |
|  | 4 | **B24-Refurbishment Of Existing Sewage Treatment Plant Flexible Hose Pipe For Cleaning Services** |  | 2024-11-05 | 2024-11-16 |  |  |  |  |  |  |  |  |  |  |
|  | 1 | **Mechanical work** |  | 2024-11-05 | 2024-11-16 |  |  |  |  |  |  |  |  |  |  |
| B24.REF.STP.HP.MEC.001 |  | Install Flexible Hose Pipe For Cleaning Services | 10d | 2024-11-05 | 2024-11-16 | B25.STP.EQ.ELE.015 | 91d | 88d | Mechanical Crew [160 h] | 1,501 | B24 | 02 | 03 | 04 | 002 |
|  | 6 | **B35-Refurbishment Of Existing Sewage Network Manholes** |  | 2024-10-19 | 2024-11-21 |  |  |  |  |  |  |  |  |  |  |
|  | 1 | **Civil work** |  | 2024-10-19 | 2024-11-21 |  |  |  |  |  |  |  |  |  |  |
| B35.REF.STP.NET.MNH.CV.001 |  | Excavation Work Manholes | 5d | 2024-10-19 | 2024-10-23 | B34.REF.STP.NET.110.CV.004 FS+30d | 86d | 0d | Civil Crew [200 h] | 5,729 | B35 | 02 | 01 | 04 | 002 |
| B35.REF.STP.NET.MNH.CV.002 |  | Reinforcement Concrete For Roofs Work Manholes | 5d | 2024-10-24 | 2024-10-29 | B35.REF.STP.NET.MNH.CV.001 | 86d | 0d | Civil Crew [120 h] | 22,915 | B35 | 02 | 01 | 04 | 002 |
| B35.REF.STP.NET.MNH.CV.003 |  | Plastering Work Manholes | 5d | 2024-10-30 | 2024-11-04 | B35.REF.STP.NET.MNH.CV.002 | 86d | 0d | Civil Crew [80 h] | 5,729 | B35 | 02 | 01 | 04 | 002 |
| B35.REF.STP.NET.MNH.CV.004 |  | Install Covers Manholes | 5d | 2024-11-05 | 2024-11-10 | B35.REF.STP.NET.MNH.CV.003 | 86d | 0d | Civil Crew [80 h] | 14,322 | B35 | 02 | 01 | 04 | 002 |
| B35.REF.STP.NET.MNH.CV.005 |  | Epoxy Work Internal Manholes | 5d | 2024-11-11 | 2024-11-16 | B35.REF.STP.NET.MNH.CV.004 | 86d | 0d | Civil Crew [80 h] | 7,447 | B35 | 02 | 01 | 04 | 002 |
| B35.REF.STP.NET.MNH.CV.006 |  | Exterior Bitumen Painting Works | 5d | 2024-11-17 | 2024-11-21 | B35.REF.STP.NET.MNH.CV.005 | 86d | 83d | Civil Crew [40 h] | 1,146 | B35 | 02 | 01 | 04 | 002 |
|  | 5 | **Existing Sewage Network** |  | 2024-05-22 | 2024-12-11 |  |  |  |  |  |  |  |  |  |  |
|  | 1 | **B31-Refurbishment Of Existing Sewage Network Pipeline Dia 250mm** |  | 2024-11-07 | 2024-12-10 |  |  |  |  |  |  |  |  |  |  |
|  | 1 | **Civil Work** |  | 2024-11-07 | 2024-12-10 |  |  |  |  |  |  |  |  |  |  |
| B31.REF.STP.NET.250.CV.001 |  | Excavation Work Until The Required Depth Is Reached | 4d | 2024-11-07 | 2024-11-11 | B22.REF.STP.DP.MEC.001 | 24d | 0d | Civil Crew [96 h]; Equipment [32 h] | 32,002 | B31 | 02 | 01 | 04 | 002 |
| B31.REF.STP.NET.250.CV.002 |  | Leveling The Bottom Of The Excavation | 5d | 2024-11-12 | 2024-11-17 | B31.REF.STP.NET.250.CV.001 | 70d | 0d | Civil Crew [80 h] | 6,400 | B31 | 02 | 01 | 04 | 002 |
| B31.REF.STP.NET.250.CV.003 |  | Bottom Soil Spreading And Compaction Work Under The Pipes | 5d | 2024-11-18 | 2024-11-23 | B31.REF.STP.NET.250.CV.002 | 70d | 0d | Civil Crew [120 h]; Equipment | 10,667 | B31 | 02 | 01 | 04 | 002 |
| B31.REF.STP.NET.250.CV.004 |  | Backfilling Works Over Pipes | 5d | 2024-12-05 | 2024-12-10 | B31.REF.STP.NET.250.MEC.002 | 70d | 67d | Civil Crew [120 h]; Equipment [40 h] | 21,335 | B31 | 02 | 01 | 04 | 002 |

Notes:
- B22.REF.STP.DP.MEC.001: Expenses: (New Expense Item) 3003
- B23.REF.STP.FLM.MEC.001: Expenses: (New Expense Item) 64162
- B24.REF.STP.HP.MEC.001: Expenses: (New Expense Item) 1501
- B35.REF.STP.NET.MNH.CV.001: Expenses: (New Expense Item) 5729
- B35.REF.STP.NET.MNH.CV.002: Expenses: (New Expense Item) 22915
- B35.REF.STP.NET.MNH.CV.003: Expenses: (New Expense Item) 5729
- B35.REF.STP.NET.MNH.CV.004: Expenses: (New Expense Item) 14322
- B35.REF.STP.NET.MNH.CV.005: Expenses: (New Expense Item) 7447
- B35.REF.STP.NET.MNH.CV.006: Expenses: (New Expense Item) 1146
- B31.REF.STP.NET.250.CV.001: Expenses: (New Expense Item) 32002
- B31.REF.STP.NET.250.CV.002: Expenses: (New Expense Item) 6400
- B31.REF.STP.NET.250.CV.003: Expenses: (New Expense Item) 10667
- B31.REF.STP.NET.250.CV.004: Expenses: (New Expense Item) 21335

| ID | WBS | Activity | Duration | Start | Finish | Predecessors | Complete | Planned start | Planned finish | Total float | Free float | Resources | Cost | Actual cost | 01.B.O.Q Items | 02.Scope | 04.Discipline | 05.EPS | 03.System |
| --- | --- | --- | --- | --- | --- | --- | --- | --- | --- | --- | --- | --- | --- | --- | --- | --- | --- | --- | --- |
|  | 2 | **Mechanical work** |  | 2024-11-24 | 2024-12-04 |  |  |  |  |  |  |  |  |  |  |  |  |  |  |
| B31.REF.STP.NET.250.MEC.001 |  | Install Pipes | 5d | 2024-11-24 | 2024-11-28 | B31.REF.STP.NET.250.CV.003, REF.STP.NET.MEC.003 |  |  |  | 70d | 0d | Mechanical Crew [160 h] | 121,608 |  | B31 | 02 | 03 | 04 | 002 |
| B31.REF.STP.NET.250.MEC.002 |  | Water Pressure Test | 5d | 2024-11-30 | 2024-12-04 | B31.REF.STP.NET.250.MEC.001 |  |  |  | 70d | 0d | Mechanical Crew [160 h] | 10,667 |  | B31 | 02 | 03 | 04 | 002 |
|  | 3 | **B32-Refurbishment Of Existing Sewage Network Pipeline Dia 200mm** |  | 2024-11-07 | 2024-12-11 |  |  |  |  |  |  |  |  |  |  |  |  |  |  |
|  | 1 | **Civil Work** |  | 2024-11-07 | 2024-12-11 |  |  |  |  |  |  |  |  |  |  |  |  |  |  |
| B32.REF.STP.NET.200.CV.001 |  | Excavation Work Until The Required Depth Is Reached | 5d | 2024-11-07 | 2024-11-12 | B31.REF.STP.NET.250.CV.001 SS |  |  |  | 69d | 0d | Civil Crew [120 h]; Equipment [40 h] | 25,826 |  | B32 | 02 | 01 | 04 | 002 |
| B32.REF.STP.NET.200.CV.002 |  | Leveling The Bottom Of The Excavation | 5d | 2024-11-13 | 2024-11-18 | B32.REF.STP.NET.200.CV.001 |  |  |  | 69d | 0d | Civil Crew [80 h] | 5,165 |  | B32 | 02 | 01 | 04 | 002 |
| B32.REF.STP.NET.200.CV.003 |  | Bottom Soil Spreading And Compaction Work Under The Pipes | 5d | 2024-11-19 | 2024-11-24 | B32.REF.STP.NET.200.CV.002 |  |  |  | 69d | 0d | Civil Crew [120 h]; Equipment | 8,609 |  | B32 | 02 | 01 | 04 | 002 |
| B32.REF.STP.NET.200.CV.004 |  | Backfilling Works Over Pipes | 5d | 2024-12-07 | 2024-12-11 | B32.REF.STP.NET.200.MEC.002 |  |  |  | 69d | 66d | Civil Crew [120 h]; Equipment [40 h] | 17,218 |  | B32 | 02 | 01 | 04 | 002 |
|  | 2 | **Mechanical work** |  | 2024-11-25 | 2024-12-05 |  |  |  |  |  |  |  |  |  |  |  |  |  |  |
| B32.REF.STP.NET.200.MEC.001 |  | Install Pipes | 5d | 2024-11-25 | 2024-11-30 | B32.REF.STP.NET.200.CV.003, REF.STP.NET.MEC.003 |  |  |  | 69d | 0d | Mechanical Crew [160 h] | 98,140 |  | B32 | 02 | 03 | 04 | 002 |
| B32.REF.STP.NET.200.MEC.002 |  | Water Pressure Test | 5d | 2024-12-01 | 2024-12-05 | B32.REF.STP.NET.200.MEC.001 |  |  |  | 69d | 0d | Mechanical Crew [160 h] | 8,609 |  | B32 | 02 | 03 | 04 | 002 |
|  | 2 | **B33-Refurbishment Of Existing Sewage Network Pipeline Dia 160mm** |  | 2024-05-22 | 2024-10-17 |  |  |  |  |  |  |  |  |  |  |  |  |  |  |
|  | 1 | **Civil Work** |  | 2024-05-24 | 2024-10-17 |  |  |  |  |  |  |  |  |  |  |  |  |  |  |
| B33.REF.STP.NET.160.CV.001 |  | Excavation Work Until The Required Depth Is Reached-10% | 54d | 2024-05-24 A | 2024-08-01 A | REF.STP.NET.MEC.003 | 100% | 2024-05-25 | 2024-08-01 |  |  | Civil Crew [1152 h]; Equipment [384 h] | 1,646.9 | 1,646.9 | B33 | 02 | 01 | 04 | 002 |
| B33.REF.STP.NET.160.CV.004 |  | Backfilling Works Over Pipes-10% | 52.75d | 2024-05-26 A | 2024-08-01 A | B33.REF.STP.NET.160.MEC.002 FF | 100% |  |  |  |  | Civil Crew [1242 h]; Equipment [414 h] | 1,097.9 | 1,097.9 | B33 | 02 | 01 | 04 | 002 |
| B33.REF.STP.NET.160.CV.002 |  | Leveling The Bottom Of The Excavation-10% | 49.75d | 2024-05-29 A | 2024-08-01 A | B33.REF.STP.NET.160.CV.001 SS+5d | 100% |  |  |  |  | Civil Crew [460 h] | 329.4 | 329.4 | B33 | 02 | 01 | 04 | 002 |
| B33.REF.STP.NET.160.CV.003 |  | Bottom Soil Spreading And Compaction Work Under The Pipes-10% | 44.75d | 2024-06-04 A | 2024-08-01 A | B33.REF.STP.NET.160.CV.002 SS+5d | 100% |  |  |  |  | Civil Crew [570 h]; Equipment | 549 | 549 | B33 | 02 | 01 | 04 | 002 |
| B33.RF.STP.160.CV.03 |  | Bottom Soil Spreading And Compaction Work Under The Pipes | 10d | 2024-08-24 A | 2024-10-17 A | B33.RF.STP.160.CV.02 FF | 100% | 2024-10-24 | 2024-11-04 |  |  | Civil Crew [570 h]; Equipment | 4,941 | 4,941 | B33 | 02 | 01 | 04 | 002 |
| B33.RF.STP.160.CV.02 |  | Leveling The Bottom Of The Excavation | 10d | 2024-08-27 A | 2024-10-17 A | B33.RF.STP.160.CV.01 FF | 100% | 2024-10-13 | 2024-10-23 |  |  | Civil Crew [460 h] | 2,964.6 | 2,964.6 | B33 | 02 | 01 | 04 | 002 |
| B33.RF.STP.160.CV.01 |  | Excavation Work Until The Required Depth Is Reached-90% | 30d | 2024-08-28 A | 2024-10-17 A | B33.REF.STP.NET.160.CV.004 FS+30d | 100% | 2024-09-07 | 2024-10-12 |  |  | Civil Crew [1152 h]; Equipment [384 h] | 14,822.1 | 14,822.1 | B33 | 02 | 01 | 04 | 002 |
| B33.RF.STP.160.CV.04 |  | Backfilling Works Over Pipes | 15d | 2024-09-03 A | 2024-10-17 A | B33.RF.STP.160.MEC.2 FF | 100% | 2024-10-13 | 2024-10-29 |  |  | Civil Crew [1242 h]; Equipment [414 h] | 9,881.1 | 9,881.1 | B33 | 02 | 01 | 04 | 002 |
|  | 2 | **Mechanical work** |  | 2024-05-22 | 2024-10-17 |  |  |  |  |  |  |  |  |  |  |  |  |  |  |
| B33.REF.STP.NET.160.MEC.001 |  | Install Pipes-10% | 55.75d | 2024-05-22 A | 2024-08-01 A | B33.REF.STP.NET.160.CV.003 FF, REF.STP.NET.MEC.003 | 100% |  |  |  |  | Mechanical Crew [1592 h] | 6,258.2 | 6,258.2 | B33 | 02 | 03 | 04 | 002 |
| B33.REF.STP.NET.160.MEC.002 |  | Water Pressure Test-10% | 45.75d | 2024-06-03 A | 2024-08-01 A | B33.REF.STP.NET.160.MEC.001 FF+5d | 100% |  |  |  |  | Mechanical Crew [1432 h] | 549 | 549 | B33 | 02 | 03 | 04 | 002 |
| B33.RF.STP.160.MEC.1 |  | Install Pipes-90% | 7d | 2024-08-26 A | 2024-10-17 A | B33.RF.STP.160.CV.03 FF | 100% | 2024-11-05 | 2024-11-12 |  |  | Mechanical Crew [1592 h] | 56,323.8 | 56,323.8 | B33 | 02 | 03 | 04 | 002 |
| B33.RF.STP.160.MEC.2 |  | Water Pressure Test-90% | 7d | 2024-08-27 A | 2024-10-17 A | B33.RF.STP.160.MEC.1 FF | 100% | 2024-11-13 | 2024-11-20 |  |  | Mechanical Crew [1432 h] | 4,941 | 4,941 | B33 | 02 | 03 | 04 | 002 |

Notes:
- B31.REF.STP.NET.250.MEC.001: Expenses: (New Expense Item) 121608
- B31.REF.STP.NET.250.MEC.002: Expenses: (New Expense Item) 10667
- B32.REF.STP.NET.200.CV.001: Expenses: (New Expense Item) 25826
- B32.REF.STP.NET.200.CV.002: Expenses: (New Expense Item) 5165
- B32.REF.STP.NET.200.CV.003: Expenses: (New Expense Item) 8609
- B32.REF.STP.NET.200.CV.004: Expenses: (New Expense Item) 17218
- B32.REF.STP.NET.200.MEC.001: Expenses: (New Expense Item) 98140
- B32.REF.STP.NET.200.MEC.002: Expenses: (New Expense Item) 8609
- B33.REF.STP.NET.160.CV.001: Expenses: (New Expense Item) 1646.9
- B33.REF.STP.NET.160.CV.004: Expenses: (New Expense Item) 1097.9
- B33.REF.STP.NET.160.CV.002: Expenses: (New Expense Item) 329.4
- B33.REF.STP.NET.160.CV.003: Expenses: (New Expense Item) 549
- B33.RF.STP.160.CV.03: Expenses: (New Expense Item) 4941
- B33.RF.STP.160.CV.02: Expenses: (New Expense Item) 2964.6
- B33.RF.STP.160.CV.01: Expenses: (New Expense Item) 14822.1
- B33.RF.STP.160.CV.04: Expenses: (New Expense Item) 9881.1
- B33.REF.STP.NET.160.MEC.001: Expenses: (New Expense Item) 6258.2
- B33.REF.STP.NET.160.MEC.002: Expenses: (New Expense Item) 549
- B33.RF.STP.160.MEC.1: Expenses: (New Expense Item) 56323.8
- B33.RF.STP.160.MEC.2: Expenses: (New Expense Item) 4941

| ID | WBS | Activity | Duration | Start | Finish | Predecessors | Complete | Planned start | Planned finish | Total float | Calendar | Resources | Cost | Actual cost | 01.B.O.Q Items | 02.Scope | 04.Discipline | 05.EPS | 03.System |
| --- | --- | --- | --- | --- | --- | --- | --- | --- | --- | --- | --- | --- | --- | --- | --- | --- | --- | --- | --- |
|  | 4 | **B34-Refurbishment Of Existing Sewage Network Pipeline Dia 110mm-House Connections to Mains** |  | 2024-05-24 | 2024-10-17 |  |  |  |  |  |  |  |  |  |  |  |  |  |  |
|  | 1 | **Civil Work** |  | 2024-05-24 | 2024-10-17 |  |  |  |  |  |  |  |  |  |  |  |  |  |  |
| B34.REF.STP.NET.110.CV.001 |  | Excavation Work Until The Required Depth Is Reached-60% | 54d | 2024-05-24 A | 2024-08-01 A | B33.REF.STP.NET.160.CV.001 SS | 100% | 2024-05-25 | 2024-08-01 |  |  | Civil Crew [1392 h] | 12,351.6 | 12,351.6 | B34 | 02 | 01 | 04 | 002 |
| B34.REF.STP.NET.110.CV.002 |  | Leveling The Bottom Of The Excavation-60% | 49.75d | 2024-05-29 A | 2024-08-01 A | B34.REF.STP.NET.110.CV.001 SS+5d | 100% |  |  |  |  | Civil Crew [460 h] | 2,470.2 | 2,470.2 | B34 | 02 | 01 | 04 | 002 |
| B34.REF.STP.NET.110.CV.003 |  | Bottom Soil Spreading And Compaction Work Under The Pipes-60% | 44.75d | 2024-06-04 A | 2024-08-01 A | B34.REF.STP.NET.110.CV.002 SS+5d | 100% |  |  |  |  | Civil Crew [570 h] | 4,117.2 | 4,117.2 | B34 | 02 | 01 | 04 | 002 |
| B34.REF.STP.NET.110.CV.004 |  | Backfilling Works Over Pipes-60% | 36d | 2024-06-16 A | 2024-08-01 A | B34.REF.STP.NET.110.MEC.002 FF+5d | 100% | 2024-06-22 | 2024-08-01 |  |  | Civil Crew [630 h] | 8,234.4 | 8,234.4 | B34 | 02 | 01 | 04 | 002 |
| B34.RF.STP.110.CV.2 |  | Leveling The Bottom Of The Excavation-40% | 10d | 2024-08-27 A | 2024-10-17 A | B34.RF.STP.110.CV.1 SS+10d | 100% | 2024-09-18 | 2024-09-30 |  |  | Civil Crew [460 h] | 1,646.8 | 1,646.8 | B34 | 02 | 01 | 04 | 002 |
| B34.RF.STP.110.CV.1 |  | Excavation Work Until The Required Depth Is Reached-40% | 30d | 2024-08-28 A | 2024-10-17 A | B34.REF.STP.NET.110.CV.004 FS+30d | 100% | 2024-09-07 | 2024-10-12 |  |  | Civil Crew [1392 h] | 8,234.4 | 8,234.4 | B34 | 02 | 01 | 04 | 002 |
| B34.RF.STP.110.CV.3 |  | Bottom Soil Spreading And Compaction Work Under The Pipes-40% | 7d | 2024-08-29 A | 2024-10-17 A | B34.RF.STP.110.CV.2 FF | 100% | 2024-10-01 | 2024-10-08 |  |  | Civil Crew [570 h] | 2,744.8 | 2,744.8 | B34 | 02 | 01 | 04 | 002 |
| B34.RF.STP.110.CV.4 |  | Backfilling Works Over Pipes-40% | 10d | 2024-09-03 A | 2024-10-17 A | B34.RF.STP.110.MEC.2 FF | 100% | 2024-09-29 | 2024-10-09 |  |  | Civil Crew [630 h] | 5,489.6 | 5,489.6 | B34 | 02 | 01 | 04 | 002 |
|  | 2 | **Mechanical work** |  | 2024-06-10 | 2024-10-17 |  |  |  |  |  |  |  |  |  |  |  |  |  |  |
| B34.REF.STP.NET.110.MEC.001 |  | Install Pipes-60% | 39.75d | 2024-06-10 A | 2024-08-01 A | B34.REF.STP.NET.110.CV.003 SS+5d, REF.STP.NET.MEC.003 | 100% |  |  |  |  | Mechanical Crew [1400 h] | 46,936.8 | 46,936.8 | B34 | 02 | 03 | 04 | 002 |
| B34.REF.STP.NET.110.MEC.002 |  | Water Pressure Test-60% | 36d | 2024-06-16 A | 2024-08-01 A | B34.REF.STP.NET.110.MEC.001 SS+5d | 100% | 2024-06-22 | 2024-08-01 |  |  | Mechanical Crew [680 h] | 4,117.2 | 4,117.2 | B34 | 02 | 03 | 04 | 002 |
| B34.RF.STP.110.MEC.2 |  | Water Pressure Test-40% | 7d | 2024-08-28 A | 2024-10-17 A | B34.RF.STP.110.MEC.1 FF | 100% | 2024-10-21 | 2024-10-28 |  |  | Mechanical Crew [680 h] | 2,744.8 | 2,744.8 | B34 | 02 | 03 | 04 | 002 |
| B34.RF.STP.110.MEC.1 |  | Install Pipes-40% | 10d | 2024-08-29 A | 2024-10-17 A | B34.RF.STP.110.CV.3 FF | 100% | 2024-10-09 | 2024-10-20 |  |  | Mechanical Crew [1400 h] | 31,291.2 | 31,291.2 | B34 | 02 | 03 | 04 | 002 |
|  | 2 | **Testing & Commissioning** |  | 2025-01-15 | 2025-04-21 |  |  |  |  |  |  |  |  |  |  |  |  |  |  |
| 003.PROJ.T&C.IRR. |  | Testing & Commissioning for Irrigation Networks | 30d | 2025-01-15 | 2025-02-18 | B38.IRR.200.CV.004, B39.IRR.160.CV.004, B40.IRR.110.CV.004, B41.IRR.90.CV.004, B42.IRR.50.CV.004, B43.IRR.32.CV.004, B44.IRR.16.CV.004, B45.IRR.COS.MEC.002 FF, B45.IRR.COS.MEC.001 FF, B46.IRR.PUM.MEC.001 FF, B40.IRR.110.CV.004.1, B42.IRR.50.CV.004.01, B43.IRR.32.CV.004.01, B44.IRR.16.MEC.002.1, B39.IRR.160.CV.004.1, B44.IRR.16.CV.004.1 |  |  |  | 40d |  |  | 277,994 |  | B38 |  |  | 05 |  |
| 002.PROJ.T&C.STP. |  | Testing & Commissioning for STP | 30d | 2025-03-01 | 2025-04-17 | B25.STP.EQ.ARC.011, B25.STP.EQ.MEC.008, B25.STP.EQ.ELE.002, B25.STP.AR.CV.006, B25.STP.CLA.CV.006, B25.STP.SLG.CV.008, B25.STP.SLG.MEC.001, B25.STP.CHL.CV.005, B25.STP.FEN.ARC.003 FF, B25.STP.LRS.MEC.001, B25.STP.IP.CV.005, B26.STP.GEN.ELE.001, B27.STP.SUB.ELE.001, B28.STP.RMU.CV.004, B28.STP.RMU.ELE.001, B29.STP.ATS.CV.004, B29.STP.ATS.ELE.001, B30.STP.ROD.CV.005, B47.STP.INS.MEC.001 FF, B52.STP.GAT.MEC.001, B21.REF.STP.SLG.MEC.002, B21.REF.STP.SLG.MEC.001, B22.REF.STP.DP.MEC.001, B23.REF.STP.FLM.MEC.001, B24.REF.STP.HP.MEC.001, B35.REF.STP.NET.MNH.CV.006, B31.REF.STP.NET.250.CV.004, B32.REF.STP.NET.200.CV.004, B33.REF.STP.NET.160.CV.004, B34.REF.STP.NET.110.CV.004, B25.STP.AR.MEC.003 FF, B33.RF.STP.160.CV.04, B34.RF.STP.110.CV.4 |  |  |  | 3d |  |  | 769,829 |  | B25 |  |  | 05 |  |
| 001.PROJ.T&C.WTP. |  | Testing & Commissioning for WTP | 30d | 2025-03-04 | 2025-04-21 | B4.WTP.EQ.ARC.012, B4.WTP.RJ.CV.008, B4.WTP.IP.CV.005, B5.WTP.PRO.CV.005, B6.WTP.WLF.ELE.001, B7.WTP.TFS.MEC.001, B8.WTP.CP.CV.003, B9.WTP.EVP.CV.003, B9.WTP.EVP.MEC.006, B10.WTP.GEN.ELE.001, B11.WTP.SUB.CV.001, B11.WTP.SUB.ELE.001, B12.WTP.RMUELE.001, B13.WTP.ATS.ELE.001, B13.WTP.ATS.CV.004, B12.WTP.RMU.CV.004, B20.WTP.HC.CV.004, B20.WTP.HC.MEC.002, B47.WTP.INS.MEC.001 FF, B49.WTP.WEL.CV.005, B49.WTP.WEL.MEC.002, B49.WTP.WEL.ELE.001, B50.WTP.FEN.ARC.003 FF, B53.WTP.NWP.MEC.002, B53.WTP.NWP.MEC.003, B53.WTP.NWP.MEC.004, B49.WTP.WEL.MEC.006, B49.WTP.WEL.MEC.003, B2.REF.WTP.WEL.MEC.005, B2.REF.WTP.WEL.MEC.004, B2.REF.WTP.WEL.MEC.003, B2.REF.WTP.WEL.MEC.002, B2.REF.WTP.WEL.MEC.001, B3.REF.WTP.PLA.ARC.002, B3.REF.WTP.PLA.ARC.001, B3.REF.WTP.PLA.MEC.002, B3.REF.WTP.PLA.MEC.004, B3.REF.WTP.PLA.MEC.006, B3.REF.WTP.PLA.MEC.010, B3.REF.WTP.PLA.MEC.008, B3.REF.WTP.PLA.ELE.009, B3.REF.WTP.PLA.ELE.008, B3.REF.WTP.PLA.ELE.006, B3.REF.WTP.PLA.ELE.004, B3.REF.WTP.PLA.ELE.003, B3.REF.WTP.PLA.ELE.002, B3.REF.WTP.PLA.ELE.001, B3.REF.WTP.PLA.ELE.005, B3.REF.WTP.PLA.ELE.007, B51.REF.WTP.GVM.CV.002, B51.REF.WTP.GVM.CV.001, B51.REF.WTP.GVM.MEC.001, B14.REF.WTP.NET.200.CV.004, B15.REF.WTP.NET.110.CV.004, B16.REF.WTP.NET.90.CV.004, B17.REF.WTP.NET.75.CV.004, B18.REF.WTP.NET.50.CV.004, B19.REF.WTP.NET.32.CV.004, B53.WTP.NWP.ELE.002 |  |  |  | 0d |  |  | 1,090,591 |  | B04 |  |  | 05 |  |
|  | 4 | **Trial & Run** |  | 2025-04-21 | 2025-10-22 |  |  |  |  |  |  |  |  |  |  |  |  |  |  |
| B48.T&R.001 |  | Trial-Run Operation And Maintenance Period For All Works, M01 | 31d | 2025-04-21 | 2025-05-22 | 004.PROJ.MIL.CONT. |  |  |  | 0d | TRAIL RUN NEW |  | 254,573 |  | B48 |  |  | 06 |  |
| B48.T&R.002 |  | Trial-Run Operation And Maintenance Period For All Works, M02 | 30d | 2025-05-22 | 2025-06-21 | B48.T&R.001 |  |  |  | 0d | TRAIL RUN NEW |  | 254,573 |  | B48 |  |  | 06 |  |
| B48.T&R.003 |  | Trial-Run Operation And Maintenance Period For All Works, M03 | 31d | 2025-06-21 | 2025-07-22 | B48.T&R.002 |  |  |  | 0d | TRAIL RUN NEW |  | 254,573 |  | B48 |  |  | 06 |  |
| B48.T&R.004 |  | Trial-Run Operation And Maintenance Period For All Works, M04 | 30d | 2025-07-22 | 2025-08-21 | B48.T&R.003 |  |  |  | 0d | TRAIL RUN NEW |  | 254,573 |  | B48 |  |  | 06 |  |
| B48.T&R.005 |  | Trial-Run Operation And Maintenance Period For All Works, M05 | 31d | 2025-08-21 | 2025-09-21 | B48.T&R.004 |  |  |  | 0d | TRAIL RUN NEW |  | 254,573 |  | B48 |  |  | 06 |  |
| B48.T&R.006 |  | Trial-Run Operation And Maintenance Period For All Works, M06 | 31d | 2025-09-21 | 2025-10-22 | B48.T&R.005 |  |  |  | 0d | TRAIL RUN NEW |  | 254,573 |  | B48 |  |  | 06 |  |

Notes:
- B34.REF.STP.NET.110.CV.001: Expenses: (New Expense Item) 12351.6
- B34.REF.STP.NET.110.CV.002: Expenses: (New Expense Item) 2470.2
- B34.REF.STP.NET.110.CV.003: Expenses: (New Expense Item) 4117.2
- B34.REF.STP.NET.110.CV.004: Expenses: (New Expense Item) 8234.4
- B34.RF.STP.110.CV.2: Expenses: (New Expense Item) 1646.8
- B34.RF.STP.110.CV.1: Expenses: (New Expense Item) 8234.4
- B34.RF.STP.110.CV.3: Expenses: (New Expense Item) 2744.8
- B34.RF.STP.110.CV.4: Expenses: (New Expense Item) 5489.6
- B34.REF.STP.NET.110.MEC.001: Expenses: (New Expense Item) 46936.8
- B34.REF.STP.NET.110.MEC.002: Expenses: (New Expense Item) 4117.2
- B34.RF.STP.110.MEC.2: Expenses: (New Expense Item) 2744.8
- B34.RF.STP.110.MEC.1: Expenses: (New Expense Item) 31291.2
- 003.PROJ.T&C.IRR.: Expenses: (New Expense Item) 277994
- 002.PROJ.T&C.STP.: Expenses: (New Expense Item) 769829
- 001.PROJ.T&C.WTP.: Expenses: (New Expense Item) 1090591
- B48.T&R.001: Expenses: (New Expense Item) 254573
- B48.T&R.002: Expenses: (New Expense Item) 254573
- B48.T&R.003: Expenses: (New Expense Item) 254573
- B48.T&R.004: Expenses: (New Expense Item) 254573
- B48.T&R.005: Expenses: (New Expense Item) 254573
- B48.T&R.006: Expenses: (New Expense Item) 254573

## Activity codes

| Code | Value | Meaning |
| --- | --- | --- |
| 01.B.O.Q Items | B02 | Refurbishment of Existing Water Deep Wells |
| 01.B.O.Q Items | B03 | Refurbishment of Existing Water Treatment Plant |
| 01.B.O.Q Items | B04 | New Water Treatment Plant |
| 01.B.O.Q Items | B05 | Product Water Storage Tank |
| 01.B.O.Q Items | B06 | Water Lifting Pumps |
| 01.B.O.Q Items | B07 | Tanker Filling Station With Two Terminal Feeding Points |
| 01.B.O.Q Items | B08 | Concrete Pavement For Water Tankers |
| 01.B.O.Q Items | B09 | New Reject Water Disposal System (Evaporation Pond) |
| 01.B.O.Q Items | B10 | Backup Ggenerators (WTP) |
| 01.B.O.Q Items | B11 | Package Sub Station (WTP) |
| 01.B.O.Q Items | B12 | MV CABLE For RMU LOOP |
| 01.B.O.Q Items | B13 | LV CABLE TO ATS PANEL |
| 01.B.O.Q Items | B14 | Refurbishment Of Existing Water Supply Network Pipeline Dia 200mm |
| 01.B.O.Q Items | B15 | Refurbishment Of Existing Water Supply Network |
| 01.B.O.Q Items | B16 | Refurbishment Of Existing Water Supply Network Pipeline Dia 90 mm |
| 01.B.O.Q Items | B17 | Refurbishment Of Existing Water Supply Network Pipeline Dia 75mm |
| 01.B.O.Q Items | B18 | Refurbishment Of Existing Water Supply Network Pipeline Dia 50mm |
| 01.B.O.Q Items | B19 | Refurbishment Of Existing Water Supply Network Pipeline Dia 25-32mm |
| 01.B.O.Q Items | B20 | House Connections |
| 01.B.O.Q Items | B21 | Refurbishment Of Existing Sewage Treatment Plant Return Activated Sludge (RAS) Pumps |
| 01.B.O.Q Items | B22 | Refurbishment Of Existing Sewage Treatment Plant Fire Extinguisher (Dry Powder) |
| 01.B.O.Q Items | B23 | Refurbishment Of Existing Sewage Treatment Plant Flow Meter |
| 01.B.O.Q Items | B24 | Refurbishment Of Existing Sewage Treatment Plant Flexible Hose Pipe For Cleaning Services |
| 01.B.O.Q Items | B25 | Build New Sewage Treatment Plant |
| 01.B.O.Q Items | B26 | Backup Generators (STP) |
| 01.B.O.Q Items | B27 | Transformer (STP) |
| 01.B.O.Q Items | B28 | MV CABLE For RMU LOOP |
| 01.B.O.Q Items | B29 | LV CABLE TO ATS PANEL |
| 01.B.O.Q Items | B30 | Build Access Road to STP |
| 01.B.O.Q Items | B31 | Refurbishment Of Existing Sewage Network Pipeline Dia 250mm |
| 01.B.O.Q Items | B32 | Refurbishment Of Existing Sewage Network Pipeline Dia 200mm |
| 01.B.O.Q Items | B33 | Refurbishment Of Existing Sewage Network Pipeline Dia 160mm |
| 01.B.O.Q Items | B34 | Refurbishment Of Existing Sewage Network Pipeline Dia 110mm-House Connections to Mains |
| 01.B.O.Q Items | B35 | Refurbishment Of Existing Sewage Network Manholes |
| 01.B.O.Q Items | B38 | Construct New Irrigation Network System Pipeline Dia. 200mm |
| 01.B.O.Q Items | B39 | Construct New Irrigation Network System Pipeline Dia. 160mm |
| 01.B.O.Q Items | B40 | Construct New Irrigation Network System Pipeline Dia. 110mm |
| 01.B.O.Q Items | B41 | Construct New Irrigation Network System Pipeline Dia. 90mm |
| 01.B.O.Q Items | B42 | Construct New Irrigation Network System Ppipeline Dia. 50mm |
| 01.B.O.Q Items | B43 | Construct New Irrigation Network System Pipeline Dia. 32mm |
| 01.B.O.Q Items | B44 | Construct New Irrigation Network System Flexible Tubing Dia. 15-32mm |
| 01.B.O.Q Items | B45 | Construct New Irrigation Network System Irrigation Controller System |
| 01.B.O.Q Items | B46 | Irrigation Pumps |
| 01.B.O.Q Items | B47 | Hand Held Water Quality Instruments For Water & Sewage |
| 01.B.O.Q Items | B48 | Trial-Run Operation and Maintenance Period For All Works |
| 01.B.O.Q Items | B49 | New Deep Well |
| 01.B.O.Q Items | B50 | New Fence for WTP |
| 01.B.O.Q Items | B51 | Gate Valve Maintennce |
| 01.B.O.Q Items | B52 | New Gate |
| 01.B.O.Q Items | B53 | New Well Pump WTP |
| 01.B.O.Q Items | B54 | New Pumps from Row Tank |
| 02.Scope | 01 | Construction |
| 02.Scope | 02 | Refurbishment |
| 03.System | 001 | WTP |
| 03.System | 002 | STP |
| 03.System | 003 | Irrigation |
| 04.Discipline | 01 | Civil Work |
| 04.Discipline | 02 | Architectural work |
| 04.Discipline | 03 | Mechanical work |
| 04.Discipline | 04 | Electrical Work |
| 05.EPS | 01 | Milestone |
| 05.EPS | 02 | Engineering |
| 05.EPS | 03 | Procurement |
| 05.EPS | 04 | Construction |
| 05.EPS | 05 | Testing & Commissioning |
| 05.EPS | 06 | Trial & Run |
